# FP UB Sahara Production Release v2 SAFE

Schedule from MS Project, 2002-05-06 to 2003-01-28, A marks actual dates.
Fullplay Media

## Calendars

- Standard: Mon-Fri 08:00-12:00, 13:00-17:00; Sat-Sun off. Exceptions (off unless hours are given): 2002-07-04 to 2002-07-05, 2002-09-02, 2002-11-27 to 2002-11-29, 2002-12-23 to 2003-01-03.

## Schedule

| ID | WBS | Task | Type | Duration | Start | Finish | Predecessors | Complete | Remaining | Baseline start | Baseline finish | Baseline duration | Total slack | Free slack | Constraint |
| --- | --- | --- | --- | --- | --- | --- | --- | --- | --- | --- | --- | --- | --- | --- | --- |
| 1 | 1 | **DJ35 PCB Build x52** |  | 23d | 2002-05-20 A | 2002-06-19 A |  | 100% |  | 2002-05-20 | 2002-06-19 | 23d |  |  |  |
| 2 | 1.1 | DJ-35 MAIN-02-A parts kit |  | 2d | 2002-05-20 A | 2002-05-21 A |  | 100% |  | 2002-05-20 | 2002-05-21 | 2d |  |  | start no earlier than 2002-05-20 |
| 3 | 1.2 | DJ-35 4x MAIN PCA |  | 5d | 2002-05-22 A | 2002-05-28 A | 2 | 100% |  | 2002-05-22 | 2002-05-28 | 5d |  |  |  |
| 4 | 1.3 | DJ-35 4x MAIN review |  | 2d | 2002-05-29 A | 2002-05-30 A | 3 | 100% |  | 2002-05-29 | 2002-05-30 | 2d |  |  |  |
| 5 | 1.4 | DJ-35 parts kit |  | 4d | 2002-05-29 A | 2002-06-03 A |  | 100% |  | 2002-05-29 | 2002-06-03 | 4d |  |  | start no earlier than 2002-05-28 |
| 6 | 1.5 | DJ-35 remaining PCA |  | 9d | 2002-06-04 A | 2002-06-14 A | 5, 4 | 100% |  | 2002-06-04 | 2002-06-14 | 9d |  |  |  |
| 7 | 1.6 | DJ-35 Box (case, HDD, CDD, LCD) | milestone | 0d | 2002-06-12 A | 2002-06-12 A |  | 100% |  | 2002-06-12 | 2002-06-12 | 0d |  |  | start no earlier than 2002-06-07 |
| 8 | 1.7 | DJ-35 PCB EVT |  | 3d | 2002-06-17 A | 2002-06-19 A | 6 | 100% |  | 2002-06-17 | 2002-06-19 | 3d |  |  |  |
| 9 | 2 | DJ-35 HW DVT and Box Build |  | 20d | 2002-06-20 A | 2002-07-19 A | 1 | 100% |  | 2002-06-20 | 2002-07-19 | 20d |  |  |  |
| 10 | 3 | External BETA |  | 7w | 2002-06-21 A | 2002-08-12 | 1 | 30% | 4.9w | 2002-06-21 | 2002-08-12 | 7w | 59d |  |  |
| 11 | 4 | External BETA 2 |  | 20d | 2002-10-11 | 2002-11-07 | 32FS+8d |  |  |  |  |  | 45d |  |  |
| 12 | 5 | FP Release BOM |  | 10d | 2002-05-06 A | 2002-05-17 A |  | 100% |  | 2002-05-06 | 2002-05-17 | 10d |  |  |  |
| 13 | 6 | **UB BOM feedback** |  | 23d | 2002-05-20 | 2002-06-19 | 12 |  |  | 2002-05-20 | 2002-06-19 | 23d | 143d |  |  |
| 14 | 6.1 | UB Req. Mech BOM Changes |  | 5d | 2002-05-20 | 2002-05-24 |  |  |  | 2002-05-20 | 2002-05-24 | 5d | 158d |  |  |
| 15 | 6.2 | UB Req. Sourcing BOM Changes |  | 23d | 2002-05-20 | 2002-06-19 |  |  |  | 2002-05-20 | 2002-06-19 | 23d | 140d |  |  |
| 16 | 6.3 | UB Req. ASY BOM Changes |  | 5d | 2002-05-20 | 2002-05-24 |  |  |  | 2002-05-20 | 2002-05-24 | 5d | 158d |  |  |
| 17 | 7 | FP add UB BOM changes |  | 7d | 2002-06-20 A | 2002-06-28 A | 13 | 100% |  | 2002-06-20 | 2002-06-28 | 7d |  |  |  |
| 18 | 8 | FP Breadboard test new Audio |  | 8d | 2002-07-01 | 2002-07-12 | 17 |  |  | 2002-07-01 | 2002-07-03 | 3d | 3d | 0d |  |
| 19 | 9 | FP Create Route kit |  | 5d | 2002-07-15 | 2002-07-19 | 18 |  |  |  |  |  | 3d | 0d |  |
| 20 | 10 | **FP Build PCB-03-A** |  | 25d | 2002-07-22 | 2002-08-23 | 19 |  |  | 2002-07-08 | 2002-07-22 | 11d | 3d | 0d |  |
| 21 | 10.1 | FP ROUTE PCB-03-A |  | 4d | 2002-07-22 | 2002-07-25 |  |  |  | 2002-07-08 | 2002-07-12 | 5d | 3d | 0d |  |
| 22 | 10.2 | Review placement |  | 1d | 2002-07-26 | 2002-07-26 | 21 |  |  |  |  |  | 3d | 0d |  |
| 23 | 10.3 | Paradigm critical route |  | 6d | 2002-07-29 | 2002-08-05 | 22 |  |  |  |  |  | 3d | 0d |  |
| 24 | 10.4 | FP critical route review |  | 1d | 2002-08-06 | 2002-08-06 | 23 |  |  |  |  |  | 3d | 0d |  |
| 25 | 10.5 | FP design changes |  | 1d | 2002-08-07 | 2002-08-07 | 24 |  |  |  |  |  | 3d | 0d |  |
| 26 | 10.6 | Pardigm final route |  | 2d | 2002-08-08 | 2002-08-09 | 25 |  |  |  |  |  | 3d | 0d |  |
| 27 | 10.7 | review final route |  | 2d | 2002-08-12 | 2002-08-13 | 26 |  |  |  |  |  | 3d | 0d |  |
| 28 | 10.8 | FP RTFAB-03-A |  | 3d | 2002-08-14 | 2002-08-16 | 27 |  |  | 2002-07-15 | 2002-07-16 | 2d | 3d | 0d |  |
| 29 | 10.9 | FP RTASY-03-A |  | 4d | 2002-08-19 | 2002-08-22 | 28 |  |  | 2002-07-17 | 2002-07-22 | 4d | 3d | 0d |  |
| 30 | 10.10 | FP Box Build + HWEVT |  | 1d | 2002-08-23 | 2002-08-23 | 29 |  |  |  |  |  | 3d |  |  |
| 31 | 11 | FP HW DVT |  | 10d | 2002-08-26 | 2002-09-09 | 20 |  |  |  |  |  | 3d | 0d |  |

| ID | WBS | Task | Duration | Start | Finish | Predecessors | Complete | Remaining | Baseline start | Baseline finish | Baseline duration | Total slack | Free slack | Constraint |
| --- | --- | --- | --- | --- | --- | --- | --- | --- | --- | --- | --- | --- | --- | --- |
| 32 | 12 | **FP Build PCB-03-B** | 13d | 2002-09-12 | 2002-09-30 | 31, 40, 63 |  |  |  |  |  | 2d | 0d |  |
| 33 | 12.1 | FP ROUTE PCB-03-B | 5d | 2002-09-12 | 2002-09-18 |  |  |  |  |  |  | 2d | 0d |  |
| 34 | 12.2 | FP RTFAB-03-B | 3d | 2002-09-19 | 2002-09-23 | 33 |  |  |  |  |  | 2d | 0d |  |
| 35 | 12.3 | FP RTASY-03-B | 5d | 2002-09-24 | 2002-09-30 | 34 |  |  |  |  |  | 2d | 0d |  |
| 36 | 13 | FP Box Build + HWEVT | 20d | 2002-10-01 | 2002-10-28 | 35 |  |  |  |  |  | 53d |  |  |
| 37 | 14 | FP HW DVT, EMI | 40d | 2002-10-01 | 2002-11-25 | 32 |  |  | 2002-07-23 | 2002-08-19 | 4w | 2d |  |  |
| 38 | 15 | FP EMI/UL/ESD/DNR/THD | 40d | 2002-10-03 | 2002-12-02 | 31, 61 |  |  |  |  |  | 0d |  |  |
| 39 | 16 | Complete HW Factory Test | 2w | 2002-07-08 | 2002-07-19 |  |  |  | 2002-07-08 | 2002-07-19 | 2w | 118d |  | start no earlier than 2002-07-08 |
| 40 | 17 | UB review gerber for ICT | 2w | 2002-08-26 | 2002-09-09 | 20 |  |  | 2002-07-15 | 2002-08-09 | 4w | 4d | 2d |  |
| 41 | 18 | FP/Fiori Create Test Fixture | 3w | 2002-07-15 | 2002-08-02 |  |  |  | 2002-07-15 | 2002-08-02 | 3w | 72d | 13d | start no earlier than 2002-07-15 |
| 42 | 19 | UB Review test fixture | 1w | 2002-08-26 | 2002-08-30 | 41, 20 |  |  | 2002-08-05 | 2002-08-09 | 1w | 62d |  |  |
| 43 | 20 | **FP Build PCB-04-A** | 13d | 2002-12-03 | 2002-12-19 | 37, 40, 42, 71, 38 |  |  | 2002-08-20 | 2002-08-29 | 8d | 0d |  |  |
| 44 | 20.1 | FP ROUTE -04-A | 5d | 2002-12-03 | 2002-12-09 |  |  |  | 2002-08-20 | 2002-08-21 | 2d | 0d |  |  |
| 45 | 20.2 | FP RTFAB -04-A | 3d | 2002-12-10 | 2002-12-12 | 44 |  |  | 2002-08-22 | 2002-08-23 | 2d | 0d |  |  |
| 46 | 20.3 | FP RTASY -04-A | 5d | 2002-12-13 | 2002-12-19 | 45 |  |  | 2002-08-26 | 2002-08-29 | 4d | 0d |  |  |
| 47 | 21 | FP HW DVT -04-A | 3d | 2002-12-20 | 2003-01-07 | 43 |  |  | 2002-08-30 | 2002-09-06 | 5d | 0d |  |  |
| 48 | 22 | UB build ICT | 4w | 2002-10-04 | 2002-10-31 | 32FS+3d |  |  | 2002-08-30 | 2002-09-27 | 4w | 35d |  |  |
| 49 | 23 | Pilot run PCA ASY | 1w | 2003-01-08 | 2003-01-14 | 50, 48, 47, 75 |  |  | 2002-10-01 | 2002-10-07 | 1w | 0d |  |  |
| 50 | 24 | UB Order BOM parts | 14w | 2002-09-10 | 2002-12-19 | 18, 31 |  |  | 2002-07-08 | 2002-09-30 | 12w | 3d |  |  |
| 51 | 25 | **Old Fiori Sched** | 57d | 2002-05-08 A | 2002-07-29 |  | 47% | 30d | 2002-05-08 | 2002-07-29 | 57d | 117d |  |  |
| 52 | 25.1 | prelim plastic spec | 12d | 2002-05-08 A | 2002-05-23 A |  | 100% |  | 2002-05-08 | 2002-05-23 | 12d |  |  | finish no earlier than 2002-05-23 |
| 53 | 25.2 | TriHonor feedback | 15d | 2002-05-24 A | 2002-06-13 A | 52 | 100% |  | 2002-05-24 | 2002-06-13 | 15d |  |  |  |
| 54 | 25.3 | Fiori final rev | 6w | 2002-06-14 | 2002-07-29 | 53 |  |  | 2002-06-14 | 2002-07-29 | 6w | 114d |  | finish no earlier than 2002-07-01 |
| 55 | 26 | Review CD-ROM samples and spec | 10d | 2002-06-28 A | 2002-07-15 |  |  | 10d | 2002-06-28 | 2002-07-15 | 10d | 18d | 11d | start no earlier than 2002-05-20 |
| 56 | 27 | Approve and purchase CD-ROM | 1d | 2002-06-25 A | 2002-06-25 A |  | 100% |  | 2002-06-25 | 2002-06-25 | 1d |  |  | start no earlier than 2002-06-25 |

| ID | WBS | Task | Type | Duration | Start | Finish | Predecessors | Complete | Remaining | Baseline start | Baseline finish | Baseline duration | Total slack | Free slack | Constraint |
| --- | --- | --- | --- | --- | --- | --- | --- | --- | --- | --- | --- | --- | --- | --- | --- |
| 57 | 28 | **Fiori Proto 1** |  | 32d | 2002-06-26 A | 2002-08-12 | 56 | 47% | 17d | 2002-06-26 | 2002-07-15 | 12d | 0d |  |  |
| 58 | 28.1 | FP change plastic for CD-ROM |  | 4d | 2002-06-26 A | 2002-07-01 A |  | 100% |  | 2002-06-26 | 2002-06-28 | 3d |  |  |  |
| 59 | 28.2 | Fiori Proto 1 |  | 11d | 2002-07-02 A | 2002-07-18 A | 58 | 100% |  | 2002-07-01 | 2002-07-09 | 5d |  |  |  |
| 60 | 28.3 | Fiori fit Proto 1, implement changes |  | 17d | 2002-07-19 | 2002-08-12 | 59 |  |  | 2002-07-10 | 2002-07-15 | 4d | 0d |  |  |
| 61 | 29 | **Fiori Proto 2** |  | 36d | 2002-08-13 | 2002-10-02 | 55, 57 |  |  | 2002-07-16 | 2002-08-12 | 20d | 0d |  |  |
| 62 | 29.1 | Fiori 2nd Proto |  | 18d | 2002-08-13 | 2002-09-06 |  |  |  | 2002-07-16 | 2002-08-05 | 15d | 0d |  |  |
| 63 | 29.2 | Fit Mech to Electrical |  | 3d | 2002-09-09 | 2002-09-11 | 62 |  |  |  |  |  | 0d |  |  |
| 64 | 29.3 | Fiori 2nd Proto Review and Update |  | 15d | 2002-09-12 | 2002-10-02 | 63 |  |  | 2002-08-06 | 2002-08-12 | 5d | 0d |  |  |
| 65 | 30 | Fiori Final CAD Release | milestone | 0d | 2002-10-02 | 2002-10-02 | 61 |  |  | 2002-08-12 | 2002-08-12 | 0d | 8d | 0d |  |
| 66 | 31 | UB review Final CAD |  | 4d | 2002-10-03 | 2002-10-08 | 65 |  |  | 2002-08-12 | 2002-08-12 | 0d | 8d | 0d |  |
| 67 | 32 | TriHonor plastic tool lead |  | 60ed | 2002-10-08 | 2002-12-07 | 66 |  |  | 2002-08-13 | 2002-10-02 | 50ed | 31.88d | 4.88d |  |
| 68 | 33 | first shot approval |  | 3d | 2002-12-09 | 2002-12-11 | 67 |  |  | 2002-10-02 | 2002-10-04 | 3d | 7d | 0d |  |
| 69 | 34 | order plastic production |  | 10ed | 2002-12-11 | 2002-12-21 | 68 |  |  | 2002-10-05 | 2002-10-15 | 10ed | 73.88d |  |  |
| 70 | 35 | Pilot run box asy |  | 2w | 2003-01-15 | 2003-01-28 | 69, 49, 72, 76, 78 |  |  | 2002-10-15 | 2002-10-28 | 2w | 0d |  |  |
| 71 | 36 | Regulatory approvals |  | 25d | 2002-10-01 | 2002-11-04 | 20, 63, 32 |  |  | 2002-07-23 | 2002-08-19 | 20d | 17d |  | start no earlier than 2002-06-24 |
| 72 | 37 | Remote Control |  | 11w | 2002-10-11 | 2003-01-14 |  |  |  | 2002-07-29 | 2002-10-14 | 11w | 0d |  | as late as possible |
| 73 | 38 | PCB-03 breadboard hack to SW | milestone | 0d | 2002-07-15 | 2002-07-15 | 18FS+1d |  |  | 2002-07-08 | 2002-07-08 | 0d | 122d |  |  |
| 74 | 39 | First PCB-03 to SW | milestone | 0d | 2002-08-26 | 2002-08-26 | 20FS+1d |  |  | 2002-07-23 | 2002-07-23 | 0d | 97d |  |  |
| 75 | 40 | Factory Test Flash |  | 6w | 2002-08-02 | 2002-09-13 |  |  |  | 2002-08-02 | 2002-09-13 | 6w | 0d |  | must start on 2002-08-02 |
| 76 | 41 | Final Flash Image |  | 5d | 2003-01-08 | 2003-01-14 |  |  |  | 2002-10-08 | 2002-10-14 | 5d | 0d |  | as late as possible |
| 77 | 42 | Final CD Image | milestone | 0d | 2002-12-04 | 2002-12-04 |  |  |  | 2002-09-17 | 2002-09-17 | 0d | 0d |  | as late as possible |
| 78 | 43 | Duplicate CDs |  | 4w | 2002-12-04 | 2003-01-14 | 77 |  |  | 2002-09-17 | 2002-10-14 | 4w | 0d |  | as late as possible |
