# FP UB Sahara Production Release v2 SAFE

Schedule from MS Project, 2002-05-06 to 2002-11-22, A marks actual dates.
Fullplay Media

## Calendars

- Standard: Mon-Fri 08:00-12:00, 13:00-17:00; Sat-Sun off. Exceptions (off unless hours are given): 2002-07-04 to 2002-07-05, 2002-09-02.

## Schedule

| ID | WBS | Task | Type | Duration | Start | Finish | Predecessors | Complete | Remaining | Baseline start | Baseline finish | Baseline duration | Total slack | Free slack | Constraint |
| --- | --- | --- | --- | --- | --- | --- | --- | --- | --- | --- | --- | --- | --- | --- | --- |
| 1 | 1 | **DJ35 PCB Build x52** |  | 23d | 2002-05-20 A | 2002-06-19 A |  | 100% |  |  |  |  |  |  |  |
| 2 | 1.1 | DJ-35 MAIN-02-A parts kit |  | 2d | 2002-05-20 A | 2002-05-21 A |  | 100% |  | 2002-05-20 | 2002-05-20 | 1d |  |  | start no earlier than 2002-05-20 |
| 3 | 1.2 | DJ-35 4x MAIN PCA |  | 5d | 2002-05-22 A | 2002-05-28 A | 2 | 100% |  | 2002-05-20 | 2002-05-25 | 5ed |  |  |  |
| 4 | 1.3 | DJ-35 4x MAIN review |  | 2d | 2002-05-29 A | 2002-05-30 A | 3 | 100% |  | 2002-05-27 | 2002-05-31 | 5d |  |  |  |
| 5 | 1.4 | DJ-35 parts kit |  | 4d | 2002-05-29 A | 2002-06-03 A |  | 100% |  | 2002-05-28 | 2002-05-28 | 1d |  |  | start no earlier than 2002-05-28 |
| 6 | 1.5 | DJ-35 remaining PCA |  | 9d | 2002-06-04 A | 2002-06-14 A | 5, 4 | 100% |  | 2002-06-03 | 2002-06-07 | 1w |  |  |  |
| 7 | 1.6 | DJ-35 Box (case, HDD, CDD, LCD) | milestone | 0d | 2002-06-12 A | 2002-06-12 A |  | 100% |  | 2002-06-07 | 2002-06-07 | 0d |  |  | start no earlier than 2002-06-07 |
| 8 | 1.7 | DJ-35 PCB EVT |  | 3d | 2002-06-17 A | 2002-06-19 A | 6 | 100% |  |  |  |  |  |  |  |
| 9 | 2 | DJ-35 HW Evt and Box Build |  | 20d | 2002-06-20 A | 2002-07-19 | 1 | 50% | 10d | 2002-06-10 | 2002-06-14 | 5d | 89d |  |  |
| 10 | 3 | External BETA |  | 7w | 2002-06-21 A | 2002-08-12 | 1 | 30% | 4.9w | 2002-06-24 | 2002-07-19 | 4w | 73d |  |  |
| 11 | 4 | FP Release BOM |  | 10d | 2002-05-06 A | 2002-05-17 A |  | 100% |  | 2002-05-06 | 2002-05-17 | 10d |  |  |  |
| 12 | 5 | **UB BOM feedback** |  | 23d | 2002-05-20 | 2002-06-19 | 11 |  |  |  |  |  | 109d |  |  |
| 13 | 5.1 | UB Req. Mech BOM Changes |  | 5d | 2002-05-20 | 2002-05-24 |  |  |  | 2002-05-20 | 2002-05-24 | 5d | 127d |  |  |
| 14 | 5.2 | UB Req. Sourcing BOM Changes |  | 23d | 2002-05-20 | 2002-06-19 |  |  |  | 2002-05-20 | 2002-05-24 | 5d | 109d |  |  |
| 15 | 5.3 | UB Req. ASY BOM Changes |  | 5d | 2002-05-20 | 2002-05-24 |  |  |  | 2002-05-20 | 2002-05-24 | 5d | 127d |  |  |
| 16 | 6 | FP add UB BOM changes |  | 7d | 2002-06-20 A | 2002-06-28 A | 12 | 100% |  | 2002-05-27 | 2002-05-30 | 4d |  |  |  |
| 17 | 7 | FP Breadboard test new Audio |  | 3d | 2002-07-01 | 2002-07-03 | 16 |  |  |  |  |  | 14d | 0d |  |
| 18 | 8 | **FP Build PCB-03-A** |  | 20d | 2002-07-08 | 2002-08-02 | 17 |  |  |  |  |  | 15d | 0d |  |
| 19 | 8.1 | FP ROUTE PCB-03-A |  | 8d | 2002-07-08 | 2002-07-17 |  |  |  | 2002-05-31 | 2002-06-03 | 2d | 15d | 0d |  |
| 20 | 8.2 | FP RTFAB-03-A |  | 5d | 2002-07-18 | 2002-07-24 | 19 |  |  | 2002-06-24 | 2002-06-28 | 5d | 15d | 0d |  |
| 21 | 8.3 | FP RTASY-03-A |  | 7d | 2002-07-25 | 2002-08-02 | 20 |  |  | 2002-07-01 | 2002-07-05 | 5d | 15d |  |  |
| 22 | 9 | FP HW EVT, EMI |  | 15d | 2002-08-05 | 2002-08-23 | 18, 23 |  |  | 2002-07-08 | 2002-07-19 | 2w | 15d | 0d |  |
| 23 | 10 | Complete HW Factory Test |  | 4w | 2002-07-08 | 2002-08-02 |  |  |  | 2002-06-10 | 2002-07-05 | 4w | 15d | 0d | start no earlier than 2002-07-08 |
| 24 | 11 | UB review gerber for ICT |  | 5w | 2002-07-18 | 2002-08-21 | 19 |  |  | 2002-06-04 | 2002-06-10 | 5d | 17d | 2d |  |
| 25 | 12 | FP/Fiori Create Test Fixture |  | 4w | 2002-07-15 | 2002-08-09 |  |  |  | 2002-06-10 | 2002-07-19 | 6w | 15d | 0d | start no earlier than 2002-07-15 |
| 26 | 13 | UB Review test fixture |  | 10d | 2002-08-12 | 2002-08-23 | 25, 18 |  |  | 2002-07-29 | 2002-08-02 | 5d | 15d | 0d |  |

| ID | WBS | Task | Type | Duration | Start | Finish | Predecessors | Complete | Remaining | Baseline start | Baseline finish | Baseline duration | Total slack | Free slack | Constraint |
| --- | --- | --- | --- | --- | --- | --- | --- | --- | --- | --- | --- | --- | --- | --- | --- |
| 27 | 14 | **FP Build PCB-04-A** |  | 14d | 2002-08-26 | 2002-09-13 | 22, 24, 26, 54 |  |  |  |  |  | 15d | 0d |  |
| 28 | 14.1 | FP ROUTE -04-A |  | 3d | 2002-08-26 | 2002-08-28 |  |  |  | 2002-07-22 | 2002-07-24 | 3d | 15d | 0d |  |
| 29 | 14.2 | FP RTFAB -04-A |  | 5d | 2002-08-29 | 2002-09-05 | 28 |  |  | 2002-07-25 | 2002-07-26 | 2d | 15d | 0d |  |
| 30 | 14.3 | FP RTASY -04-A |  | 6d | 2002-09-06 | 2002-09-13 | 29 |  |  | 2002-07-26 | 2002-07-30 | 4ed | 15d |  |  |
| 31 | 15 | FP HW EVT -04-A |  | 5d | 2002-09-16 | 2002-09-20 | 27 |  |  | 2002-07-31 | 2002-08-02 | 3d | 30d | 16d |  |
| 32 | 16 | UB build ICT |  | 4w | 2002-09-16 | 2002-10-11 | 27 |  |  | 2002-07-25 | 2002-08-21 | 4w | 15d | 1d |  |
| 33 | 17 | Pilot run PCA ASY |  | 1w | 2002-10-15 | 2002-10-21 | 34, 32, 31, 58 |  |  | 2002-09-11 | 2002-09-17 | 1w | 14d |  |  |
| 34 | 18 | UB Order BOM parts |  | 14w | 2002-07-08 | 2002-10-14 | 17 |  |  | 2002-05-31 | 2002-08-08 | 10w | 14d | 0d |  |
| 35 | 19 | **Old Fiori Sched** |  | 57d | 2002-05-08 A | 2002-07-29 |  | 47% | 30d |  |  |  | 83d |  |  |
| 36 | 19.1 | prelim plastic spec |  | 12d | 2002-05-08 A | 2002-05-23 A |  | 100% |  | 2002-05-08 | 2002-05-23 | 12d |  |  | finish no earlier than 2002-05-23 |
| 37 | 19.2 | TriHonor feedback |  | 15d | 2002-05-24 A | 2002-06-13 A | 36 | 100% |  | 2002-05-24 | 2002-05-30 | 5d |  |  |  |
| 38 | 19.3 | Fiori final rev |  | 6w | 2002-06-14 | 2002-07-29 | 37 |  |  | 2002-06-04 | 2002-07-01 | 4w | 83d |  | finish no earlier than 2002-07-01 |
| 39 | 20 | Review CD-ROM samples and spec |  | 10d | 2002-06-28 A | 2002-07-15 |  |  | 10d | 2002-05-20 | 2002-05-24 | 5d | 4d |  | start no earlier than 2002-05-20 |
| 40 | 21 | Approve and purchase CD-ROM |  | 1d | 2002-06-25 | 2002-06-25 |  |  |  | 2002-05-24 | 2002-05-24 | 0d | 0d |  | start no earlier than 2002-06-25 |
| 41 | 22 | **Fiori Proto 1** |  | 16d | 2002-06-26 | 2002-07-19 | 40 |  |  |  |  |  | 0d |  |  |
| 42 | 22.1 | FP change plastic for CD-ROM |  | 6d | 2002-06-26 | 2002-07-03 |  |  |  | 2002-05-27 | 2002-05-31 | 5d | 0d |  |  |
| 43 | 22.2 | Fiori Proto 1 |  | 5d | 2002-07-08 | 2002-07-12 | 42 |  |  |  |  |  | 0d |  |  |
| 44 | 22.3 | Fiori fit Proto 1, implement changes |  | 5d | 2002-07-15 | 2002-07-19 | 43 |  |  |  |  |  | 0d |  |  |
| 45 | 23 | **Fiori Proto 2 and Final CAD Release** |  | 21d | 2002-07-22 | 2002-08-19 | 39, 41 |  |  |  |  |  | 0d |  |  |
| 46 | 23.1 | Fiori 2nd Proto |  | 15d | 2002-07-22 | 2002-08-09 |  |  |  |  |  |  | 0d |  |  |
| 47 | 23.2 | Fiori 2nd Proto Review and Update |  | 5d | 2002-08-12 | 2002-08-16 | 46 |  |  |  |  |  | 0d |  |  |
| 48 | 23.3 | Fiori Final CAD Release |  | 1d | 2002-08-19 | 2002-08-19 | 47 |  |  |  |  |  | 0d |  |  |
| 49 | 24 | UB review Final CAD |  | 4d | 2002-08-20 | 2002-08-23 | 45 |  |  |  |  |  | 0d |  |  |
| 50 | 25 | TriHonor plastic tool lead |  | 60ed | 2002-08-24 | 2002-10-23 | 49 |  |  | 2002-07-01 | 2002-08-30 | 60ed | 0d |  | as late as possible |
| 51 | 26 | first shot approval |  | 5d | 2002-10-23 | 2002-10-29 | 50 |  |  | 2002-08-30 | 2002-09-02 | 3ed | 0d |  |  |
| 52 | 27 | order plastic production |  | 12ed | 2002-10-30 | 2002-11-11 | 51 |  |  | 2002-09-02 | 2002-09-17 | 15ed | 0d |  | as late as possible |
| 53 | 28 | Pilot run box asy |  | 2w | 2002-11-11 | 2002-11-22 | 52, 33, 55, 59, 61 |  |  | 2002-09-18 | 2002-10-01 | 2w | 0d |  |  |
| 54 | 29 | Regulatory approvals |  | 15d | 2002-08-05 | 2002-08-23 | 18 |  |  | 2002-08-16 | 2002-08-16 | 0d | 15d | 0d | start no earlier than 2002-06-24 |
| 55 | 30 | Remote Control |  | 14w | 2002-08-02 | 2002-11-08 |  |  |  | 2002-06-24 | 2002-07-19 | 4w | 0d |  | as late as possible |
| 56 | 31 | PCB-03 breadboard hack to SW | milestone | 0d | 2002-07-08 | 2002-07-08 | 17FS+1d |  |  |  |  |  | 98d |  |  |
| 57 | 32 | First PCB-03 to SW | milestone | 0d | 2002-08-06 | 2002-08-06 | 18FS+2d |  |  |  |  |  | 77d |  |  |
| 58 | 33 | Factory Test Flash |  | 6w | 2002-08-30 | 2002-10-11 |  |  |  |  |  |  | 0d |  | must finish on 2002-10-11 |
| 59 | 34 | Final Flash Image |  | 5d | 2002-11-04 | 2002-11-08 |  |  |  |  |  |  | 0d |  | as late as possible |
| 60 | 35 | Final CD Image | milestone | 0d | 2002-10-14 | 2002-10-14 |  |  |  |  |  |  | 0d |  | as late as possible |
| 61 | 36 | Duplicate CDs |  | 4w | 2002-10-14 | 2002-11-08 | 60 |  |  |  |  |  | 0d |  | as late as possible |
