# FP UB Sahara Production Release v2 GOAL

Schedule from MS Project, 2002-05-01 to 2002-12-23, A marks actual dates.
Fullplay Media

## Calendars

- Standard: Mon-Fri 08:00-12:00, 13:00-17:00; Sat-Sun off. Exceptions (off unless hours are given): 2002-07-04, 2002-07-05 08:00-12:00, 13:00-17:00.

## Resources

| Resource |
| --- |
| Doug |
| Kenn |
| Alix |
| Fiori |
| Paul Fiori |
| Teman |
| ChrisA |
| ProtoTron |
| PCA |
| Monsoon |
| UnitedBox |
| Josh |
| Dupp |
| UB |
| Monson |
| DigiKey |
| Derek |
| Mark |
| Marcus |
| Software |
| Chrisl |
| Seagate |
| Cole |

## Schedule

| ID | WBS | Task | Type | Duration | Start | Finish | Predecessors | Complete | Remaining | Baseline start | Baseline finish | Baseline duration | Total slack | Free slack | Constraint | Resources | Work | Actual work |
| --- | --- | --- | --- | --- | --- | --- | --- | --- | --- | --- | --- | --- | --- | --- | --- | --- | --- | --- |
| 1 | 1 | Fullplay Media Systems, Inc. |  | 1d? | 2002-05-06 | 2002-05-06 |  |  |  |  |  |  | 164d |  |  |  |  |  |
| 2 | 2 | Confidential Information |  | 1d? | 2002-05-06 | 2002-05-06 |  |  |  |  |  |  | 164d |  |  |  |  |  |
| 4 | 3 | **Sahara Program- Preliminary** |  | 168d? | 2002-05-01 A | 2002-12-23 |  | 6% | 157.6d? |  |  |  | 0d |  |  |  | 6104.6h | 64h |
| 5 | 3.1 | DJ contract completion |  | 28d | 2002-05-17 A | 2002-06-25 |  | 54% | 13d | 2002-05-17 | 2002-06-27 | 30d | 28d | 1d | finish no earlier than 2002-06-25 |  |  |  |
| 6 | 3.2 | **Beta Protos** |  | 45d | 2002-05-20 A | 2002-07-22 |  | 37% | 28.42d |  |  |  | 108d |  |  |  |  |  |
| 7 | 3.2.1 | DJ-35 MAIN-02-A parts kit |  | 1d | 2002-05-20 A | 2002-05-20 A |  | 100% |  | 2002-05-20 | 2002-05-20 | 1d |  |  | start no earlier than 2002-05-20 |  |  |  |
| 8 | 3.2.2 | DJ-35 4x MAIN PCA |  | 5ed | 2002-05-20 A | 2002-05-25 | 7 | 90% | 0.5ed | 2002-05-20 | 2002-05-25 | 5ed | 113.5d | 4.88d |  |  |  |  |
| 9 | 3.2.3 | DJ-35 4x MAIN review |  | 5d | 2002-05-27 A | 2002-05-31 | 8 | 10% | 4.5d | 2002-05-27 | 2002-05-31 | 5d | 26d | 0d |  |  |  |  |
| 10 | 3.2.4 | DJ-35 parts kit |  | 1d | 2002-05-28 A | 2002-05-28 A |  | 100% |  | 2002-05-28 | 2002-05-28 | 1d |  |  | start no earlier than 2002-05-28 |  |  |  |
| 11 | 3.2.5 | DJ-35 remaining PCA |  | 1w | 2002-06-03 A | 2002-06-07 | 10, 9 | 90% | 0.1w | 2002-06-03 | 2002-06-07 | 1w | 21.5d | 0d |  |  |  |  |
| 12 | 3.2.6 | DJ-35 Box (case, HDD, CDD, LCD) | milestone | 0d | 2002-06-07 A | 2002-06-07 A |  | 100% |  | 2002-06-07 | 2002-06-07 | 0d |  |  | start no earlier than 2002-06-07 |  |  |  |
| 13 | 3.2.7 | DJ-35 HW Evt and Build |  | 5d | 2002-06-10 A | 2002-06-14 | 11, 12 | 10% | 4.5d | 2002-06-10 | 2002-06-14 | 5d | 21d | 0d |  |  |  |  |
| 14 | 3.2.8 | Friendly External BETA |  | 5d | 2002-06-17 | 2002-06-21 | 13 |  |  | 2002-06-17 | 2002-06-21 | 5d | 21d | 0d |  |  |  |  |
| 15 | 3.2.9 | External BETA |  | 4w | 2002-06-24 | 2002-07-22 | 14 |  |  | 2002-06-24 | 2002-07-19 | 4w | 108d | 54.5d |  |  |  |  |
| 16 | 3.3 | **Software** |  | 84d | 2002-05-06 A | 2002-08-30 |  | 5% | 80.14d |  |  |  | 26d |  |  |  | 1376h | 64h |
| 17 | 3.3.1 | Create HW EVT test |  | 6w | 2002-06-10 A | 2002-07-23 |  | 10% | 5.4w | 2002-07-02 | 2002-07-29 | 4w | 14d | 9.5d | finish no earlier than 2002-07-23 | Software | 240h | 24h |
| 18 | 3.3.2 | Final bootloader Flash Image |  | 4w | 2002-07-23 A | 2002-08-19 |  | 25% | 3w | 2002-08-06 | 2002-09-02 | 4w | 10d | 0d |  | Software | 160h | 40h |
| 19 | 3.3.3 | DJ-C40 Software Dev |  | 75d | 2002-05-06 | 2002-08-19 |  |  |  |  |  |  | 31d | 0d |  | Software | 600h |  |
| 20 | 3.3.4 | Beta 1 |  | 4w | 2002-06-24 | 2002-07-22 |  |  |  |  |  |  | 12.5d | 0d | start no earlier than 2002-06-24 | Software | 160h |  |
| 21 | 3.3.5 | Beta 2 |  | 4w | 2002-07-23 | 2002-08-19 | 20, 150 |  |  |  |  |  | 26d | 0d |  | Software | 160h |  |
| 22 | 3.3.6 | Final Debug |  | 1w | 2002-08-20 | 2002-08-26 | 21 |  |  |  |  |  | 26d | 0d |  | Software | 40h |  |
| 23 | 3.3.7 | Final Burn-In CD Image |  | 4d | 2002-08-27 | 2002-08-30 | 19, 22 |  |  | 2002-08-06 | 2002-09-02 | 4w | 26d | 0d |  | Derek [25%]; Kenn [25%] | 16h |  |
| 25 | 3.4 | **Electrical** |  | 111.5d? | 2002-05-06 A | 2002-10-09 |  | 15% | 94.91d? |  |  |  | 53.5d |  |  |  | 714.8h |  |
| 26 | 3.4.1 | FP Release GYR BOM for Purchasing |  | 10d | 2002-05-06 A | 2002-05-17 A |  | 100% |  | 2002-05-06 | 2002-05-17 | 10d |  |  |  |  |  |  |
| 27 | 3.4.2 | UB Req. Mech BOM Changes |  | 5d | 2002-05-20 A | 2002-05-24 | 26 | 85% | 0.75d | 2002-05-20 | 2002-05-24 | 5d | 46d | 18d |  |  |  |  |
| 28 | 3.4.3 | UB Req. Sourcing BOM Changes |  | 23d | 2002-05-20 A | 2002-06-19 | 26 | 33% | 15.5d | 2002-05-20 | 2002-06-07 | 15d | 28d | 0d |  |  |  |  |
| 29 | 3.4.4 | UB Req. ASY BOM Changes |  | 10d | 2002-05-20 A | 2002-05-31 | 26 | 25% | 7.5d | 2002-05-20 | 2002-05-31 | 10d | 41d | 13d |  |  |  |  |
| 30 | 3.4.5 | FP add UB BOM changes |  | 5d | 2002-06-20 A | 2002-06-26 | 27, 28, 29 | 20% | 4d | 2002-06-10 | 2002-06-13 | 4d | 27d | 0d |  |  |  |  |
| 31 | 3.4.6 | Test Cicuit for Serial and S/PDIF |  | 1d? | 2002-07-09 | 2002-07-09 |  |  |  |  |  |  | 119d |  | start no earlier than 2002-07-09 | Chrisl [50%]; Josh [50%] | 6h |  |

Notes:
- 23: prepare format and delivery

| ID | WBS | Task | Duration | Start | Finish | Predecessors | Baseline start | Baseline finish | Baseline duration | Total slack | Free slack | Constraint | Resources | Work |
| --- | --- | --- | --- | --- | --- | --- | --- | --- | --- | --- | --- | --- | --- | --- |
| 32 | 3.4.7 | **Sahara Rev 03** | 55.5d? | 2002-05-30 | 2002-08-16 |  |  |  |  | 4.5d |  |  |  | 380.8h |
| 33 | 3.4.7.1 | FP Complete new audio circuit | 25d | 2002-05-30 | 2002-07-03 |  |  |  |  | 4.5d | 0d | start no earlier than 2002-05-30 | Josh [25%]; ChrisA [25%]; Dupp [25%] | 80h |
| 34 | 3.4.7.2 | Order New Parts | 5d | 2002-06-27 | 2002-07-03 |  |  |  |  | 7d | 0d | start no earlier than 2002-06-27 | Chrisl [10%] | 4h |
| 35 | 3.4.7.3 | Parts Arrival | 10d | 2002-07-05 | 2002-07-18 | 34 |  |  |  | 7d | 0d |  | DigiKey | 80h |
| 36 | 3.4.7.4 | FP ROUTE PCB-03-A | 5d | 2002-07-05 | 2002-07-11 | 33 | 2002-06-28 | 2002-07-02 | 3d | 4.5d | 0d |  | Monsoon | 40h |
| 37 | 3.4.7.5 | UB review gerber for ICT | 3d | 2002-07-12 | 2002-07-16 | 36 | 2002-07-03 | 2002-07-09 | 5d | 4.5d | 0d |  | UnitedBox | 24h |
| 38 | 3.4.7.6 | FP final gerber edit-03-A | 0.5d | 2002-07-17 | 2002-07-17 | 37, 59 | 2002-07-10 | 2002-07-11 | 2d | 4.5d | 0d |  | Josh; Dupp | 8h |
| 39 | 3.4.7.7 | FP RTFAB-03-A | 5d | 2002-07-17 | 2002-07-24 | 38, 60, 14 | 2002-07-12 | 2002-07-18 | 5d | 4.5d | 0d |  | ProtoTron | 40h |
| 40 | 3.4.7.8 | Kit Preperation | 1d? | 2002-07-19 | 2002-07-19 | 35, 38 |  |  |  | 7d | 2.5d |  | Chrisl | 8h |
| 41 | 3.4.7.9 | FP RTASY-03-A | 7d | 2002-07-24 | 2002-08-02 | 14, 39, 40 | 2002-07-19 | 2002-07-29 | 7d | 4.5d | 0d |  | PCA | 56h |
| 42 | 3.4.7.10 | Receive Parts and Assemble Units | 2d | 2002-08-02 | 2002-08-06 | 41 |  |  |  | 4.5d | 0d |  | Chrisl [50%] | 8h |
| 43 | 3.4.7.11 | FP HW EVT, EMI | 8d | 2002-08-06 | 2002-08-16 | 17, 42 | 2002-07-30 | 2002-08-19 | 3w | 4.5d | 0d |  | Chrisl [25%]; Josh [20%]; Dupp [75%] | 32.8h |
| 44 | 3.4.8 | **Sahara Rev 04** | 38d? | 2002-08-16 | 2002-10-09 |  |  |  |  | 4.5d |  |  |  | 328h |
| 45 | 3.4.8.1 | Circuit Design Change | 5d | 2002-08-16 | 2002-08-23 | 43 |  |  |  | 4.5d | 0d |  | Josh; Dupp [25%]; Chrisl [50%] | 34h |
| 46 | 3.4.8.2 | FP xfer BOM to UB | 2d | 2002-10-07 | 2002-10-09 | 55, 62, 65, 15, 45 | 2002-08-19 | 2002-08-19 | 0d | 53.5d |  |  | Josh [50%]; Dupp [50%]; Kenn [50%] | 16h |
| 47 | 3.4.8.3 | Order New Part | 0.5d? | 2002-08-23 | 2002-08-23 | 45 |  |  |  | 6.33d | 0d |  | Chrisl [50%] | 2h |
| 48 | 3.4.8.4 | Parts Arrival | 5d | 2002-08-26 | 2002-08-30 | 47 |  |  |  | 6.33d | 0d |  | DigiKey | 40h |
| 49 | 3.4.8.5 | FP ROUTE -04-A | 3d | 2002-08-23 | 2002-08-28 | 138, 45 | 2002-08-20 | 2002-08-22 | 3d | 4.5d | 0d |  | Monson | 24h |
| 50 | 3.4.8.6 | FP RTFAB -04-A | 5d | 2002-08-28 | 2002-09-04 | 49 | 2002-08-23 | 2002-08-27 | 3d | 4.5d | 0d |  | ProtoTron | 40h |
| 51 | 3.4.8.7 | Kit preperation | 0.67d? | 2002-09-02 | 2002-09-02 | 48, 49 |  |  |  | 6.33d | 1.83d |  | Chrisl [75%] | 4h |
| 52 | 3.4.8.8 | FP RTASY -04-A | 7d | 2002-09-04 | 2002-09-13 | 51, 50 | 2002-08-27 | 2002-09-02 | 6ed | 4.5d | 0d |  | PCA | 56h |
| 53 | 3.4.8.9 | Receive board and assemble unit | 1d? | 2002-09-13 | 2002-09-16 | 52 |  |  |  | 4.5d | 0d |  | Chrisl [50%] | 4h |
| 54 | 3.4.8.10 | FP HW EVT -04-A | 5d | 2002-09-16 | 2002-09-23 | 53 | 2002-09-03 | 2002-09-05 | 3d | 4.5d | 0d |  | Josh [25%]; Dupp [25%]; Chrisl [25%] | 22h |
| 55 | 3.4.8.11 | Functionality Text Fixture Design | 2w | 2002-09-23 | 2002-10-07 | 54 | 2002-06-10 | 2002-07-19 | 6w | 10.5d | 0d | start no earlier than 2002-07-08 | Josh [50%]; Dupp [25%]; Kenn [10%]; Chrisl [50%] | 86h |

Notes:
- 39: 2 Urethanes for UB / 2 Machined ABS for FCC and UL / 1 Urethane for Fiori / 5 Urethanes for Fullplay / 1 Urethane for packaging drop test / Total = 9 Urethanes, and 2 ABS / 11 boards min.
- 55: real hardware tests / (void*)test_gpio,"GPIO","<bank> <line> <direction> <value>",0, / (void*)test_memtest,"MEMTEST","<size>",0, / (void*)test_stress,"STRESS","<fail fast = true>",0, / (void*)test_hdstress,"HDSTRESS","<sector count> <fail fast = true>",0, / (void*)test_cdstress,"CDSTRESS","<sector count> <fail fast = true>",0, / (void*)test_lcd,"LCD","Run LCD test, ON, OFF",0, / (void*)test_adc,"ADC","Run ADC/DAC test for <secs> length",0, / (void*)test_dac,"DAC","ON, OFF, TEST, or nothing for the full sequence",0, / (void*)test_tone,"TONE","<frequency> <samplerate> <length (sec)>",1, / (void*)test_ata,"ATA","Run ATA test",0, / (void*)test_net,"NET","Run Ethernet chip test",0, / (void*)test_ir,"IR","Run IR test",0, / (void*)test_key,"KEY","Run Keypad test",0, / (void*)test_eject,"EJECT","Eject/Inject CD",0, / (void*)test_net_slave,"SLAVE","Network slave test",P_STRING, / (void*)test_net_master,"MASTER","Network master test",P_STRING,

| ID | WBS | Task | Type | Duration | Start | Finish | Predecessors | Complete | Remaining | Baseline start | Baseline finish | Baseline duration | Total slack | Free slack | Constraint | Resources | Work |
| --- | --- | --- | --- | --- | --- | --- | --- | --- | --- | --- | --- | --- | --- | --- | --- | --- | --- |
| 56 | 3.5 | **Goal Dates** |  | 58d | 2002-05-13 | 2002-08-02 |  |  |  |  |  |  | 50.5d |  |  |  |  |
| 57 | 3.5.1 | GOAL UB confirm part changes | milestone | 0d | 2002-05-13 | 2002-05-13 |  |  |  | 2002-05-13 | 2002-05-13 | 0d | 161d |  | start no earlier than 2002-05-13 |  |  |
| 58 | 3.5.2 | GOAL FP prelim gerber for ICT | milestone | 0d | 2002-05-24 | 2002-05-24 |  |  |  | 2002-05-24 | 2002-05-24 | 0d | 152d |  | start no earlier than 2002-05-24 |  |  |
| 59 | 3.5.3 | GOAL UB feedback on ICT | milestone | 0d | 2002-05-31 | 2002-05-31 |  |  |  | 2002-05-31 | 2002-05-31 | 0d | 46.33d | 32d | start no earlier than 2002-05-31 |  |  |
| 60 | 3.5.4 | GOAL FP PCB RTFAB | milestone | 0d | 2002-06-07 | 2002-06-07 |  |  |  | 2002-06-07 | 2002-06-07 | 0d | 41.83d | 27.5d | start no earlier than 2002-06-07 |  |  |
| 61 | 3.5.5 | GOAL FP send ASY +3 PCB set | milestone | 0d | 2002-06-19 | 2002-06-19 |  |  |  | 2002-06-19 | 2002-06-19 | 0d | 134d |  | start no earlier than 2002-06-19 |  |  |
| 62 | 3.5.6 | GOAL FP relase final post EMI BOM | milestone | 0d | 2002-07-01 | 2002-07-01 |  |  |  | 2002-07-01 | 2002-07-01 | 0d | 124d | 0d | start no earlier than 2002-07-01 |  |  |
| 63 | 3.5.7 | GOAL UB review, pull trigger | milestone | 0d | 2002-07-01 | 2002-07-01 | 62 |  |  | 2002-07-01 | 2002-07-01 | 0d | 126d |  |  |  |  |
| 64 | 3.5.8 | GOAL UB start PCA Pilot Run | milestone | 0d | 2002-07-22 | 2002-07-22 |  |  |  | 2002-07-22 | 2002-07-22 | 0d | 112d |  | start no earlier than 2002-07-22 |  |  |
| 65 | 3.5.9 | GOAL FP submit regulatory paperwork | milestone | 0d | 2002-07-01 | 2002-07-01 |  |  |  | 2002-07-01 | 2002-07-01 | 0d | 124d | 60.67d | start no earlier than 2002-07-01 |  |  |
| 66 | 3.5.10 | GOAL receive final reg. approval | milestone | 0d | 2002-08-02 | 2002-08-02 |  |  |  | 2002-08-02 | 2002-08-02 | 0d | 103d |  | start no earlier than 2002-08-02 |  |  |
| 67 | 3.6 | **Mechanical** |  | 112.5d? | 2002-05-01 A | 2002-10-07 |  | 11% | 99.58d? |  |  |  | 55.5d |  |  |  | 433.8h |
| 68 | 3.6.1 | **Sub-Assembly Acceptance** |  | 0d | 2002-07-08 A | 2002-07-08 |  |  | 0d |  |  |  | 36d | 0d |  |  |  |
| 69 | 3.6.1.1 | Bob PWR acceptance | milestone | 0d | 2002-07-08 | 2002-07-08 |  |  |  | 2002-06-10 | 2002-06-10 | 0d | 36d |  | start no earlier than 2002-07-08 |  |  |
| 70 | 3.6.1.2 | HDD acceptance | milestone | 0d | 2002-07-08 A | 2002-07-08 A |  | 100% |  | 2002-06-10 | 2002-06-10 | 0d |  |  | start no earlier than 2002-06-10 |  |  |
| 71 | 3.6.1.3 | CDD acceptance | milestone | 0d | 2002-07-08 | 2002-07-08 |  |  |  | 2002-06-10 | 2002-06-10 | 0d | 36d |  | start no earlier than 2002-07-08 |  |  |
| 72 | 3.6.1.4 | LCD acceptance | milestone | 0d | 2002-07-08 | 2002-07-08 |  |  |  |  |  |  | 36d |  | start no earlier than 2002-07-08 |  |  |
| 73 | 3.6.2 | prelim plastic spec |  | 10d | 2002-05-10 A | 2002-05-23 A |  | 100% |  | 2002-05-10 | 2002-05-23 | 10d |  |  | finish no earlier than 2002-05-23 |  |  |
| 74 | 3.6.3 | TriHonor Feedback |  | 12d | 2002-05-24 A | 2002-06-10 A | 73 | 100% |  | 2002-05-24 | 2002-06-10 | 12d |  |  |  |  |  |
| 75 | 3.6.4 | Review CD-ROM samples and spec |  | 47d | 2002-05-01 | 2002-07-05 |  |  |  | 2002-05-20 | 2002-05-24 | 5d | 121d | 0d | start no earlier than 2002-05-01 |  |  |
| 76 | 3.6.5 | Approve and purchase CD-ROM | milestone | 0d | 2002-07-05 | 2002-07-05 | 75 |  |  | 2002-05-24 | 2002-05-24 | 0d | 121d |  | start no earlier than 2002-06-20 |  |  |
| 77 | 3.6.6 | Beta Box feedback |  | 5d | 2002-06-24 | 2002-06-28 | 14 |  |  |  |  |  | 125d |  |  |  |  |
| 78 | 3.6.7 | **Sahara Proto 1** |  | 31.62d? | 2002-06-03 | 2002-07-17 |  |  |  |  |  |  | 2.38d | 0d |  |  | 133.8h |
| 79 | 3.6.7.1 | Files to Proto Vendors | milestone | 0d | 2002-06-03 | 2002-06-03 |  |  |  |  |  |  | 2.38d | 0d | start no earlier than 2002-06-03 | Marcus |  |
| 80 | 3.6.7.2 | Quote Generation |  | 3d | 2002-06-03 | 2002-06-05 | 79 |  |  |  |  |  | 2.38d | 0d | start no earlier than 2002-06-03 | Marcus | 24h |
| 81 | 3.6.7.3 | Receive and Review Quotes |  | 1d | 2002-06-06 | 2002-06-06 | 80 |  |  |  |  |  | 2.38d | 0d |  | Marcus [25%] | 2h |
| 82 | 3.6.7.4 | Integrate DJ35 Issues and Design Changes |  | 16d | 2002-06-07 | 2002-06-28 | 81 |  |  |  |  |  | 2.38d | 0d |  | Marcus [50%]; Cole [10%] | 66.8h |
| 83 | 3.6.7.5 | Release FP PO numbers to vendors |  | 0.12d? | 2002-07-01 | 2002-07-01 | 82 |  |  |  |  |  | 2.38d | 0d |  | Kenn | 1h |
| 84 | 3.6.7.6 | Fiori 1st Protos ( 1 SLA unit) |  | 5d | 2002-07-01 | 2002-07-09 | 83 |  |  |  |  |  | 2.38d | 0d |  |  |  |
| 85 | 3.6.7.7 | Prototype Assembly Review and CAD Database Refinements |  | 6d | 2002-07-09 | 2002-07-17 | 84 |  |  |  |  |  | 2.38d | 0d |  | Marcus [75%] | 36h |
| 86 | 3.6.7.8 | Updated Files to Tooling Vendors |  | 0.5d? | 2002-07-17 | 2002-07-17 | 85 |  |  |  |  |  | 28.38d |  |  | Marcus | 4h |

| ID | WBS | Task | Type | Duration | Start | Finish | Predecessors | Baseline start | Baseline finish | Baseline duration | Total slack | Free slack | Constraint | Resources | Work |
| --- | --- | --- | --- | --- | --- | --- | --- | --- | --- | --- | --- | --- | --- | --- | --- |
| 87 | 3.6.8 | **Sahara Proto 2** |  | 20.5d | 2002-07-17 | 2002-08-14 |  |  |  |  | 2.38d | 0d |  |  | 48h |
| 88 | 3.6.8.1 | update file to proto vendors | milestone | 0d | 2002-07-17 | 2002-07-17 | 85 |  |  |  | 2.38d | 0d |  | Marcus |  |
| 89 | 3.6.8.2 | release FP PO numbers | milestone | 0d | 2002-07-17 | 2002-07-17 | 88 |  |  |  | 2.38d | 0d |  | Kenn |  |
| 90 | 3.6.8.3 | SLA Build |  | 5d | 2002-07-17 | 2002-07-24 | 89 | 2002-07-11 | 2002-07-24 | 10d | 2.38d | 0d |  |  |  |
| 91 | 3.6.8.4 | Urethane Build |  | 10d | 2002-07-24 | 2002-08-07 | 90 |  |  |  | 2.38d | 0d |  |  |  |
| 92 | 3.6.8.5 | Metal Build |  | 15d | 2002-07-17 | 2002-08-07 | 89 |  |  |  | 2.38d | 0d |  |  |  |
| 93 | 3.6.8.6 | Machined ABS |  | 10d | 2002-07-24 | 2002-08-07 | 90 |  |  |  | 2.38d | 0d |  |  |  |
| 94 | 3.6.8.7 | Parts Received | milestone | 0d | 2002-08-07 | 2002-08-07 | 93, 91, 92 |  |  |  | 2.38d | 0d |  |  |  |
| 95 | 3.6.8.8 | Proto 2 review |  | 0.5d | 2002-08-07 | 2002-08-07 | 94 |  |  |  | 2.38d | 0d |  | Marcus; Kenn | 8h |
| 96 | 3.6.8.9 | Limited CAD updates as required |  | 4.5d | 2002-08-07 | 2002-08-14 | 95 |  |  |  | 2.38d | 0d |  | Marcus | 36h |
| 97 | 3.6.8.10 | Paint and Finish Requirements |  | 0.5d | 2002-07-31 | 2002-07-31 | 159 |  |  |  | 11.75d | 9.38d |  | Marcus | 4h |
| 98 | 3.6.8.11 | Fiori final rev |  | 0.5d | 2002-08-14 | 2002-08-14 | 96, 97 | 2002-07-10 | 2002-07-10 | 0d | 2.38d |  | start no earlier than 2002-07-04 |  |  |
| 99 | 3.6.9 | **Tooling and Production Ramp Support** |  | 57.88d | 2002-07-17 | 2002-10-07 |  |  |  |  | 10.5d |  |  |  | 252h |
| 100 | 3.6.9.1 | CTF Drawing Creation |  | 30d | 2002-07-17 | 2002-08-28 | 78 |  |  |  | 28.38d | 0d |  | Marcus | 240h |
| 101 | 3.6.9.2 | Functionality Text Fixture Design |  | 2w | 2002-09-23 | 2002-10-07 | 55SS |  |  |  | 10.5d | 0d |  | Marcus [15%] | 12h |
| 103 | 3.7 | **Manufacturing** |  | 165d? | 2002-05-06 | 2002-12-23 |  |  |  |  | 0d |  |  |  | 2684h |
| 104 | 3.7.1 | **UB Part Ordering** |  | 123.75d | 2002-05-06 | 2002-10-25 |  |  |  |  | 6.25d |  |  |  | 2600h |
| 105 | 3.7.1.1 | UB Order BOM parts |  | 12w | 2002-06-27 | 2002-09-19 | 30, 5 | 2002-06-28 | 2002-10-03 | 14w | 27d | 17d |  | UnitedBox | 480h |
| 106 | 3.7.1.2 | UB Order Power Supply from Bobbintron |  | 8w | 2002-07-08 | 2002-08-30 | 68 |  |  |  | 46d | 0d |  | UnitedBox | 320h |
| 107 | 3.7.1.3 | UB Order Remote Control |  | 11w | 2002-08-09 | 2002-10-25 | 166 |  |  |  | 6.25d |  |  | UnitedBox | 440h |
| 108 | 3.7.1.4 | UB Order LCD |  | 10w | 2002-07-08 | 2002-09-13 | 68 |  |  |  | 36d |  |  | UnitedBox | 400h |
| 109 | 3.7.1.5 | UB Order Cirrus Parts |  | 8w | 2002-08-19 | 2002-10-11 |  |  |  |  | 11d | 1d | start no earlier than 2002-08-19 | UnitedBox | 320h |
| 110 | 3.7.1.6 | Preliminary 04-X2 BOM Release | milestone | 0d | 2002-07-01 | 2002-07-01 |  |  |  |  | 90d |  | start no earlier than 2002-07-01 | Dupp |  |
| 111 | 3.7.1.7 | Preliminary 04-X3 BOM release | milestone | 0d | 2002-08-28 | 2002-08-28 | 49 |  |  |  | 48.5d |  |  | Dupp |  |
| 112 | 3.7.1.8 | Confirmed 04-A BOM Release | milestone | 0d | 2002-09-23 | 2002-09-23 | 54 |  |  |  | 30.5d |  |  | Dupp |  |
| 113 | 3.7.1.9 | Duplicate CDs |  | 4w | 2002-09-02 | 2002-09-27 | 168, 23 | 2002-09-06 | 2002-10-03 | 4w | 26d |  |  | UnitedBox | 160h |
| 114 | 3.7.1.10 | Duplicate Flash |  | 8w | 2002-08-20 | 2002-10-14 | 18 | 2002-09-06 | 2002-10-03 | 4w | 10d | 0d |  | UnitedBox | 320h |
| 115 | 3.7.1.11 | User Guide and Quick Start Guide |  | 4w | 2002-08-23 | 2002-09-20 | 145 |  |  |  | 31.5d |  |  | UnitedBox | 160h |
| 116 | 3.7.1.12 | Tooling Quote |  | 1w | 2002-05-06 | 2002-05-10 |  |  |  |  | 125d |  |  |  |  |

Notes:
- 87: 2 Urethanes for UB / 2 Machined ABS for FCC and UL / 1 Urethane for Fiori / 5 Urethanes for Fullplay / 1 Urethane for packaging drop test / Total = 9 Urethanes, and 2 ABS

| ID | WBS | Task | Type | Duration | Start | Finish | Predecessors | Baseline start | Baseline finish | Baseline duration | Total slack | Free slack | Constraint | Resources | Work |
| --- | --- | --- | --- | --- | --- | --- | --- | --- | --- | --- | --- | --- | --- | --- | --- |
| 117 | 3.7.2 | **QA and Process Development** |  | 46.62d? | 2002-07-22 | 2002-09-25 |  |  |  |  | 28.38d |  |  |  | 44h |
| 118 | 3.7.2.1 | Functionality Test Devel |  | 4w | 2002-08-27 | 2002-09-23 | 41 |  |  |  | 29.5d | 0d |  | Teman [25%] | 40h |
| 119 | 3.7.2.2 | Release Beta 1 User Guide docs to UB | milestone | 0d | 2002-07-22 | 2002-07-22 | 150 |  |  |  | 75d |  |  | Kenn |  |
| 120 | 3.7.2.3 | First release of factory functionality test |  | 0.5d | 2002-09-24 | 2002-09-24 | 118 |  |  |  | 29.5d |  | start no earlier than 2002-06-28 | Teman [50%]; Kenn [50%] | 4h |
| 121 | 3.7.2.4 | Receive 2 Sahara proto 2 samples |  | 1d? | 2002-08-14 | 2002-08-15 | 94FS+5d |  |  |  | 57.88d |  |  |  |  |
| 122 | 3.7.2.5 | Box assembly docs and drawings |  | 30d | 2002-08-14 | 2002-09-25 | 87, 100FS-10d |  |  |  | 28.38d |  |  |  |  |
| 123 | 3.7.2.6 | QA processes and docs |  | 30d | 2002-08-14 | 2002-09-25 | 87 |  |  |  | 28.38d |  |  |  |  |
| 124 | 3.7.3 | **Production** |  | 91d | 2002-08-19 | 2002-12-23 |  |  |  |  | 0d |  |  |  | 40h |
| 125 | 3.7.3.1 | UB build ICT |  | 4w | 2002-09-13 | 2002-10-11 | 52 | 2002-08-27 | 2002-08-27 | 0d | 11.5d | 1.5d |  |  |  |
| 126 | 3.7.3.2 | plastic tool lead |  | 60ed | 2002-08-19 | 2002-10-18 | 98 | 2002-07-10 | 2002-09-08 | 60ed | 0d |  | start no earlier than 2002-08-19 |  |  |
| 127 | 3.7.3.3 | first shot approval |  | 3ed | 2002-10-18 | 2002-10-21 | 126 | 2002-09-08 | 2002-09-11 | 3ed | 0d |  |  |  |  |
| 128 | 3.7.3.4 | order plastic production |  | 15ed | 2002-10-21 | 2002-11-05 | 127, 140 | 2002-09-11 | 2002-09-26 | 15ed | 0d |  |  |  |  |
| 129 | 3.7.3.5 | UB Review test fixture |  | 5d | 2002-10-07 | 2002-10-14 | 55, 101 | 2002-07-30 | 2002-08-05 | 5d | 10.5d | 0.5d |  | UB | 40h |
| 130 | 3.7.3.6 | Pilot run PCA ASY |  | 1w | 2002-10-15 | 2002-10-21 | 105, 125, 129, 52, 114, 109 | 2002-10-04 | 2002-10-10 | 1w | 10d | 0d |  |  |  |
| 131 | 3.7.3.7 | Pilot run box asy |  | 2w | 2002-11-05 | 2002-11-18 | 130, 104, 113, 117, 141, 128 | 2002-10-11 | 2002-10-24 | 2w | 0d |  |  |  |  |
| 132 | 3.7.3.8 | Manufacturing |  | 20d | 2002-11-19 | 2002-12-16 | 131 | 2002-10-25 | 2002-11-21 | 20d | 0d |  |  |  |  |
| 133 | 3.7.3.9 | Air Freight |  | 5d | 2002-12-17 | 2002-12-23 | 132 | 2002-11-22 | 2002-11-28 | 5d | 0d |  |  |  |  |
| 135 | 3.8 | **Agency Certifications** |  | 70.5d | 2002-07-08 | 2002-10-14 |  | 2002-06-10 | 2002-09-16 | 71d | 37d |  |  |  |  |
| 136 | 3.8.1 | Power Supply UL, CSA Certification |  | 4w | 2002-07-08 | 2002-08-02 | 106SS |  |  |  | 86d | 35.5d | start no earlier than 2002-06-24 |  |  |
| 137 | 3.8.2 | UL, CSA Preliminary Testing |  | 3d | 2002-08-09 | 2002-08-14 | 68, 41FS+5d, 93 | 2002-06-24 | 2002-07-19 | 4w | 93.5d |  | start no earlier than 2002-06-24 |  |  |
| 138 | 3.8.3 | EMC Preliminary Testing |  | 2d | 2002-08-09 | 2002-08-13 | 41FS+5d, 93 |  |  |  | 12.5d | 8d |  |  |  |
| 139 | 3.8.4 | UL, CSA Certification |  | 3w | 2002-09-23 | 2002-10-14 | 136, 54, 93 |  |  |  | 50.5d |  |  |  |  |
| 140 | 3.8.5 | FCC verification |  | 3w | 2002-09-23 | 2002-10-14 | 54, 93 | 2002-08-20 | 2002-09-16 | 4w | 4.5d |  |  |  |  |
| 141 | 3.9 | **Packaging** |  | 11d | 2002-08-16 | 2002-09-02 |  |  |  |  | 45.25d |  |  |  |  |
| 142 | 3.9.1 | Box Graphic Design | milestone | 0d | 2002-08-16 | 2002-08-16 | 167 |  |  |  | 45.25d | 0d |  |  |  |
| 143 | 3.9.2 | Package Design |  | 8d | 2002-08-16 | 2002-08-28 | 94FS+5d, 167, 142 |  |  |  | 45.25d | 0d |  |  |  |
| 144 | 3.9.3 | Drop Test |  | 3d | 2002-08-28 | 2002-09-02 | 143 |  |  |  | 45.25d |  |  |  |  |

Notes:
- 118: adjust the gain of the input, and add in the 20db, etc. / And report the value of the clipping bit. Right now we are doing a visual/aural estimate of clipping.

| ID | WBS | Task | Type | Duration | Start | Finish | Predecessors | Complete | Remaining | Baseline start | Baseline finish | Baseline duration | Total slack | Free slack | Constraint | Resources | Work |
| --- | --- | --- | --- | --- | --- | --- | --- | --- | --- | --- | --- | --- | --- | --- | --- | --- | --- |
| 145 | 3.10 | **User Guide** |  | 55.5d? | 2002-06-06 A | 2002-08-23 |  |  | 55.5d? | 2002-06-06 | 2002-07-31 | 39d | 31.5d | 0d |  |  | 48h |
| 146 | 3.10.1 | **DJ** |  | 55.5d | 2002-06-06 A | 2002-08-23 |  |  | 55.5d |  |  |  | 31.5d |  |  |  | 48h |
| 147 | 3.10.1.1 | Pre-beta release review | milestone | 0d | 2002-06-06 A | 2002-06-06 |  | 80% | 0d | 2002-06-06 | 2002-06-06 | 0d | 87d |  | start no earlier than 2002-06-06 |  |  |
| 148 | 3.10.1.2 | friendly release | milestone | 0d | 2002-06-21 | 2002-06-21 |  |  |  | 2002-06-17 | 2002-06-17 | 0d | 76d |  | start no earlier than 2002-06-21 |  |  |
| 149 | 3.10.1.3 | external beta release | milestone | 0d | 2002-07-01 | 2002-07-01 |  |  |  | 2002-06-20 | 2002-06-20 | 0d | 70d |  | start no earlier than 2002-07-01 |  |  |
| 150 | 3.10.1.4 | Beta 1 Review |  | 1w | 2002-07-16 | 2002-07-22 | 20FF |  |  | 2002-07-24 | 2002-07-24 | 0d | 26d | 0d |  |  |  |
| 151 | 3.10.1.5 | Beta 2 Review |  | 1w | 2002-08-13 | 2002-08-19 | 21FF |  |  |  |  |  | 31.5d | 0d |  | Mark [50%]; Derek [25%] | 30h |
| 152 | 3.10.1.6 | Final Release Review |  | 2.5d | 2002-08-20 | 2002-08-22 | 19, 151 |  |  | 2002-07-31 | 2002-07-31 | 0d | 31.5d | 0d | start no earlier than 2002-07-31 | Mark [50%]; Derek [25%]; Kenn [25%] | 16h |
| 153 | 3.10.1.7 | Release to Printer |  | 1d | 2002-08-22 | 2002-08-23 | 152 |  |  | 2002-07-31 | 2002-07-31 | 0d | 31.5d |  |  | Kenn [25%] | 2h |
| 154 | 3.10.2 | **FML** |  | 1d? | 2002-08-22 | 2002-08-23 |  |  |  |  |  |  | 31.5d |  |  |  |  |
| 155 | 3.10.2.1 | Release to Printer |  | 1d? | 2002-08-22 | 2002-08-23 | 152 |  |  |  |  |  | 31.5d |  |  |  |  |
| 156 | 3.10.3 | **WebControl** |  | 1d? | 2002-08-22 | 2002-08-23 |  |  |  |  |  |  | 31.5d |  |  |  |  |
| 157 | 3.10.3.1 | Release to Printer |  | 1d? | 2002-08-22 | 2002-08-23 | 152 |  |  |  |  |  | 31.5d |  |  |  |  |
| 158 | 3.11 | **Art** |  | 52.75d | 2002-06-11 | 2002-08-23 |  |  |  |  |  |  | 25.25d |  |  |  | 496h |
| 159 | 3.11.1 | **DJ-C40 Art** |  | 35.25d | 2002-06-11 | 2002-07-31 |  |  |  |  |  |  | 11.75d | 0d |  |  | 281h |
| 160 | 3.11.1.1 | Faceplate Design and Finish |  | 1w | 2002-06-11 | 2002-06-17 |  |  |  |  |  |  | 42d |  | start no earlier than 2002-06-11 | Kenn; Paul Fiori | 80h |
| 161 | 3.11.1.2 | Feaatures Label |  | 1w | 2002-07-09 | 2002-07-15 |  |  |  |  |  |  | 19d | 0d | start no earlier than 2002-07-09 | Paul Fiori; Kenn | 80h |
| 162 | 3.11.1.3 | Rearplate silkscreens |  | 4d | 2002-07-16 | 2002-07-19 | 161 |  |  |  |  |  | 19d |  | start no earlier than 2002-07-09 | Paul Fiori; Kenn | 64h |
| 163 | 3.11.1.4 | Agency label |  | 1w | 2002-07-09 | 2002-07-15 |  |  |  |  |  |  | 6.25d | 0d | start no earlier than 2002-07-09 | Doug [50%]; Kenn [25%] | 30h |
| 164 | 3.11.1.5 | Model label |  | 1w | 2002-07-16 | 2002-07-29 | 163 |  |  |  |  |  | 6.25d | 0d |  | Doug [50%]; Kenn [25%] | 20h |
| 165 | 3.11.1.6 | Tamper Proof label |  | 0.25w | 2002-07-30 | 2002-07-31 | 164 |  |  |  |  |  | 6.25d | 0d |  | Doug [50%]; Kenn [25%] | 7h |
| 166 | 3.11.2 | Remote Control Silkscreens |  | 1.5w | 2002-07-31 | 2002-08-09 | 165, 20 |  |  |  |  |  | 6.25d | 0d |  | Doug; Kenn [25%] | 55h |
| 167 | 3.11.3 | box art |  | 1w | 2002-08-09 | 2002-08-16 | 159, 166 |  |  |  |  |  | 31.25d | 0d | start no earlier than 2002-07-18 | Alix; Kenn | 80h |
| 168 | 3.11.4 | cd art |  | 1w | 2002-08-16 | 2002-08-23 | 159, 167 |  |  |  |  |  | 31.25d | 5.25d |  | Alix; Kenn | 80h |

Notes:
- 159: Faceplate / Rearplate / Features Label / Label Placement - Agency, Model, Tamper
- 161: Removeable label using icons and logos of major features: / WMA, MP3, CDDB, CompactDisc, FML, Internet Radio, Networked Device
- 166: kenn will generate spec for Doug to design to
- 167: Includes approvals from 3rd parties
- 168: Includes approvals from 3rd parties

| ID | WBS | Task | Duration | Start | Finish | Predecessors | Total slack | Free slack | Resources | Work |
| --- | --- | --- | --- | --- | --- | --- | --- | --- | --- | --- |
| 169 | 3.12 | **Trips to China** | 25d | 2002-10-15 | 2002-11-18 |  | 25d |  |  | 352h |
| 170 | 3.12.1 | plastic first article | 2d | 2002-10-17 | 2002-10-21 | 127FF | 46d |  | Marcus; Dupp | 32h |
| 171 | 3.12.2 | PCBA Review | 1w | 2002-10-15 | 2002-10-21 | 130SS | 43d | 0d | Dupp | 40h |
| 172 | 3.12.3 | Box Build Pilot Review | 2w | 2002-11-05 | 2002-11-18 | 131SS | 25d |  | Dupp; Kenn; Marcus; Seagate [10%] | 248h |
| 173 | 3.12.4 | BTC | 1d | 2002-10-22 | 2002-10-22 | 171 | 43d | 0d | Dupp; Kenn | 16h |
| 174 | 3.12.5 | Seagate | 1d | 2002-10-23 | 2002-10-23 | 173 | 43d |  | Dupp; Kenn | 16h |
