# FP UB Sahara Production Release v2 GOAL

Schedule from MS Project, 2002-05-01 to 2002-12-31, A marks actual dates.
Fullplay Media

## Calendars

- Standard: Mon-Fri 08:00-12:00, 13:00-17:00; Sat-Sun off. Exceptions (off unless hours are given): 2002-07-04, 2002-07-05 08:00-12:00, 13:00-17:00.

## Resources

| Resource |
| --- |
| Doug |
| Kenn |
| Alix |
| Fiori |
| Paul Fiori |
| Teman |
| ChrisA |
| ProtoTron |
| PCA |
| Monsoon |
| UnitedBox |
| Josh |
| Dupp |
| UB |
| Monson |
| DigiKey |
| Derek |
| Mark |
| Marcus |
| Software |
| Chrisl |
| Seagate |
| Cole |
| SystemPro |
| StarTech |

## Schedule

| ID | WBS | Task | Type | Duration | Start | Finish | Predecessors | Complete | Remaining | Baseline start | Baseline finish | Baseline duration | Total slack | Free slack | Constraint | Resources | Work | Actual work |
| --- | --- | --- | --- | --- | --- | --- | --- | --- | --- | --- | --- | --- | --- | --- | --- | --- | --- | --- |
| 1 | 1 | Fullplay Media Systems, Inc. |  | 1d? | 2002-05-06 | 2002-05-06 |  |  |  |  |  |  | 164d |  |  |  |  |  |
| 2 | 2 | Confidential Information |  | 1d? | 2002-05-06 | 2002-05-06 |  |  |  |  |  |  | 164d |  |  |  |  |  |
| 4 | 3 | **Sahara Program- Preliminary** |  | 173.62d? | 2002-05-01 A | 2002-12-31 |  | 11% | 153.8d? |  |  |  | 0d |  |  |  | 6059.6h | 648.8h |
| 5 | 3.1 | DJ contract completion |  | 28d | 2002-05-17 A | 2002-06-25 |  | 54% | 13d | 2002-05-17 | 2002-06-27 | 30d | 28d | 1d | finish no earlier than 2002-06-25 |  |  |  |
| 6 | 3.2 | **Beta Protos** |  | 45d | 2002-05-20 A | 2002-07-22 |  | 37% | 28.42d |  |  |  | 78.62d |  |  |  |  |  |
| 7 | 3.2.1 | DJ-35 MAIN-02-A parts kit |  | 1d | 2002-05-20 A | 2002-05-20 A |  | 100% |  | 2002-05-20 | 2002-05-20 | 1d |  |  | start no earlier than 2002-05-20 |  |  |  |
| 8 | 3.2.2 | DJ-35 4x MAIN PCA |  | 5ed | 2002-05-20 A | 2002-05-25 | 7 | 90% | 0.5ed | 2002-05-20 | 2002-05-25 | 5ed | 113.5d | 4.88d |  |  |  |  |
| 9 | 3.2.3 | DJ-35 4x MAIN review |  | 5d | 2002-05-27 A | 2002-05-31 | 8 | 10% | 4.5d | 2002-05-27 | 2002-05-31 | 5d | 26d | 0d |  |  |  |  |
| 10 | 3.2.4 | DJ-35 parts kit |  | 1d | 2002-05-28 A | 2002-05-28 A |  | 100% |  | 2002-05-28 | 2002-05-28 | 1d |  |  | start no earlier than 2002-05-28 |  |  |  |
| 11 | 3.2.5 | DJ-35 remaining PCA |  | 1w | 2002-06-03 A | 2002-06-07 | 10, 9 | 90% | 0.1w | 2002-06-03 | 2002-06-07 | 1w | 21.5d | 0d |  |  |  |  |
| 12 | 3.2.6 | DJ-35 Box (case, HDD, CDD, LCD) | milestone | 0d | 2002-06-07 A | 2002-06-07 A |  | 100% |  | 2002-06-07 | 2002-06-07 | 0d |  |  | start no earlier than 2002-06-07 |  |  |  |
| 13 | 3.2.7 | DJ-35 HW Evt and Build |  | 5d | 2002-06-10 A | 2002-06-14 | 11, 12 | 10% | 4.5d | 2002-06-10 | 2002-06-14 | 5d | 21d | 0d |  |  |  |  |
| 14 | 3.2.8 | Friendly External BETA |  | 5d | 2002-06-17 | 2002-06-21 | 13 |  |  | 2002-06-17 | 2002-06-21 | 5d | 21d | 0d |  |  |  |  |
| 15 | 3.2.9 | External BETA |  | 4w | 2002-06-24 | 2002-07-22 | 14 |  |  | 2002-06-24 | 2002-07-19 | 4w | 108d | 54.5d |  |  |  |  |
| 16 | 3.3 | **Software** |  | 84d | 2002-05-06 A | 2002-08-30 |  | 39% | 51d |  |  |  | 46.62d |  |  |  | 1376h | 550h |
| 17 | 3.3.1 | Create HW EVT test |  | 6w | 2002-06-10 A | 2002-07-23 |  | 10% | 5.4w | 2002-07-02 | 2002-07-29 | 4w | 16.62d | 11d | finish no earlier than 2002-07-23 | Software | 240h | 24h |
| 18 | 3.3.2 | Final bootloader Flash Image |  | 4w | 2002-07-23 A | 2002-08-19 |  | 25% | 3w | 2002-08-06 | 2002-09-02 | 4w | 10d | 0d |  | Software | 160h | 40h |
| 19 | 3.3.3 | Prepare sample boot image for gang program test |  | 1d | 2002-08-20 | 2002-08-20 | 18 |  |  |  |  |  | 54.62d | 0d |  |  |  |  |
| 20 | 3.3.4 | DJ-C40 Software Dev |  | 75d | 2002-05-06 A | 2002-08-19 |  | 65% | 26.25d |  |  |  | 36.62d | 0d |  | Software | 600h | 390h |
| 21 | 3.3.5 | Beta 1 |  | 4w | 2002-06-24 A | 2002-07-22 |  | 60% | 1.6w |  |  |  | 20.12d | 0d | start no earlier than 2002-06-24 | Software | 160h | 96h |
| 22 | 3.3.6 | Beta 2 |  | 4w | 2002-07-23 | 2002-08-19 | 21, 161 |  |  |  |  |  | 31.62d | 0d |  | Software | 160h |  |
| 23 | 3.3.7 | Final Debug |  | 1w | 2002-08-20 | 2002-08-26 | 22 |  |  |  |  |  | 31.62d | 0d |  | Software | 40h |  |
| 24 | 3.3.8 | Final Burn-In CD Image |  | 4d | 2002-08-27 | 2002-08-30 | 20, 23 |  |  | 2002-08-06 | 2002-09-02 | 4w | 31.62d | 0d |  | Derek [25%]; Kenn [25%] | 16h |  |
| 26 | 3.4 | **Electrical** |  | 104d? | 2002-05-06 A | 2002-09-27 |  | 13% | 90.54d? |  |  |  | 66.62d |  |  |  | 777h | 2h |
| 27 | 3.4.1 | FP Release GYR BOM for Purchasing |  | 10d | 2002-05-06 A | 2002-05-17 A |  | 100% |  | 2002-05-06 | 2002-05-17 | 10d |  |  |  |  |  |  |
| 28 | 3.4.2 | UB Req. Mech BOM Changes |  | 5d | 2002-05-20 A | 2002-05-24 | 27 | 85% | 0.75d | 2002-05-20 | 2002-05-24 | 5d | 51.62d | 18d |  |  |  |  |
| 29 | 3.4.3 | UB Req. Sourcing BOM Changes |  | 23d | 2002-05-20 A | 2002-06-19 | 27 | 33% | 15.5d | 2002-05-20 | 2002-06-07 | 15d | 33.62d | 0d |  |  |  |  |
| 30 | 3.4.4 | UB Req. ASY BOM Changes |  | 10d | 2002-05-20 A | 2002-05-31 | 27 | 25% | 7.5d | 2002-05-20 | 2002-05-31 | 10d | 46.62d | 13d |  |  |  |  |
| 31 | 3.4.5 | FP add UB BOM changes |  | 5d | 2002-06-20 A | 2002-06-26 | 28, 29, 30 | 20% | 4d | 2002-06-10 | 2002-06-13 | 4d | 32.62d | 8d |  |  |  |  |
| 32 | 3.4.6 | Test Cicuit for Serial and S/PDIF |  | 1d? | 2002-07-09 A | 2002-07-09 |  | 25% | 0.75d? |  |  |  | 124.62d |  | start no earlier than 2002-07-09 | Chrisl [50%]; Josh [50%] | 6h | 2h |

Notes:
- 24: prepare format and delivery

| ID | WBS | Task | Type | Duration | Start | Finish | Predecessors | Baseline start | Baseline finish | Baseline duration | Total slack | Free slack | Constraint | Resources | Work |
| --- | --- | --- | --- | --- | --- | --- | --- | --- | --- | --- | --- | --- | --- | --- | --- |
| 33 | 3.4.7 | **Sahara Rev 03** |  | 63d? | 2002-06-07 | 2002-09-04 |  |  |  |  | 5.62d |  |  |  | 396h |
| 34 | 3.4.7.1 | FP Complete new audio circuit |  | 25d | 2002-06-07 | 2002-07-12 |  |  |  |  | 6.12d | 0d | finish no earlier than 2002-07-12 | Josh [25%]; ChrisA [25%]; Dupp [25%] | 80h |
| 35 | 3.4.7.2 | Order New Parts |  | 10d | 2002-06-27 | 2002-07-11 |  |  |  |  | 5.62d | 0d | start no earlier than 2002-06-27 | Chrisl [10%] | 8h |
| 36 | 3.4.7.3 | Parts Arrival |  | 10d | 2002-07-12 | 2002-07-25 | 35 |  |  |  | 5.62d | 0d |  | DigiKey | 80h |
| 37 | 3.4.7.4 | FP ROUTE PCB-03-A |  | 5d | 2002-07-15 | 2002-07-19 | 34 | 2002-06-28 | 2002-07-02 | 3d | 6.12d | 0d |  | Monsoon | 40h |
| 38 | 3.4.7.5 | UB review gerber for ICT |  | 3d | 2002-07-22 | 2002-07-24 | 37 | 2002-07-03 | 2002-07-09 | 5d | 6.12d | 0d |  | UnitedBox | 24h |
| 39 | 3.4.7.6 | FP final gerber edit-03-A |  | 0.5d | 2002-07-25 | 2002-07-25 | 38, 63 | 2002-07-10 | 2002-07-11 | 2d | 6.12d | 0.5d |  | Josh; Dupp | 8h |
| 40 | 3.4.7.7 | FP RTFAB-03-A |  | 3d | 2002-07-22 | 2002-07-24 | 37 | 2002-07-12 | 2002-07-18 | 5d | 8.62d | 0d |  | ProtoTron | 24h |
| 41 | 3.4.7.8 | Kit Preperation |  | 2d? | 2002-07-26 | 2002-07-29 | 36, 39 |  |  |  | 5.62d | 0d |  | Chrisl [50%] | 8h |
| 42 | 3.4.7.9 | FP RTASY-03-A |  | 5d | 2002-07-30 | 2002-08-05 | 14, 40, 41 | 2002-07-19 | 2002-07-29 | 7d | 5.62d | 0d |  | PCA | 40h |
| 43 | 3.4.7.10 | Receive Parts and Assemble Units | milestone | 2d | 2002-08-06 | 2002-08-07 | 42 |  |  |  | 5.62d | 0d |  | Chrisl [50%] | 8h |
| 44 | 3.4.7.11 | FP HW EVT, EMI |  | 20d | 2002-08-08 | 2002-09-04 | 17, 43 | 2002-07-30 | 2002-08-19 | 3w | 5.62d | 0d |  | Chrisl [25%]; Josh [20%]; Dupp [75%] | 76h |
| 45 | 3.4.8 | **Functionality Test Fixture** |  | 28d | 2002-07-15 | 2002-08-21 |  |  |  |  | 58.12d |  |  |  | 173h |
| 46 | 3.4.8.1 | Functionality Design Draft |  | 3d | 2002-07-15 | 2002-07-17 |  |  |  |  | 58.12d | 0d | start no earlier than 2002-07-15 | Dupp [25%]; Teman [25%]; Josh [25%] | 17h |
| 47 | 3.4.8.2 | Preliminary Functionality Text Fixture Design |  | 3w | 2002-07-18 | 2002-08-07 | 46 | 2002-06-10 | 2002-07-19 | 6w | 58.12d | 0d | start no earlier than 2002-07-15 | Josh [33.3%]; Dupp [25%]; Kenn [5%]; Chrisl [50%] | 86h |
| 48 | 3.4.8.3 | Final Design Release |  | 2w | 2002-08-08 | 2002-08-21 | 47 |  |  |  | 58.12d | 0d |  | Josh [25%]; Dupp [15%]; Chrisl [50%] | 70h |
| 49 | 3.4.9 | **Sahara Rev 04** |  | 22d? | 2002-08-29 | 2002-09-27 |  |  |  |  | 5.62d |  |  |  | 202h |
| 50 | 3.4.9.1 | Circuit Design Change |  | 5d | 2002-08-29 | 2002-09-04 | 44FF |  |  |  | 5.62d | 0d |  | Josh; Dupp [25%]; Chrisl [50%] | 34h |
| 51 | 3.4.9.2 | FP xfer BOM to UB |  | 2d | 2002-09-05 | 2002-09-06 | 66, 69, 15, 50 | 2002-08-19 | 2002-08-19 | 0d | 46.62d | 0d |  | Josh [50%]; Dupp [50%]; Kenn [50%] | 16h |
| 52 | 3.4.9.3 | Order New Part |  | 0.5d? | 2002-09-05 | 2002-09-05 | 50 |  |  |  | 6.12d | 0d |  | Chrisl [50%] | 2h |
| 53 | 3.4.9.4 | Parts Arrival |  | 3d | 2002-09-05 | 2002-09-10 | 52 |  |  |  | 6.12d | 0d |  | DigiKey | 24h |
| 54 | 3.4.9.5 | FP ROUTE -04-A |  | 3d | 2002-09-05 | 2002-09-09 | 149, 50 | 2002-08-20 | 2002-08-22 | 3d | 5.62d | 0d |  | Monson | 24h |
| 55 | 3.4.9.6 | FP RTFAB -04-A |  | 3d | 2002-09-10 | 2002-09-12 | 54 | 2002-08-23 | 2002-08-27 | 3d | 5.62d | 0d |  | ProtoTron | 24h |
| 56 | 3.4.9.7 | Kit preperation |  | 2d | 2002-09-10 | 2002-09-12 | 53, 54 |  |  |  | 6.12d | 0.5d |  | Chrisl [75%] | 12h |
| 57 | 3.4.9.8 | FP RTASY -04-A |  | 5d | 2002-09-13 | 2002-09-19 | 56, 55 | 2002-08-27 | 2002-09-02 | 6ed | 5.62d | 0d |  | PCA | 40h |
| 58 | 3.4.9.9 | Receive board and assemble unit |  | 1d? | 2002-09-20 | 2002-09-20 | 57 |  |  |  | 5.62d | 0d |  | Chrisl [50%] | 4h |
| 59 | 3.4.9.10 | FP HW EVT -04-A |  | 5d | 2002-09-23 | 2002-09-27 | 58 | 2002-09-03 | 2002-09-05 | 3d | 5.62d | 0d |  | Josh [25%]; Dupp [25%]; Chrisl [25%] | 22h |

Notes:
- 40: 2 Urethanes for UB / 2 Machined ABS for FCC and UL / 1 Urethane for Fiori / 5 Urethanes for Fullplay / 1 Urethane for packaging drop test / Total = 9 Urethanes, and 2 ABS / 11 boards min.
- 47: real hardware tests / (void*)test_gpio,"GPIO","<bank> <line> <direction> <value>",0, / (void*)test_memtest,"MEMTEST","<size>",0, / (void*)test_stress,"STRESS","<fail fast = true>",0, / (void*)test_hdstress,"HDSTRESS","<sector count> <fail fast = true>",0, / (void*)test_cdstress,"CDSTRESS","<sector count> <fail fast = true>",0, / (void*)test_lcd,"LCD","Run LCD test, ON, OFF",0, / (void*)test_adc,"ADC","Run ADC/DAC test for <secs> length",0, / (void*)test_dac,"DAC","ON, OFF, TEST, or nothing for the full sequence",0, / (void*)test_tone,"TONE","<frequency> <samplerate> <length (sec)>",1, / (void*)test_ata,"ATA","Run ATA test",0, / (void*)test_net,"NET","Run Ethernet chip test",0, / (void*)test_ir,"IR","Run IR test",0, / (void*)test_key,"KEY","Run Keypad test",0, / (void*)test_eject,"EJECT","Eject/Inject CD",0, / (void*)test_net_slave,"SLAVE","Network slave test",P_STRING, / (void*)test_net_master,"MASTER","Network master test",P_STRING,

| ID | WBS | Task | Type | Duration | Start | Finish | Predecessors | Complete | Remaining | Baseline start | Baseline finish | Baseline duration | Total slack | Free slack | Constraint | Resources | Work | Actual work |
| --- | --- | --- | --- | --- | --- | --- | --- | --- | --- | --- | --- | --- | --- | --- | --- | --- | --- | --- |
| 60 | 3.5 | **Goal Dates** |  | 58d | 2002-05-13 | 2002-08-02 |  |  |  |  |  |  | 58.12d |  |  |  |  |  |
| 61 | 3.5.1 | GOAL UB confirm part changes | milestone | 0d | 2002-05-13 | 2002-05-13 |  |  |  | 2002-05-13 | 2002-05-13 | 0d | 165.62d |  | start no earlier than 2002-05-13 |  |  |  |
| 62 | 3.5.2 | GOAL FP prelim gerber for ICT | milestone | 0d | 2002-05-24 | 2002-05-24 |  |  |  | 2002-05-24 | 2002-05-24 | 0d | 156.62d |  | start no earlier than 2002-05-24 |  |  |  |
| 63 | 3.5.3 | GOAL UB feedback on ICT | milestone | 0d | 2002-05-31 | 2002-05-31 |  |  |  | 2002-05-31 | 2002-05-31 | 0d | 44.12d | 38d | start no earlier than 2002-05-31 |  |  |  |
| 64 | 3.5.4 | GOAL FP PCB RTFAB | milestone | 0d | 2002-06-07 | 2002-06-07 |  |  |  | 2002-06-07 | 2002-06-07 | 0d | 146.62d |  | start no earlier than 2002-06-07 |  |  |  |
| 65 | 3.5.5 | GOAL FP send ASY +3 PCB set | milestone | 0d | 2002-06-19 | 2002-06-19 |  |  |  | 2002-06-19 | 2002-06-19 | 0d | 138.62d |  | start no earlier than 2002-06-19 |  |  |  |
| 66 | 3.5.6 | GOAL FP relase final post EMI BOM | milestone | 0d | 2002-07-01 | 2002-07-01 |  |  |  | 2002-07-01 | 2002-07-01 | 0d | 93.62d | 0d | start no earlier than 2002-07-01 |  |  |  |
| 67 | 3.5.7 | GOAL UB review, pull trigger | milestone | 0d | 2002-07-01 | 2002-07-01 | 66 |  |  | 2002-07-01 | 2002-07-01 | 0d | 130.62d |  |  |  |  |  |
| 68 | 3.5.8 | GOAL UB start PCA Pilot Run | milestone | 0d | 2002-07-22 | 2002-07-22 |  |  |  | 2002-07-22 | 2002-07-22 | 0d | 116.62d |  | start no earlier than 2002-07-22 |  |  |  |
| 69 | 3.5.9 | GOAL FP submit regulatory paperwork | milestone | 0d | 2002-07-01 | 2002-07-01 |  |  |  | 2002-07-01 | 2002-07-01 | 0d | 93.62d | 47d | start no earlier than 2002-07-01 |  |  |  |
| 70 | 3.5.10 | GOAL receive final reg. approval | milestone | 0d | 2002-08-02 | 2002-08-02 |  |  |  | 2002-08-02 | 2002-08-02 | 0d | 107.62d |  | start no earlier than 2002-08-02 |  |  |  |
| 71 | 3.6 | **Mechanical** |  | 87.62d? | 2002-05-01 A | 2002-09-02 |  | 21% | 69.52d? |  |  |  | 86d |  |  |  | 505.8h | 96.8h |
| 72 | 3.6.1 | **Sub-Assembly Acceptance** |  | 0d | 2002-07-08 A | 2002-07-08 |  |  | 0d |  |  |  | 41.62d | 0d |  |  |  |  |
| 73 | 3.6.1.1 | Bob PWR acceptance | milestone | 0d | 2002-07-08 | 2002-07-08 |  |  |  | 2002-06-10 | 2002-06-10 | 0d | 41.62d |  | start no earlier than 2002-07-08 |  |  |  |
| 74 | 3.6.1.2 | HDD acceptance | milestone | 0d | 2002-07-08 A | 2002-07-08 A |  | 100% |  | 2002-06-10 | 2002-06-10 | 0d |  |  | start no earlier than 2002-06-10 |  |  |  |
| 75 | 3.6.1.3 | CDD acceptance | milestone | 0d | 2002-07-08 | 2002-07-08 |  |  |  | 2002-06-10 | 2002-06-10 | 0d | 41.62d |  | start no earlier than 2002-07-08 |  |  |  |
| 76 | 3.6.1.4 | LCD acceptance | milestone | 0d | 2002-07-08 | 2002-07-08 |  |  |  |  |  |  | 41.62d |  | start no earlier than 2002-07-08 |  |  |  |
| 77 | 3.6.2 | prelim plastic spec |  | 10d | 2002-05-10 A | 2002-05-23 A |  | 100% |  | 2002-05-10 | 2002-05-23 | 10d |  |  | finish no earlier than 2002-05-23 |  |  |  |
| 78 | 3.6.3 | TriHonor Feedback |  | 12d | 2002-05-24 A | 2002-06-10 A | 77 | 100% |  | 2002-05-24 | 2002-06-10 | 12d |  |  |  |  |  |  |
| 79 | 3.6.4 | Review CD-ROM samples and spec |  | 47d | 2002-05-01 | 2002-07-05 |  |  |  | 2002-05-20 | 2002-05-24 | 5d | 126.62d | 0d | start no earlier than 2002-05-01 |  |  |  |
| 80 | 3.6.5 | Approve and purchase CD-ROM | milestone | 0d | 2002-07-05 | 2002-07-05 | 79 |  |  | 2002-05-24 | 2002-05-24 | 0d | 126.62d |  | start no earlier than 2002-06-20 |  |  |  |
| 81 | 3.6.6 | Beta Box feedback |  | 5d | 2002-06-24 | 2002-06-28 | 14 |  |  |  |  |  | 130.62d |  |  |  |  |  |
| 82 | 3.6.7 | **Sahara Proto 1** |  | 34.62d? | 2002-06-03 A | 2002-07-22 |  | 69% | 10.63d? |  |  |  | 31d | 0d |  |  | 145.8h | 96.8h |
| 83 | 3.6.7.1 | Files to Proto Vendors | milestone | 0d | 2002-06-03 A | 2002-06-03 A |  | 100% |  |  |  |  |  |  | start no earlier than 2002-06-03 | Marcus |  |  |
| 84 | 3.6.7.2 | Quote Generation |  | 3d | 2002-06-03 A | 2002-06-05 A | 83 | 100% |  |  |  |  |  |  | start no earlier than 2002-06-03 | Marcus | 24h | 24h |
| 85 | 3.6.7.3 | Receive and Review Quotes |  | 1d | 2002-06-06 A | 2002-06-06 A | 84 | 100% |  |  |  |  |  |  |  | Marcus [25%] | 2h | 2h |
| 86 | 3.6.7.4 | Integrate DJ35 Issues and Design Changes |  | 16d | 2002-06-07 A | 2002-06-28 A | 85 | 100% |  |  |  |  |  |  |  | Marcus [50%]; Cole [10%] | 66.8h | 66.8h |
| 87 | 3.6.7.5 | Release FP PO numbers to vendors |  | 0.12d? | 2002-07-01 A | 2002-07-01 A | 86 | 100% |  |  |  |  |  |  |  | Kenn | 1h | 1h |
| 88 | 3.6.7.6 | Fiori 1st Protos ( 1 SLA and metal unit) |  | 8d | 2002-07-01 A | 2002-07-12 | 87 | 65% | 2.8d |  |  |  | 0d |  |  |  |  |  |
| 89 | 3.6.7.7 | Specify DJ color and finish |  | 3d? | 2002-07-01 A | 2002-07-05 | 87 | 25% | 2.25d? |  |  |  | 42.5d |  |  | Kenn [25%]; Marcus [25%] | 12h | 3h |
| 90 | 3.6.7.8 | Prototype Assembly Review and CAD Database Refinements |  | 6d | 2002-07-12 | 2002-07-22 | 88 |  |  |  |  |  | 0d |  |  | Marcus [75%] | 36h |  |
| 91 | 3.6.7.9 | Updated Files to Tooling Vendors |  | 0.5d? | 2002-07-22 | 2002-07-22 | 90 |  |  |  |  |  | 31d |  |  | Marcus | 4h |  |
| 92 | 3.6.8 | Order nameplate and feature label samples |  | 30d | 2002-07-03 | 2002-08-21 |  |  |  |  |  |  | 93.62d |  | start no earlier than 2002-07-03 | Kenn | 240h |  |

| ID | WBS | Task | Type | Duration | Start | Finish | Predecessors | Baseline start | Baseline finish | Baseline duration | Total slack | Free slack | Constraint | Resources | Work |
| --- | --- | --- | --- | --- | --- | --- | --- | --- | --- | --- | --- | --- | --- | --- | --- |
| 93 | 3.6.9 | **Sahara Proto 2** |  | 30.62d | 2002-07-15 | 2002-08-26 |  |  |  |  | 0d |  |  |  | 48h |
| 94 | 3.6.9.1 | update file to proto vendors | milestone | 0d | 2002-07-22 | 2002-07-22 | 90 |  |  |  | 0d |  |  | Marcus |  |
| 95 | 3.6.9.2 | release FP PO numbers | milestone | 0d | 2002-07-22 | 2002-07-22 | 94 |  |  |  | 0d |  |  | Kenn |  |
| 96 | 3.6.9.3 | SLA Build |  | 5d | 2002-07-22 | 2002-07-29 | 95 | 2002-07-11 | 2002-07-24 | 10d | 0d |  |  |  |  |
| 97 | 3.6.9.4 | Urethane Build |  | 15d | 2002-07-29 | 2002-08-19 | 96 |  |  |  | 0d |  |  |  |  |
| 98 | 3.6.9.5 | Metal Build |  | 15d | 2002-07-22 | 2002-08-12 | 95 |  |  |  | 5d |  |  |  |  |
| 99 | 3.6.9.6 | Machined ABS |  | 10d | 2002-07-29 | 2002-08-12 | 96 |  |  |  | 5d | 0d |  |  |  |
| 100 | 3.6.9.7 | Parts Received | milestone | 0d | 2002-08-19 | 2002-08-19 | 99, 97, 98 |  |  |  | 0d |  |  |  |  |
| 101 | 3.6.9.8 | Proto 2 review |  | 0.5d | 2002-08-19 | 2002-08-19 | 100 |  |  |  | 0d |  |  | Marcus; Kenn | 8h |
| 102 | 3.6.9.9 | Limited CAD updates as required |  | 4.5d | 2002-08-19 | 2002-08-26 | 101 |  |  |  | 0d |  |  | Marcus | 36h |
| 103 | 3.6.9.10 | Paint and Finish Requirements |  | 0.5d | 2002-07-15 | 2002-07-15 | 170 |  |  |  | 29.62d |  |  | Marcus | 4h |
| 104 | 3.6.9.11 | Fiori final rev |  | 0.5d | 2002-08-26 | 2002-08-26 | 102, 103 | 2002-07-10 | 2002-07-10 | 0d | 0d |  | start no earlier than 2002-07-04 |  |  |
| 105 | 3.6.10 | **Tooling and Production Ramp Support** |  | 32.62d | 2002-07-18 | 2002-09-02 |  |  |  |  | 33.62d |  |  |  | 72h |
| 106 | 3.6.10.1 | CTF Drawing Creation |  | 30d | 2002-07-22 | 2002-09-02 | 82 |  |  |  | 31d | 0d |  | Marcus [25%] | 60h |
| 107 | 3.6.10.2 | Functionality Text Fixture Design |  | 2w | 2002-07-18 | 2002-07-31 | 47SS |  |  |  | 63.62d | 5d |  | Marcus [15%] | 12h |
| 109 | 3.7 | **Manufacturing** |  | 170.62d | 2002-05-06 | 2002-12-31 |  |  |  |  | 0d |  |  |  | 2684h |
| 110 | 3.7.1 | **UB Part Ordering** |  | 122.5d | 2002-05-06 | 2002-10-24 |  |  |  |  | 13.12d |  |  |  | 2600h |
| 111 | 3.7.1.1 | UB Order BOM parts |  | 12w | 2002-07-10 | 2002-10-01 | 31, 5 | 2002-06-28 | 2002-10-03 | 14w | 24.62d | 12d | start no earlier than 2002-07-10 | UnitedBox | 480h |
| 112 | 3.7.1.2 | UB Order Power Supply from Bobbintron |  | 8w | 2002-07-12 | 2002-09-05 | 72 |  |  |  | 47.62d | 0d | start no earlier than 2002-07-12 | UnitedBox | 320h |
| 113 | 3.7.1.3 | UB Order Remote Control |  | 11w | 2002-08-08 | 2002-10-24 | 179 |  |  |  | 13.12d |  |  | UnitedBox | 440h |
| 114 | 3.7.1.4 | UB Order LCD |  | 10w | 2002-07-08 | 2002-09-13 | 72 |  |  |  | 41.62d |  |  | UnitedBox | 400h |
| 115 | 3.7.1.5 | UB Order Cirrus Parts |  | 8w | 2002-08-19 | 2002-10-11 |  |  |  |  | 16.62d | 4d | start no earlier than 2002-08-19 | UnitedBox | 320h |
| 116 | 3.7.1.6 | Preliminary 04-X2 BOM Release | milestone | 0d | 2002-07-12 | 2002-07-12 | 34 |  |  |  | 86.62d |  | start no earlier than 2002-07-12 | Dupp |  |
| 117 | 3.7.1.7 | Preliminary 04-X3 BOM release | milestone | 0d | 2002-09-06 | 2002-09-06 | 51 |  |  |  | 46.62d |  |  | Dupp |  |
| 118 | 3.7.1.8 | Confirmed 04-A BOM Release | milestone | 0d | 2002-09-27 | 2002-09-27 | 59 |  |  |  | 31.62d |  |  | Dupp |  |
| 119 | 3.7.1.9 | Duplicate CDs |  | 4w | 2002-09-02 | 2002-09-27 | 181, 24 | 2002-09-06 | 2002-10-03 | 4w | 31.62d |  |  | UnitedBox | 160h |
| 120 | 3.7.1.10 | Duplicate Flash |  | 8w | 2002-08-20 | 2002-10-14 | 18 | 2002-09-06 | 2002-10-03 | 4w | 15.62d | 3d |  | UnitedBox | 320h |
| 121 | 3.7.1.11 | User Guide and Quick Start Guide |  | 4w | 2002-08-23 | 2002-09-20 | 156 |  |  |  | 37.12d |  |  | UnitedBox | 160h |
| 122 | 3.7.1.12 | Tooling Quote |  | 1w | 2002-05-06 | 2002-05-10 |  |  |  |  | 130.62d |  |  |  |  |

Notes:
- 93: 2 Urethanes for UB / 2 Machined ABS for FCC and UL / 1 Urethane for Fiori / 5 Urethanes for Fullplay / 1 Urethane for packaging drop test / Total = 9 Urethanes, and 2 ABS
- 97: May build up to 50 pcs, so I've increased the duration to 15 days from 10.

| ID | WBS | Task | Type | Duration | Start | Finish | Predecessors | Baseline start | Baseline finish | Baseline duration | Total slack | Free slack | Constraint | Resources | Work |
| --- | --- | --- | --- | --- | --- | --- | --- | --- | --- | --- | --- | --- | --- | --- | --- |
| 123 | 3.7.2 | **QA and Process Development** |  | 57.62d | 2002-07-18 | 2002-10-07 |  |  |  |  | 26d |  |  |  | 84h |
| 124 | 3.7.2.1 | Release Beta 1 User Guide docs to UB | milestone | 0d | 2002-07-22 | 2002-07-22 | 161 |  |  |  | 80.62d |  |  | Kenn |  |
| 125 | 3.7.2.2 | UB Recevies 4 V03 PCB samples from FP |  | 3d | 2002-07-25 | 2002-07-29 | 40 |  |  |  | 75.62d |  |  |  |  |
| 126 | 3.7.2.3 | UB Receives 4 V03 PCBA samples from FP |  | 3d | 2002-08-06 | 2002-08-08 | 42 |  |  |  | 67.62d |  |  |  |  |
| 127 | 3.7.2.4 | UB Receives 4 V04 x3 PCB samples from FP |  | 3d | 2002-09-13 | 2002-09-17 | 55 |  |  |  | 39.62d |  |  |  |  |
| 128 | 3.7.2.5 | UB Receives 4 V04 x3 PCBA samples from FP |  | 3d | 2002-09-20 | 2002-09-24 | 57 |  |  |  | 34.62d |  |  |  |  |
| 129 | 3.7.2.6 | Receive 4 Sahara proto 2 samples |  | 3d | 2002-08-26 | 2002-08-29 | 100FS+5d |  |  |  | 53.5d |  |  |  |  |
| 130 | 3.7.2.7 | Box assembly docs and drawings |  | 30d | 2002-08-26 | 2002-10-07 | 93, 106FS-10d |  |  |  | 26d |  |  |  |  |
| 131 | 3.7.2.8 | QA processes and docs |  | 30d | 2002-08-26 | 2002-10-07 | 93 |  |  |  | 26d |  |  |  |  |
| 132 | 3.7.2.9 | UB Review Test Fixture Desgin Draft |  | 5d | 2002-07-18 | 2002-07-24 | 46 |  |  |  | 78.62d |  |  |  |  |
| 133 | 3.7.2.10 | UB Review Preliminary test fixture |  | 5d | 2002-08-08 | 2002-08-14 | 107, 47 | 2002-07-30 | 2002-08-05 | 5d | 58.62d | 46d |  | UB | 40h |
| 134 | 3.7.2.11 | First release of factory functionality test |  | 1d | 2002-08-22 | 2002-08-27 | 48 |  |  |  | 55.12d |  | start no earlier than 2002-06-28 | Teman [50%]; Kenn [50%] | 4h |
| 135 | 3.7.2.12 | UB test boot image programming on SST Flash with Star Tech programmer |  | 5d | 2002-08-21 | 2002-08-27 | 19 |  |  |  | 54.62d |  |  | UB | 40h |
| 136 | 3.7.3 | **Production** |  | 91d | 2002-08-26 | 2002-12-31 |  |  |  |  | 0d |  |  |  |  |
| 137 | 3.7.3.1 | UB build ICT |  | 4w | 2002-09-20 | 2002-10-17 | 57 | 2002-08-27 | 2002-08-27 | 0d | 12.62d | 0d |  |  |  |
| 138 | 3.7.3.2 | plastic tool lead |  | 60ed | 2002-08-26 | 2002-10-25 | 104 | 2002-07-10 | 2002-09-08 | 60ed | 0d |  | start no earlier than 2002-08-19 |  |  |
| 139 | 3.7.3.3 | first shot approval |  | 3ed | 2002-10-25 | 2002-10-28 | 138 | 2002-09-08 | 2002-09-11 | 3ed | 0d |  |  |  |  |
| 140 | 3.7.3.4 | order plastic production |  | 15ed | 2002-10-28 | 2002-11-12 | 139, 151 | 2002-09-11 | 2002-09-26 | 15ed | 0d |  |  |  |  |
| 141 | 3.7.3.5 | Pilot run PCA ASY |  | 1w | 2002-10-18 | 2002-10-24 | 111, 137, 133, 57, 120, 115 | 2002-10-04 | 2002-10-10 | 1w | 12.62d | 0d |  |  |  |
| 142 | 3.7.3.6 | Pilot run box asy |  | 2w | 2002-11-12 | 2002-11-26 | 141, 110, 119, 123, 152, 140, 113 | 2002-10-11 | 2002-10-24 | 2w | 0d |  |  |  |  |
| 143 | 3.7.3.7 | Manufacturing |  | 20d | 2002-11-26 | 2002-12-24 | 142 | 2002-10-25 | 2002-11-21 | 20d | 0d |  |  |  |  |
| 144 | 3.7.3.8 | Air Freight |  | 5d | 2002-12-24 | 2002-12-31 | 143 | 2002-11-22 | 2002-11-28 | 5d | 0d |  |  |  |  |
| 146 | 3.8 | **Agency Certifications** |  | 71d | 2002-07-12 | 2002-10-18 |  | 2002-06-10 | 2002-09-16 | 71d | 42.62d |  |  |  |  |
| 147 | 3.8.1 | Power Supply UL, CSA Certification |  | 4w | 2002-07-12 | 2002-08-08 | 112SS |  |  |  | 87.62d | 36d | start no earlier than 2002-07-12 |  |  |
| 148 | 3.8.2 | UL, CSA Preliminary Testing |  | 3d | 2002-08-12 | 2002-08-15 | 72, 99, 43 | 2002-06-24 | 2002-07-19 | 4w | 98.5d |  | start no earlier than 2002-06-24 |  |  |
| 149 | 3.8.3 | EMC Preliminary Testing |  | 2d | 2002-08-13 | 2002-08-14 | 42FS+5d, 99 |  |  |  | 20.62d | 15d |  |  |  |
| 150 | 3.8.4 | UL, CSA Certification |  | 3w | 2002-09-30 | 2002-10-18 | 147, 59, 99 |  |  |  | 51.62d |  |  |  |  |
| 151 | 3.8.5 | FCC verification |  | 3w | 2002-09-30 | 2002-10-18 | 59, 99 | 2002-08-20 | 2002-09-16 | 4w | 5.62d |  |  |  |  |

| ID | WBS | Task | Type | Duration | Start | Finish | Predecessors | Complete | Remaining | Baseline start | Baseline finish | Baseline duration | Total slack | Free slack | Constraint | Resources | Work |
| --- | --- | --- | --- | --- | --- | --- | --- | --- | --- | --- | --- | --- | --- | --- | --- | --- | --- |
| 152 | 3.9 | **Packaging** |  | 17.62d | 2002-08-15 | 2002-09-10 |  |  |  |  |  |  | 45.5d |  |  |  |  |
| 153 | 3.9.1 | Box Graphic Design | milestone | 0d | 2002-08-15 | 2002-08-15 | 180 |  |  |  |  |  | 52.12d | 6.62d |  |  |  |
| 154 | 3.9.2 | Package Design |  | 8d | 2002-08-26 | 2002-09-05 | 100FS+5d, 180, 153 |  |  |  |  |  | 45.5d | 0d |  |  |  |
| 155 | 3.9.3 | Drop Test |  | 3d | 2002-09-05 | 2002-09-10 | 154 |  |  |  |  |  | 45.5d |  |  |  |  |
| 156 | 3.10 | **User Guide** |  | 55.5d? | 2002-06-06 A | 2002-08-23 |  |  | 55.5d? | 2002-06-06 | 2002-07-31 | 39d | 37.12d | 0d |  |  | 48h |
| 157 | 3.10.1 | **DJ** |  | 55.5d | 2002-06-06 A | 2002-08-23 |  |  | 55.5d |  |  |  | 37.12d |  |  |  | 48h |
| 158 | 3.10.1.1 | Pre-beta release review | milestone | 0d | 2002-06-06 A | 2002-06-06 |  | 80% | 0d | 2002-06-06 | 2002-06-06 | 0d | 92.62d |  | start no earlier than 2002-06-06 |  |  |
| 159 | 3.10.1.2 | friendly release | milestone | 0d | 2002-06-21 | 2002-06-21 |  |  |  | 2002-06-17 | 2002-06-17 | 0d | 81.62d |  | start no earlier than 2002-06-21 |  |  |
| 160 | 3.10.1.3 | external beta release | milestone | 0d | 2002-07-01 | 2002-07-01 |  |  |  | 2002-06-20 | 2002-06-20 | 0d | 75.62d |  | start no earlier than 2002-07-01 |  |  |
| 161 | 3.10.1.4 | Beta 1 Review |  | 1w | 2002-07-16 | 2002-07-22 | 21FF |  |  | 2002-07-24 | 2002-07-24 | 0d | 31.62d | 0d |  |  |  |
| 162 | 3.10.1.5 | Beta 2 Review |  | 1w | 2002-08-13 | 2002-08-19 | 22FF |  |  |  |  |  | 37.12d | 0d |  | Mark [50%]; Derek [25%] | 30h |
| 163 | 3.10.1.6 | Final Release Review |  | 2.5d | 2002-08-20 | 2002-08-22 | 20, 162 |  |  | 2002-07-31 | 2002-07-31 | 0d | 37.12d | 0d | start no earlier than 2002-07-31 | Mark [50%]; Derek [25%]; Kenn [25%] | 16h |
| 164 | 3.10.1.7 | Release to Printer |  | 1d | 2002-08-22 | 2002-08-23 | 163 |  |  | 2002-07-31 | 2002-07-31 | 0d | 37.12d |  |  | Kenn [25%] | 2h |
| 165 | 3.10.2 | **FML** |  | 1d? | 2002-08-22 | 2002-08-23 |  |  |  |  |  |  | 37.12d |  |  |  |  |
| 166 | 3.10.2.1 | Release to Printer |  | 1d? | 2002-08-22 | 2002-08-23 | 163 |  |  |  |  |  | 37.12d |  |  |  |  |
| 167 | 3.10.3 | **WebControl** |  | 1d? | 2002-08-22 | 2002-08-23 |  |  |  |  |  |  | 37.12d |  |  |  |  |
| 168 | 3.10.3.1 | Release to Printer |  | 1d? | 2002-08-22 | 2002-08-23 | 163 |  |  |  |  |  | 37.12d |  |  |  |  |
| 169 | 3.11 | **Art** |  | 51.5d? | 2002-06-11 | 2002-08-22 |  |  |  |  |  |  | 27.62d |  |  |  | 316.8h |
| 170 | 3.11.1 | **DJ-C40 Art** |  | 23d | 2002-06-11 | 2002-07-12 |  |  |  |  |  |  | 27.62d | 0d |  |  | 95.8h |
| 171 | 3.11.1.1 | Faceplate Design and Finish |  | 1w | 2002-06-11 | 2002-06-17 |  |  |  |  |  |  | 27.62d | 0d | start no earlier than 2002-06-11 | Kenn [25%]; Paul Fiori [15%] | 16h |
| 172 | 3.11.1.2 | Feaatures Label |  | 3w | 2002-06-21 | 2002-07-12 | 171 |  |  |  |  |  | 29.62d | 0d | finish no earlier than 2002-07-12 | Paul Fiori [50%]; Kenn [25%]; Alix [25%] | 43h |
| 173 | 3.11.1.3 | Rearplate silkscreens |  | 2.5d | 2002-07-08 | 2002-07-10 | 172FS-5d |  |  |  |  |  | 32.12d |  |  | Paul Fiori [50%]; Kenn [50%] | 16h |
| 174 | 3.11.1.4 | Label Specifications |  | 11d | 2002-06-20 | 2002-07-05 |  |  |  |  |  |  | 26.12d | 1d | start no earlier than 2002-06-20 | Kenn [10%] | 8.8h |
| 175 | 3.11.1.5 | Agency label |  | 0.2w | 2002-07-09 | 2002-07-09 | 174 |  |  |  |  |  | 31.38d | 0d | start no earlier than 2002-07-09 | Doug [50%]; Kenn [25%] | 5h |
| 176 | 3.11.1.6 | Model label |  | 0.15w | 2002-07-10 | 2002-07-10 | 175 |  |  |  |  |  | 31.38d | 0d |  | Doug [50%]; Kenn [25%] | 4h |
| 177 | 3.11.1.7 | Tamper Proof label |  | 0.1w | 2002-07-10 | 2002-07-11 | 176 |  |  |  |  |  | 31.38d |  |  | Doug [50%]; Kenn [25%] | 3h |
| 178 | 3.11.2 | New Remote Specs |  | 3d? | 2002-07-16 | 2002-07-18 | 21FS-5d, 174 |  |  |  |  |  | 20.12d | 7d |  | Kenn [25%] | 6h |
| 179 | 3.11.3 | Remote Control Silkscreens |  | 1.5w | 2002-07-30 | 2002-08-08 | 178 |  |  |  |  |  | 13.12d | 0d | start no earlier than 2002-07-30 | Doug; Kenn [25%] | 55h |
| 180 | 3.11.4 | box art |  | 1w | 2002-08-08 | 2002-08-15 | 170, 179 |  |  |  |  |  | 38.12d | 0d | start no earlier than 2002-07-18 | Alix; Kenn | 80h |
| 181 | 3.11.5 | cd art |  | 1w | 2002-08-15 | 2002-08-22 | 170, 180 |  |  |  |  |  | 38.12d | 6.5d |  | Alix; Kenn | 80h |

Notes:
- 170: Faceplate / Rearplate / Features Label / Label Placement - Agency, Model, Tamper
- 172: Removeable label using icons and logos of major features: / WMA, MP3, CDDB, CompactDisc, FML, Internet Radio, Networked Device
- 179: kenn will generate spec for Doug to design to
- 180: Includes approvals from 3rd parties
- 181: Includes approvals from 3rd parties

| ID | WBS | Task | Duration | Start | Finish | Predecessors | Total slack | Free slack | Resources | Work |
| --- | --- | --- | --- | --- | --- | --- | --- | --- | --- | --- |
| 182 | 3.12 | **Trips to China** | 27.62d | 2002-10-18 | 2002-11-26 |  | 25d |  |  | 352h |
| 183 | 3.12.1 | plastic first article | 2d | 2002-10-24 | 2002-10-28 | 139FF | 46d |  | Marcus; Dupp | 32h |
| 184 | 3.12.2 | PCBA Review | 1w | 2002-10-18 | 2002-10-24 | 141SS | 45.62d | 0d | Dupp | 40h |
| 185 | 3.12.3 | Box Build Pilot Review | 2w | 2002-11-12 | 2002-11-26 | 142SS | 25d |  | Dupp; Kenn; Marcus; Seagate [10%] | 248h |
| 186 | 3.12.4 | BTC | 1d | 2002-10-25 | 2002-10-25 | 184 | 45.62d | 0d | Dupp; Kenn | 16h |
| 187 | 3.12.5 | Seagate | 1d | 2002-10-28 | 2002-10-28 | 186 | 45.62d |  | Dupp; Kenn | 16h |
