# FP UB Sahara Dev and Prod schedule_82102

Schedule from MS Project, 2002-01-01 to 2003-05-01, costs in $.
iObjects

## Calendars

- Standard: Mon-Fri 08:00-12:00, 13:00-17:00; Sat-Sun off. Exceptions (off unless hours are given): 2002-09-02, 2002-11-28 to 2002-11-29, 2002-12-25.

## Resources

| Resource | Rate |
| --- | --- |
| PM1 |  |
| EE1 |  |
| EE2 |  |
| Tech 1 |  |
| Lead |  |
| PM2 |  |
| SW1 |  |
| SW2 |  |
| ME1 | 115 |
| ME2 | 115 |
| GA1 | 27.5 |
| GA2 | 50 |
| GA3 | 115 |
| PM3 | 115 |
| PCB |  |
| PCBA |  |
| Route | 80 |
| MPE |  |
| MFE |  |
| P507001 |  |
| P507002 |  |
| P507003 |  |
| P507004 |  |
| P507005 |  |
| P507009 |  |
| P507010 |  |
| MFG1 |  |
| MFG2 |  |

## Schedule

| ID | WBS | Task | Type | Duration | Start | Finish | Predecessors | Total slack | Free slack | Constraint | Resources | Work | Cost |
| --- | --- | --- | --- | --- | --- | --- | --- | --- | --- | --- | --- | --- | --- |
| 1 | 1 | Fullplay Media Systems, Inc. | milestone | 0d | 2002-04-01 | 2002-04-01 |  | 228.5d |  | start no earlier than 2002-04-01 |  |  |  |
| 2 | 2 | Confidential Information | milestone | 0d | 2002-04-01 | 2002-04-01 |  | 228.5d |  | start no earlier than 2002-04-01 |  |  |  |
| 4 | 3 | **Sahara Program** |  | 343d? | 2002-01-01 | 2003-05-01 |  | 0d |  |  |  | 3087.6h | 353,316.96 |
| 5 | 3.1 | **Marketing** |  | 119.38d? | 2002-08-15 | 2003-02-04 |  | 47d |  |  |  |  |  |
| 6 | 3.1.1 | PRD |  | 1d? | 2002-08-15 | 2002-08-16 |  | 149d |  | start no earlier than 2002-08-15 |  |  |  |
| 7 | 3.1.2 | **Accessories** |  | 28.12d? | 2002-08-27 | 2002-10-07 |  | 39.12d |  |  |  |  |  |
| 8 | 3.1.2.1 | Review and Revise User Guide (DJ, FML, Remote, Netowrking, Web interface) |  | 1w | 2002-09-30 | 2002-10-07 | 229 | 142d |  |  |  |  |  |
| 9 | 3.1.2.2 | Review and Revise CD art |  | 1w | 2002-08-29 | 2002-09-06 | 235 | 112.12d | 0d |  |  |  |  |
| 10 | 3.1.2.3 | Review and Revise Packaging |  | 1w | 2002-08-29 | 2002-09-06 | 241 | 43.5d | 0d |  |  |  |  |
| 11 | 3.1.2.4 | Review and Revise Remote Spec |  | 1d? | 2002-08-27 | 2002-08-27 | 246 | 101.12d | 0d |  |  |  |  |
| 12 | 3.1.3 | Reviewers Schedule |  | 6w | 2002-12-18 | 2003-01-30 | 225, 158, 233 | 64.5d |  |  |  |  |  |
| 13 | 3.1.4 | **Promotions Schedule** |  | 87.38d? | 2002-10-01 | 2003-02-04 |  | 61.62d |  |  |  |  |  |
| 14 | 3.1.4.1 | Marketing Photo Shoot |  | 2d | 2002-10-01 | 2002-10-03 | 252 | 146d | 0d |  | P507001 |  |  |
| 15 | 3.1.4.2 | Ship to CES |  | 1d | 2002-10-03 | 2002-10-04 | 14 | 146d |  |  |  |  |  |
| 16 | 3.1.4.3 | CES | milestone | 6.88d? | 2003-01-24 | 2003-02-04 | 158, 233, 29, 228, 254 | 61.62d |  | finish no earlier than 2003-01-10 |  |  |  |
| 17 | 3.2 | **Development** |  | 342d? | 2002-01-01 | 2003-04-30 |  | 0d |  |  |  | 3087.6h | 353,316.96 |
| 18 | 3.2.1 | **Firmware** |  | 210.5d? | 2002-04-01 | 2003-01-24 |  | 67.5d |  |  |  | 72h |  |
| 19 | 3.2.1.1 | DJ-C40 FW Dev |  | 120d | 2002-04-01 | 2002-09-17 |  | 155d |  | start no earlier than 2002-04-01 |  |  |  |
| 20 | 3.2.1.2 | **Beta 1** |  | 70d | 2002-06-24 | 2002-10-01 |  | 11.88d |  |  |  |  |  |
| 21 | 3.2.1.2.1 | Release Beta 1 FW on DJ35 units |  | 34d | 2002-06-24 | 2002-08-09 |  | 11.88d | 5d | start no earlier than 2002-06-24 |  |  |  |
| 22 | 3.2.1.2.2 | Feature Complete | milestone | 0d | 2002-08-16 | 2002-08-16 | 21 | 6.88d | 0d | start no earlier than 2002-08-16 |  |  |  |
| 23 | 3.2.1.2.3 | SQA |  | 5w | 2002-08-16 | 2002-09-23 | 22 | 114.12d | 1d |  |  |  |  |
| 24 | 3.2.1.2.4 | FVT |  | 1w | 2002-09-24 | 2002-10-01 | 23, 227 | 113.12d |  | start no earlier than 2002-09-24 |  |  |  |
| 25 | 3.2.1.3 | **Release Candidate 1** |  | 25d | 2002-12-18 | 2003-01-23 | 20, 225, 158, 50, 103 | 61.62d | 0d |  |  | 40h |  |
| 26 | 3.2.1.3.1 | Prepare Test pool for Candidate 1 |  | 5d | 2002-12-18 | 2002-12-26 |  | 61.62d | 0d |  | PM2 | 40h |  |
| 27 | 3.2.1.3.2 | Release Candidate 1 FW on Sahara proto 2 devices | milestone | 0d | 2002-12-26 | 2002-12-26 | 26 | 61.62d | 0d |  | PM2 |  |  |
| 28 | 3.2.1.3.3 | Candidate 1 Evaluation |  | 4w | 2002-12-26 | 2003-01-23 | 27 | 61.62d |  |  |  |  |  |

| ID | WBS | Task | Duration | Start | Finish | Predecessors | Total slack | Free slack | Constraint | Resources | Work | Cost |
| --- | --- | --- | --- | --- | --- | --- | --- | --- | --- | --- | --- | --- |
| 29 | 3.2.1.4 | **Gold Release** | 1d? | 2003-01-23 | 2003-01-24 | 25 | 61.62d | 0d |  |  | 32h |  |
| 30 | 3.2.1.4.1 | CDDB Update | 1d? | 2003-01-23 | 2003-01-24 |  | 61.62d |  | start no earlier than 2002-10-01 | PM2 | 8h |  |
| 31 | 3.2.1.4.2 | Final Debug | 1d? | 2003-01-23 | 2003-01-24 |  | 61.62d |  | start no earlier than 2002-11-01 | PM2 | 8h |  |
| 32 | 3.2.1.4.3 | Final Bootloader Image | 1d? | 2003-01-23 | 2003-01-24 |  | 61.62d |  |  | PM2 | 8h |  |
| 33 | 3.2.1.4.4 | Final Shipping CD | 1d? | 2003-01-23 | 2003-01-24 |  | 61.62d | 0d | start no earlier than 2002-12-02 | PM2 | 8h |  |
| 34 | 3.2.2 | **Electrical** | 154d? | 2002-05-20 | 2002-12-26 |  | 58.5d |  |  |  | 16h | 18,872.5 |
| 35 | 3.2.2.1 | DJ35 PCB Build x52 | 23d | 2002-05-20 | 2002-06-20 |  | 217d |  | start no earlier than 2002-05-20 |  |  |  |
| 36 | 3.2.2.2 | UB BOM feedback | 23d | 2002-05-20 | 2002-06-20 |  | 217d |  | start no earlier than 2002-05-20 |  |  |  |
| 37 | 3.2.2.3 | **FP Build PCB-03-A** | 36d | 2002-07-22 | 2002-09-11 |  | 13.5d | 0d |  |  |  | 10,551.2 |
| 38 | 3.2.2.3.1 | FP Route PCB-03-A | 4d | 2002-07-22 | 2002-07-26 |  | 13.5d | 0d | start no earlier than 2002-07-22 |  |  |  |
| 39 | 3.2.2.3.2 | Review Placement | 1d | 2002-07-26 | 2002-07-29 | 38 | 13.5d | 0d |  |  |  |  |
| 40 | 3.2.2.3.3 | Paradigm Critical Route | 2d | 2002-07-29 | 2002-07-31 | 39 | 13.5d | 0d |  |  |  |  |
| 41 | 3.2.2.3.4 | FP Critical Route Review | 1d | 2002-07-31 | 2002-08-01 | 40 | 13.5d | 0d |  |  |  |  |
| 42 | 3.2.2.3.5 | FP Design Changes | 2d | 2002-08-01 | 2002-08-05 | 41 | 13.5d | 0d |  |  |  |  |
| 43 | 3.2.2.3.6 | Paradigm Final Route | 2d | 2002-08-05 | 2002-08-07 | 42 | 13.5d | 0d |  |  |  |  |
| 44 | 3.2.2.3.7 | Review Final Route | 5d | 2002-08-07 | 2002-08-14 | 43 | 13.5d | 0d |  |  |  |  |
| 45 | 3.2.2.3.8 | FP MB RTFAB-03-A (56) | 3d | 2002-08-14 | 2002-08-19 | 44 | 13.5d | 0d |  | PCB |  | 9,210 |
| 46 | 3.2.2.3.9 | FP MB RTASY-03-A (8) | 5d | 2002-08-20 | 2002-08-27 | 45FS+1d | 13.5d | 0d |  | PCBA |  | 1,341.2 |
| 47 | 3.2.2.3.10 | FP DBs RTFAB-03-A (56) | 3d | 2002-08-15 | 2002-08-20 |  | 13.5d | 0d | start no earlier than 2002-08-15 |  |  |  |
| 48 | 3.2.2.3.11 | FP DBs RTASY-03A (8) | 5d | 2002-08-20 | 2002-08-27 | 47 | 13.5d | 0d |  |  |  |  |
| 49 | 3.2.2.3.12 | FP bare board HWEVT | 10d | 2002-08-27 | 2002-09-11 | 48, 46 | 13.5d |  |  |  |  |  |
| 50 | 3.2.2.4 | **FP Build PCB-03-B** | 13d | 2002-09-11 | 2002-09-30 | 37 | 13.5d | 0d |  |  | 16h | 8,321.3 |
| 51 | 3.2.2.4.1 | FP Route PCB-03-B | 5d | 2002-09-11 | 2002-09-18 |  | 13.5d | 0d |  | Route [40%] | 16h | 1,280 |
| 52 | 3.2.2.4.2 | FP RTFAB-03-B | 3d | 2002-09-18 | 2002-09-23 | 51 | 13.5d | 0d |  | PCB |  |  |
| 53 | 3.2.2.4.3 | FP RTASY-03-B | 5d | 2002-09-23 | 2002-09-30 | 52 | 13.5d |  |  | PCBA |  | 7,041.3 |
| 54 | 3.2.2.5 | FP Bpx Build + HWEVT | 20d | 2002-10-28 | 2002-11-25 | 257 | 108.5d |  |  |  |  |  |
| 55 | 3.2.2.6 | FP HW DVT | 40d | 2002-09-30 | 2002-11-25 | 50 | 17.5d | 0d |  |  |  |  |

| ID | WBS | Task | Type | Duration | Start | Finish | Predecessors | Baseline start | Baseline finish | Baseline duration | Total slack | Free slack | Constraint | Resources | Work | Cost | Baseline cost |
| --- | --- | --- | --- | --- | --- | --- | --- | --- | --- | --- | --- | --- | --- | --- | --- | --- | --- |
| 56 | 3.2.2.7 | **FP Build PCB-04-A** |  | 13d | 2002-11-25 | 2002-12-16 | 55, 194 |  |  |  | 76d | 0d |  |  |  |  |  |
| 57 | 3.2.2.7.1 | FP Route -04-A |  | 5d | 2002-11-25 | 2002-12-04 |  |  |  |  | 83d | 0d |  |  |  |  |  |
| 58 | 3.2.2.7.2 | FP RTFAB-04-A |  | 3d | 2002-12-04 | 2002-12-09 | 57 |  |  |  | 83d | 0d |  |  |  |  |  |
| 59 | 3.2.2.7.3 | FP RTASY-04-A |  | 5d | 2002-12-09 | 2002-12-16 | 58 |  |  |  | 83d |  |  |  |  |  |  |
| 60 | 3.2.2.8 | HW DVT -04-A |  | 3d | 2002-12-16 | 2002-12-19 | 56 |  |  |  | 90d | 0d |  |  |  |  |  |
| 61 | 3.2.2.9 | **Functional Test Fixture (FTF)** |  | 60d? | 2002-09-30 | 2002-12-26 | 50 |  |  |  | 89d |  |  |  |  |  |  |
| 62 | 3.2.2.9.1 | Software Design Requirements |  | 2w | 2002-09-30 | 2002-10-14 |  |  |  |  | 135d | 0d |  |  |  |  |  |
| 63 | 3.2.2.9.2 | Electrical Design Requirements |  | 2w | 2002-09-30 | 2002-10-14 |  |  |  |  | 86d | 0d |  |  |  |  |  |
| 64 | 3.2.2.9.3 | Mechanical Design Requirements |  | 2w | 2002-09-30 | 2002-10-14 |  |  |  |  | 86d | 0d |  |  |  |  |  |
| 65 | 3.2.2.9.4 | Software Development |  | 1d? | 2002-10-14 | 2002-10-15 | 62 |  |  |  | 135d |  |  |  |  |  |  |
| 66 | 3.2.2.9.5 | Electrical Development |  | 8w | 2002-10-14 | 2002-12-11 | 63 |  |  |  | 86d | 0d |  |  |  |  |  |
| 67 | 3.2.2.9.6 | Mechanical Development |  | 8w | 2002-10-14 | 2002-12-11 | 64 |  |  |  | 86d | 0d |  |  |  |  |  |
| 68 | 3.2.2.9.7 | FTF EVT |  | 1w | 2002-12-11 | 2002-12-18 | 66, 67 |  |  |  | 86d | 0d |  |  |  |  |  |
| 69 | 3.2.2.9.8 | FTF DVT |  | 1w | 2002-12-18 | 2002-12-26 | 68 |  |  |  | 86d | 0d |  |  |  |  |  |
| 70 | 3.2.2.9.9 | Release Final FTF | milestone | 0d | 2002-12-26 | 2002-12-26 | 69 |  |  |  | 86d |  |  |  |  |  |  |
| 71 | 3.2.3 | **Mechanical** |  | 265d? | 2002-04-18 | 2003-04-30 |  | 2002-04-18 | 2002-09-19 | 111d | 0d |  |  | PM3 [20%] | 1171.6h | 169,154.46 | 105,300 |
| 72 | 3.2.3.1 | **Phase 1 Planning** |  | 2d | 2002-04-18 | 2002-04-22 |  | 2002-04-18 | 2002-04-22 | 3d | 0.62d | 0d |  |  |  |  | 3,640 |
| 73 | 3.2.3.1.1 | Kickoff Meeting |  | 0.5d | 2002-04-18 | 2002-04-18 |  | 2002-04-18 | 2002-04-18 | 0.5d | 0.62d | 0d | start no earlier than 2002-04-18 |  |  |  | 1,040 |
| 74 | 3.2.3.1.2 | Detailed Schedule Build / Review |  | 1d | 2002-04-18 | 2002-04-19 | 73 | 2002-04-18 | 2002-04-22 | 2d | 0.62d | 0d |  |  |  |  | 2,080 |
| 75 | 3.2.3.1.3 | Design Change Requirements Review |  | 0.5d | 2002-04-19 | 2002-04-22 | 74 | 2002-04-22 | 2002-04-22 | 0.5d | 0.62d |  |  |  |  |  | 520 |
| 76 | 3.2.3.2 | **Phase 2A Product Engineering** |  | 59.88d | 2002-04-22 | 2002-07-12 | 72 | 2002-04-23 | 2002-05-23 | 22.5d | 0.62d |  |  |  |  |  | 37,440 |
| 77 | 3.2.3.2.1 | Brainstorm Engineering Strategies |  | 0.25d | 2002-04-22 | 2002-04-22 |  | 2002-04-23 | 2002-04-23 | 0.5d | 0.62d | 0d |  |  |  |  | 1,560 |
| 78 | 3.2.3.2.2 | CD Sourcing and Research, Trip Prep |  | 6d | 2002-04-22 | 2002-04-30 | 77 |  |  |  | 0.62d |  |  |  |  |  |  |
| 79 | 3.2.3.2.3 | Asian Production Partner Trip and Download |  | 6d | 2002-05-01 | 2002-05-08 | 78 |  |  |  | 0d |  | must start on 2002-05-01 |  |  |  |  |
| 80 | 3.2.3.2.4 | Engineering and CAD work - 1st rev production |  | 12d | 2002-05-09 | 2002-05-24 | 79 | 2002-04-23 | 2002-04-30 | 5d | 14.62d | 0d |  |  |  |  | 10,400 |
| 81 | 3.2.3.2.5 | Preliminary Files to Tooling Vendors | milestone | 0d | 2002-05-24 | 2002-05-24 | 80 | 2002-05-23 | 2002-05-23 | 0d? | 14.62d | 0d |  |  |  |  |  |
| 82 | 3.2.3.2.6 | CM File Review |  | 5.5d | 2002-05-27 | 2002-06-03 | 81 |  |  |  | 14.62d | 0d |  |  |  |  |  |
| 83 | 3.2.3.2.7 | Conference Call with CM (Feedback) |  | 0.5d | 2002-06-03 | 2002-06-03 | 82 |  |  |  | 14.62d | 0d |  |  |  |  |  |
| 84 | 3.2.3.2.8 | Engineering and CAD - 2nd rev (refinements, second level) |  | 10d | 2002-06-04 | 2002-06-17 | 83 |  |  |  | 14.62d | 9d |  |  |  |  |  |
| 85 | 3.2.3.2.9 | Engineering and CAD - CD faceplate aligment redesign, etc. |  | 5d | 2002-07-01 | 2002-07-05 | 84, 98 |  |  |  | 5.62d | 0d |  |  |  |  |  |
| 86 | 3.2.3.2.10 | Engineering and CAD - final venting, rack ears, file tweaks / reviews, etc. |  | 5d | 2002-07-08 | 2002-07-12 | 85 |  |  |  | 200.12d |  |  |  |  |  |  |

| ID | WBS | Task | Type | Duration | Start | Finish | Predecessors | Baseline start | Baseline finish | Baseline duration | Total slack | Free slack | Constraint | Resources | Work | Cost | Baseline cost |
| --- | --- | --- | --- | --- | --- | --- | --- | --- | --- | --- | --- | --- | --- | --- | --- | --- | --- |
| 87 | 3.2.3.3 | **Phase 2B Thermal / Acoustic Baseline Testing** |  | 19d | 2002-05-09 | 2002-06-04 |  | 2002-04-18 | 2002-05-21 | 23.5d | 231.12d |  |  |  |  |  | 24,960 |
| 88 | 3.2.3.3.1 | Test Planning and Prep - Thermal |  | 1.5d | 2002-05-09 | 2002-05-10 | 79 | 2002-04-18 | 2002-04-23 | 4d | 230.62d | 0d |  |  |  |  | 4,160 |
| 89 | 3.2.3.3.2 | Test Planning and Prep - Acoustic |  | 2d | 2002-05-09 | 2002-05-10 | 79 | 2002-05-02 | 2002-05-07 | 4d | 228.12d | 0d |  |  |  |  | 4,160 |
| 90 | 3.2.3.3.3 | Thermal Data Collection |  | 15d | 2002-05-10 | 2002-05-31 | 88 |  |  |  | 230.62d |  |  |  |  |  |  |
| 91 | 3.2.3.3.4 | Acoustic Data Collection |  | 15d | 2002-05-13 | 2002-05-31 | 89 |  |  |  | 228.12d | 0d |  |  |  |  |  |
| 92 | 3.2.3.3.5 | Summary Preparation |  | 2d | 2002-06-03 | 2002-06-04 | 91 | 2002-05-16 | 2002-05-20 | 3d | 228.12d |  |  |  |  |  | 3,120 |
| 93 | 3.2.3.4 | **Phase 3 Prototyping** |  | 177.12d? | 2002-06-03 | 2003-02-12 | 83 | 2002-05-15 | 2002-07-04 | 36.5d | 19.62d |  |  |  | 423.6h | 83,134.46 | 24,960 |
| 94 | 3.2.3.4.1 | **Prototyping Round 1** |  | 42.5d | 2002-06-03 | 2002-08-01 |  | 2002-05-15 | 2002-06-13 | 21.5d | 3.62d | 0d |  |  |  |  | 14,560 |
| 95 | 3.2.3.4.1.1 | Files to Proto Vendors | milestone | 0d | 2002-06-03 | 2002-06-03 |  | 2002-05-15 | 2002-05-15 | 0d? | 19.62d | 0d |  |  |  |  |  |
| 96 | 3.2.3.4.1.2 | Quote Generation |  | 3d | 2002-06-04 | 2002-06-06 | 95 | 2002-05-15 | 2002-05-20 | 3d | 19.62d | 0d |  |  |  |  | 1,560 |
| 97 | 3.2.3.4.1.3 | Receive and Review Quotes |  | 2d | 2002-06-07 | 2002-06-10 | 96 | 2002-05-20 | 2002-05-21 | 1d | 19.62d | 14d |  |  |  |  | 520 |
| 98 | 3.2.3.4.1.4 | FINAL CD-ROM SPEC CONFIRMATION ON BTC | milestone | 0d | 2002-07-01 | 2002-07-01 | 97 |  |  |  | 5.62d | 0d | start no earlier than 2002-07-01 |  |  |  |  |
| 99 | 3.2.3.4.1.5 | Release FullPlay PO Numbers to Prototyper | milestone | 0d | 2002-07-05 | 2002-07-05 | 85, 98 | 2002-05-21 | 2002-05-21 | 0d? | 5.62d | 0d |  |  |  |  |  |
| 100 | 3.2.3.4.1.6 | SLA / Sheet Metal Construction |  | 10d | 2002-07-08 | 2002-07-19 | 99 | 2002-05-21 | 2002-06-05 | 10d | 5.62d | 2d |  |  |  |  | 2,600 |
| 101 | 3.2.3.4.1.7 | Prototype Assembly Review and CAD Database Refinements |  | 6d | 2002-07-24 | 2002-07-31 | 100 |  |  |  | 3.62d | 0d | start no earlier than 2002-07-24 |  |  |  |  |
| 102 | 3.2.3.4.1.8 | Updated Files to Tooling Vendors |  | 0.5d | 2002-08-01 | 2002-08-01 | 101 | 2002-06-13 | 2002-06-13 | 0d? | 3.62d |  |  |  |  |  |  |
| 103 | 3.2.3.4.2 | **Prototyping Round 2** |  | 54.12d? | 2002-08-01 | 2002-10-17 | 94 | 2002-06-13 | 2002-07-04 | 15d | 0d |  |  |  | 113.6h | 47,484.46 | 10,400 |
| 104 | 3.2.3.4.2.1 | CAD Tweaks (UL / CE / FCC Construction Review) |  | 4d | 2002-08-01 | 2002-08-07 |  |  |  |  | 3.62d | 0d |  | ME1 | 32h | 3,680 |  |
| 105 | 3.2.3.4.2.2 | FP - Electrical (Connector / Cable Changes | milestone | 0d | 2002-08-07 | 2002-08-07 | 104 |  |  |  | 3.62d | 0d |  |  |  |  |  |
| 106 | 3.2.3.4.2.3 | Updated Files to Prototyping Vendors |  | 1d | 2002-08-07 | 2002-08-08 | 105 | 2002-06-13 | 2002-06-13 | 0d? | 3.62d |  |  | ME1 | 8h | 920 |  |
| 107 | 3.2.3.4.2.4 | **Plastics (37)** |  | 45.5d | 2002-08-14 | 2002-10-17 | 106 |  |  |  | 0d |  |  |  |  | 24,956 |  |
| 108 | 3.2.3.4.2.4.1 | Issue CAD drawings |  | 1d | 2002-08-14 | 2002-08-15 |  |  |  |  | 9.5d | 0d | start no earlier than 2002-08-14 |  |  |  |  |
| 109 | 3.2.3.4.2.4.2 | Issue FP PO |  | 3d | 2002-08-15 | 2002-08-20 | 108 |  |  |  | 9.5d | 0d |  |  |  |  |  |
| 110 | 3.2.3.4.2.4.3 | SLA |  | 2d | 2002-08-20 | 2002-08-22 | 109 |  |  |  | 9.5d | 0d |  |  |  |  |  |
| 111 | 3.2.3.4.2.4.4 | SLA review |  | 0.25d | 2002-08-22 | 2002-08-22 | 110 |  |  |  | 9.5d | 0d |  |  |  |  |  |
| 112 | 3.2.3.4.2.4.5 | 2 silicon molds |  | 2d | 2002-08-22 | 2002-08-26 | 111 |  |  |  | 9.5d | 0d |  |  |  |  |  |
| 113 | 3.2.3.4.2.4.6 | First Cast review |  | 1d | 2002-08-26 | 2002-08-27 | 112 |  |  |  | 9.5d | 0d |  |  |  |  |  |
| 114 | 3.2.3.4.2.4.7 | 1st Cast 20 sets |  | 6d | 2002-08-27 | 2002-09-05 | 113 |  |  |  | 9.5d | 0d |  |  |  |  |  |
| 115 | 3.2.3.4.2.4.8 | Clean 20 sets |  | 3.5d | 2002-09-05 | 2002-09-10 | 114 |  |  |  | 9.5d | 0d |  |  |  |  |  |
| 116 | 3.2.3.4.2.4.9 | Paint 20 sets |  | 3d | 2002-09-10 | 2002-09-13 | 115 |  |  |  | 15.75d | 0d |  |  |  |  |  |
| 117 | 3.2.3.4.2.4.10 | Review 20 sets |  | 0.25d | 2002-09-13 | 2002-09-16 | 116 |  |  |  | 15.75d | 0d |  |  |  |  |  |
| 118 | 3.2.3.4.2.4.11 | Silkscreen/pad print review |  | 0.25d | 2002-09-16 | 2002-09-16 | 117 |  |  |  | 15.75d | 0d |  |  |  |  |  |
| 119 | 3.2.3.4.2.4.12 | Silkscreen/Pad Print 20 sets |  | 4d | 2002-09-16 | 2002-09-20 | 118 |  |  |  | 15.75d | 0d |  |  |  |  |  |
| 120 | 3.2.3.4.2.4.13 | Prep for delivery |  | 0.25d | 2002-09-20 | 2002-09-20 | 119 |  |  |  | 15.75d | 0d |  |  |  |  |  |
| 121 | 3.2.3.4.2.4.14 | Ship | milestone | 0.25d | 2002-09-20 | 2002-09-20 | 120 |  |  |  | 15.75d | 5.25d |  |  |  |  |  |
| 122 | 3.2.3.4.2.4.15 | 2nd cast 20 sets |  | 6d | 2002-09-10 | 2002-09-18 | 115 |  |  |  | 9.5d | 0d |  |  |  |  |  |
| 123 | 3.2.3.4.2.4.16 | Clean 20 sets |  | 4d | 2002-09-18 | 2002-09-24 | 122 |  |  |  | 9.5d | 0d |  |  |  |  |  |
| 124 | 3.2.3.4.2.4.17 | Paint 20 sets |  | 2d | 2002-09-24 | 2002-09-26 | 123 |  |  |  | 9.5d | 0d |  |  |  |  |  |
| 125 | 3.2.3.4.2.4.18 | Review 20 sets |  | 0.25d | 2002-09-26 | 2002-09-27 | 124 |  |  |  | 9.5d | 0d |  |  |  |  |  |
| 126 | 3.2.3.4.2.4.19 | Silkscreen/ pad print 20 sets |  | 4.5d | 2002-09-27 | 2002-10-03 | 125 |  |  |  | 9.5d | 0d |  |  |  |  |  |
| 127 | 3.2.3.4.2.4.20 | Prep for delivery |  | 0.25d | 2002-10-03 | 2002-10-03 | 126 |  |  |  | 9.5d | 0d |  |  |  |  |  |
| 128 | 3.2.3.4.2.4.21 | Ship | milestone | 0.25d | 2002-10-03 | 2002-10-04 | 127 |  |  |  | 9.5d |  |  |  |  |  |  |
| 129 | 3.2.3.4.2.4.22 | review 5 jackplates at Moeller |  | 1d | 2002-09-17 | 2002-09-18 | 151 |  |  |  | 0d |  |  |  |  |  |  |
| 130 | 3.2.3.4.2.4.23 | Paint 5 jackplates |  | 2d | 2002-09-18 | 2002-09-20 | 129 |  |  |  | 0d |  |  |  |  |  |  |
| 131 | 3.2.3.4.2.4.24 | Silkscreen 5 jackplates |  | 2d | 2002-09-20 | 2002-09-24 | 130 |  |  |  | 0d |  |  |  |  |  |  |
| 132 | 3.2.3.4.2.4.25 | 1st 5 cover and chassis |  | 3d | 2002-09-24 | 2002-09-27 | 131 |  |  |  | 0d |  |  |  |  |  |  |
| 133 | 3.2.3.4.2.4.26 | ship |  | 1d | 2002-09-27 | 2002-09-30 | 132 |  |  |  | 0d |  |  |  |  |  |  |
| 134 | 3.2.3.4.2.4.27 | review 5 chasssis and covers |  | 1d | 2002-09-30 | 2002-10-01 | 133 |  |  |  | 0d |  |  |  |  |  |  |
| 135 | 3.2.3.4.2.4.28 | paint 5 chassis and covers |  | 2d | 2002-10-01 | 2002-10-03 | 134 |  |  |  | 9.25d | 0d |  |  |  |  |  |
| 136 | 3.2.3.4.2.4.29 | Prep 1st 5 sets |  | 1d | 2002-10-03 | 2002-10-04 | 135 |  |  |  | 9.25d | 0d |  |  |  |  |  |
| 137 | 3.2.3.4.2.4.30 | Ship |  | 0.25d | 2002-10-04 | 2002-10-04 | 136 |  |  |  | 9.25d |  |  |  |  |  |  |
| 138 | 3.2.3.4.2.4.31 | review 32 sets at Moeller |  | 0.25d | 2002-10-04 | 2002-10-04 | 154 |  |  |  | 0d |  |  |  |  |  |  |
| 139 | 3.2.3.4.2.4.32 | Paint 32 jackplates |  | 2d | 2002-10-04 | 2002-10-08 | 138 |  |  |  | 0d |  |  |  |  |  |  |
| 140 | 3.2.3.4.2.4.33 | Silkscreen jackplates |  | 3d | 2002-10-08 | 2002-10-11 | 139 |  |  |  | 0d |  |  |  |  |  |  |
| 141 | 3.2.3.4.2.4.34 | Paint 32 chassis and covers |  | 3d | 2002-10-11 | 2002-10-16 | 140 |  |  |  | 0d |  |  |  |  |  |  |
| 142 | 3.2.3.4.2.4.35 | Prep 37 sets |  | 1d | 2002-10-16 | 2002-10-17 | 141 |  |  |  | 0d |  |  |  |  |  |  |
| 143 | 3.2.3.4.2.4.36 | Ship |  | 0.25d | 2002-10-17 | 2002-10-17 | 142 |  |  |  | 0d |  |  |  |  |  |  |

| ID | WBS | Task | Type | Duration | Start | Finish | Predecessors | Baseline start | Baseline finish | Baseline duration | Total slack | Free slack | Constraint | Resources | Work | Cost | Baseline cost |
| --- | --- | --- | --- | --- | --- | --- | --- | --- | --- | --- | --- | --- | --- | --- | --- | --- | --- |
| 144 | 3.2.3.4.2.5 | **Sheet Metal Build (QTY 37)** |  | 36d? | 2002-08-14 | 2002-10-04 | 106 |  |  |  | 0d |  |  | ME1 [20%] | 57.6h | 16,088.46 |  |
| 145 | 3.2.3.4.2.5.1 | Issue CAD drawings |  | 1d | 2002-08-14 | 2002-08-15 |  |  |  |  | 0d |  | start no earlier than 2002-08-14 |  |  |  |  |
| 146 | 3.2.3.4.2.5.2 | Issue FP PO |  | 3d | 2002-08-15 | 2002-08-20 | 145 |  |  |  | 0d |  |  |  |  |  |  |
| 147 | 3.2.3.4.2.5.3 | Programming |  | 2d | 2002-08-20 | 2002-08-22 | 146 |  |  |  | 0d |  |  |  |  |  |  |
| 148 | 3.2.3.4.2.5.4 | Tooling |  | 10d | 2002-08-22 | 2002-09-06 | 147 |  |  |  | 0d |  |  |  |  |  |  |
| 149 | 3.2.3.4.2.5.5 | Set-up |  | 1d | 2002-09-06 | 2002-09-09 | 148 |  |  |  | 0d |  |  |  |  |  |  |
| 150 | 3.2.3.4.2.5.6 | 1st 5 jackplates |  | 5d | 2002-09-09 | 2002-09-16 | 149 |  |  |  | 0d |  |  |  |  |  |  |
| 151 | 3.2.3.4.2.5.7 | ship |  | 1d | 2002-09-16 | 2002-09-17 | 150 |  |  |  | 0d |  |  |  |  |  |  |
| 152 | 3.2.3.4.2.5.8 | Set-up |  | 1d? | 2002-10-01 | 2002-10-02 | 134 |  |  |  | 0d |  |  |  |  |  |  |
| 153 | 3.2.3.4.2.5.9 | 2nd 32 sets |  | 1d? | 2002-10-02 | 2002-10-03 | 152 |  |  |  | 0d |  |  |  |  |  |  |
| 154 | 3.2.3.4.2.5.10 | Ship |  | 1d? | 2002-10-03 | 2002-10-04 | 153 |  |  |  | 0d |  |  |  |  |  |  |
| 155 | 3.2.3.4.2.6 | Machined ABS (OPTIONAL) |  | 10d | 2002-08-01 | 2002-08-15 |  |  |  |  | 44.12d |  |  | ME1 [20%] | 16h | 1,840 |  |
| 156 | 3.2.3.4.2.7 | Parts Received | milestone | 0d | 2002-10-17 | 2002-10-17 | 107 |  |  |  | 0d |  |  |  |  |  |  |
| 157 | 3.2.3.4.3 | Limited CAD Updates as Required |  | 5d | 2002-10-28 | 2002-11-04 | 254 | 2002-07-02 | 2002-07-04 | 3d | 0d |  |  | ME1 [50%] | 20h | 2,300 | 3,120 |
| 158 | 3.2.3.4.4 | **Packaging Design** |  | 104.62d? | 2002-07-22 | 2002-12-18 |  |  |  |  | 0d |  |  |  | 76h | 8,740 |  |
| 159 | 3.2.3.4.4.1 | Initial Quoting and Vendor Communication |  | 10d | 2002-07-22 | 2002-08-02 |  |  |  |  | 50.12d | 0d | start no earlier than 2002-07-22 | ME2 [25%] | 20h | 2,300 |  |
| 160 | 3.2.3.4.4.2 | Quote Review and Partner Selection |  | 3d | 2002-08-05 | 2002-08-07 | 159 |  |  |  | 50.12d | 7.12d |  | ME2 [50%] | 12h | 1,380 |  |
| 161 | 3.2.3.4.4.3 | Submission of CAD Files to Package Design |  | 0.5d | 2002-08-19 | 2002-08-19 | 104, 160 |  |  |  | 43d | 32.5d | start no earlier than 2002-08-19 | ME2 | 4h | 460 |  |
| 162 | 3.2.3.4.4.4 | Package Design Process |  | 10d | 2002-10-04 | 2002-10-18 | 161, 251 |  |  |  | 10.5d | 0d |  | ME2 [10%]; P507005 | 8h | 920 |  |
| 163 | 3.2.3.4.4.5 | Review of Package Design Solution |  | 1d | 2002-10-18 | 2002-10-21 | 162 |  |  |  | 10.5d |  |  | ME2 | 8h | 920 |  |
| 164 | 3.2.3.4.4.6 | Submit Package Art |  | 1d? | 2002-09-12 | 2002-09-13 | 239 |  |  |  | 36.5d |  |  |  |  |  |  |
| 165 | 3.2.3.4.4.7 | Iteration on Package Design |  | 5d | 2002-11-04 | 2002-11-11 | 157, 164, 163, 206, 207 |  |  |  | 0d |  |  | ME2 [10%] | 4h | 460 |  |
| 166 | 3.2.3.4.4.8 | Final Packaging Solution Documentation |  | 5d | 2002-11-11 | 2002-11-18 | 165 |  |  |  | 0d |  |  | ME2 [10%] | 4h | 460 |  |
| 167 | 3.2.3.4.4.9 | Final Packaging Samples (???????) |  | 4w | 2002-11-18 | 2002-12-18 | 166 |  |  |  | 0d |  |  | ME2 [10%] | 16h | 1,840 |  |

Notes:
- 167: Could take 6 - 8 weeks to get samples

| ID | WBS | Task | Type | Duration | Start | Finish | Predecessors | Baseline start | Baseline finish | Baseline duration | Total slack | Free slack | Constraint | Resources | Work | Cost | Baseline cost |
| --- | --- | --- | --- | --- | --- | --- | --- | --- | --- | --- | --- | --- | --- | --- | --- | --- | --- |
| 168 | 3.2.3.4.5 | **Proto #3** |  | 33.5d | 2002-12-26 | 2003-02-12 | 158, 189, 254, 55 |  |  |  | 0d |  |  |  | 214h | 24,610 |  |
| 169 | 3.2.3.4.5.1 | CAD Revisions |  | 5d | 2002-12-26 | 2003-01-02 |  |  |  |  | 0d |  |  | ME1 | 40h | 4,600 |  |
| 170 | 3.2.3.4.5.2 | Updated Files to Prototyping Vendors / Preliminary to Tooling |  | 1d | 2003-01-02 | 2003-01-03 | 169, 194 | 2002-06-13 | 2002-06-13 | 0d? | 0d |  |  | ME1 | 8h | 920 |  |
| 171 | 3.2.3.4.5.3 | Release FullPlay PO Numbers to Prototypers | milestone | 0d | 2003-01-03 | 2003-01-03 | 170 | 2002-06-13 | 2002-06-13 | 0d? | 0d |  |  |  |  |  |  |
| 172 | 3.2.3.4.5.4 | SLA Build |  | 5d | 2003-01-03 | 2003-01-10 | 171 | 2002-06-14 | 2002-06-27 | 10d | 0d |  |  | ME1 [25%] | 10h | 1,150 | 2,600 |
| 173 | 3.2.3.4.5.5 | Urethane Casting (based on SLA scale master) |  | 15d | 2003-01-10 | 2003-01-31 | 172 |  |  |  | 0d |  |  | ME1 [25%] | 30h | 3,450 |  |
| 174 | 3.2.3.4.5.6 | Sheet Metal Build (QTY 6) |  | 15d | 2003-01-03 | 2003-01-24 | 171 |  |  |  | 5d |  |  | ME1 [25%] | 30h | 3,450 |  |
| 175 | 3.2.3.4.5.7 | Machined ABS (OPTIONAL) |  | 10d | 2003-01-03 | 2003-01-17 | 171 |  |  |  | 10d |  |  | ME1 [25%] | 20h | 2,300 |  |
| 176 | 3.2.3.4.5.8 | Parts Received | milestone | 0d | 2003-01-31 | 2003-01-31 | 173, 174, 175 |  |  |  | 0d |  |  |  |  |  |  |
| 177 | 3.2.3.4.5.9 | Proto #3 Run First Unit Assembly / Review |  | 2d | 2003-01-31 | 2003-02-04 | 176 | 2002-07-01 | 2002-07-01 | 0.5d | 0d |  |  | ME1; ME2 | 32h | 3,680 | 1,560 |
| 178 | 3.2.3.4.5.10 | Limited CAD Updates as Required |  | 5d | 2003-02-04 | 2003-02-11 | 177 | 2002-07-02 | 2002-07-04 | 3d | 0d |  |  | ME1 [50%] | 20h | 2,300 | 3,120 |
| 179 | 3.2.3.4.5.11 | Proto #3 Assembly Support |  | 5d | 2003-02-04 | 2003-02-11 | 177 |  |  |  | 35.5d |  |  | ME1 [50%] | 20h | 2,300 |  |
| 180 | 3.2.3.4.5.12 | Final CAD Release to Tooling Vendors |  | 0.5d | 2003-02-11 | 2003-02-12 | 194, 178 | 2002-07-04 | 2002-07-04 | 0d? | 0d |  |  | ME1 | 4h | 460 |  |
| 181 | 3.2.3.5 | **Tooling and Production Ramp Support (TBD)** |  | 182d | 2002-08-13 | 2003-04-30 |  | 2002-07-05 | 2002-09-19 | 55d | 0d |  |  |  | 324h | 37,260 | 14,300 |
| 182 | 3.2.3.5.1 | CTF Drawing Creation |  | 30d | 2002-08-13 | 2002-09-25 |  |  |  |  | 139d |  | start no earlier than 2002-08-13 | ME1 [10%] | 24h | 2,760 |  |
| 183 | 3.2.3.5.2 | Tooling Design Start / Order Raw Mat'ls |  | 5w | 2003-01-03 | 2003-02-07 | 170 | 2002-07-05 | 2002-08-15 | 6w | 2.5d |  |  | ME1 [25%] | 50h | 5,750 | 7,800 |
| 184 | 3.2.3.5.3 | Tooling Finalization |  | 3w | 2003-02-12 | 2003-03-05 | 180, 183 |  |  |  | 0d |  |  | ME1 [25%] | 30h | 3,450 |  |
| 185 | 3.2.3.5.4 | First Articles |  | 5d | 2003-03-05 | 2003-03-12 | 184 |  |  |  | 0d |  |  | ME1 | 40h | 4,600 |  |
| 186 | 3.2.3.5.5 | Tooling Mods and Texturing |  | 2w | 2003-03-12 | 2003-03-26 | 185 |  |  |  | 0d |  |  | ME1 | 80h | 9,200 |  |
| 187 | 3.2.3.5.6 | Design Support for Manufacturing Ramp |  | 5w | 2003-03-26 | 2003-04-30 | 186 | 2002-08-16 | 2002-09-19 | 5w | 0d |  |  | ME1 [50%] | 100h | 11,500 | 6,500 |
| 188 | 3.2.4 | **Regulatory, Environmental and Reliability Testing** |  | 163.12d? | 2002-07-22 | 2003-03-12 |  |  |  |  | 35d |  |  |  | 1628h | 158,320 |  |
| 189 | 3.2.4.1 | **Preliminary** |  | 109.62d? | 2002-07-22 | 2002-12-26 |  |  |  |  | 0d |  |  |  | 1628h | 158,320 |  |
| 190 | 3.2.4.1.1 | **Planning and Preparation** |  | 10.62d | 2002-07-22 | 2002-08-05 |  |  |  |  | 69d | 42.5d |  |  | 32h | 4,280 |  |
| 191 | 3.2.4.1.1.1 | Initial Quoting and Vendor Communication |  | 5d | 2002-07-22 | 2002-07-26 |  |  |  |  | 56.12d | 0d | start no earlier than 2002-07-22 | ME2 [25%] | 10h | 1,150 |  |
| 192 | 3.2.4.1.1.2 | Quote Review and Partner Selection |  | 3d | 2002-07-29 | 2002-07-31 | 191 |  |  |  | 56.12d | 0.12d |  | ME2 [50%] | 12h | 1,380 |  |
| 193 | 3.2.4.1.1.3 | Preliminary Construction Review |  | 2.5d | 2002-08-01 | 2002-08-05 | 192 |  |  |  | 56d |  | start no earlier than 2002-08-01 | ME2 [50%] | 10h | 1,750 |  |

| ID | WBS | Task | Duration | Start | Finish | Predecessors | Total slack | Free slack | Constraint | Resources | Work | Cost |
| --- | --- | --- | --- | --- | --- | --- | --- | --- | --- | --- | --- | --- |
| 194 | 3.2.4.1.2 | **Safety** | 30d? | 2002-10-04 | 2002-11-15 | 190, 37, 251 | 26.5d | 6d |  | ME2 [10%] | 512h | 42,780 |
| 195 | 3.2.4.1.2.1 | Identify Safety Warning Labels and Text Requirements | 1d? | 2002-10-04 | 2002-10-07 |  | 55.5d |  |  | ME2 | 8h | 920 |
| 196 | 3.2.4.1.2.2 | Proto 2 Certification | 6w | 2002-10-04 | 2002-11-15 |  | 26.5d |  |  | ME2; P507001; EE1 | 480h | 39,100 |
| 197 | 3.2.4.1.3 | **FCC** | 30d | 2002-10-04 | 2002-11-15 |  | 26.5d |  |  |  | 480h | 29,100 |
| 198 | 3.2.4.1.3.1 | Proto 2 Compliance Testing | 6w | 2002-10-04 | 2002-11-15 | 251 | 13.5d |  |  | ME2; EE1; P507002; P507003 | 480h | 29,100 |
| 199 | 3.2.4.1.4 | **FDA** | 16d? | 2002-08-08 | 2002-08-30 |  | 80.5d |  |  |  | 24h | 1,380 |
| 200 | 3.2.4.1.4.1 | 21 CFR Rules Review | 3w | 2002-08-08 | 2002-08-29 |  | 80.5d | 0d | start no earlier than 2002-08-08 | PM1 [10%]; ME2 [10%] | 24h | 1,380 |
| 201 | 3.2.4.1.4.2 | FDA Laser Consultation | 1d? | 2002-08-29 | 2002-08-30 | 200 | 80.5d |  |  |  |  |  |
| 202 | 3.2.4.1.5 | **Testing - Shipping and Packaging Solution (ISTA)** | 104.5d | 2002-07-29 | 2002-12-26 |  | 0d |  |  |  | 92h | 10,580 |
| 203 | 3.2.4.1.5.1 | Initial Quoting and Vendor Communication | 10d | 2002-07-29 | 2002-08-12 |  | 48.5d | 0d | start no earlier than 2002-07-29 | ME2 [25%] | 20h | 2,300 |
| 204 | 3.2.4.1.5.2 | Quote Review and Partner Selection | 3d | 2002-08-12 | 2002-08-15 | 203 | 48.5d | 0d |  | ME2 [25%] | 6h | 690 |
| 205 | 3.2.4.1.5.3 | Preliminary Informal Testing | 3d | 2002-08-15 | 2002-08-20 | 204 | 48.5d | 0d |  | ME2 [25%] | 6h | 690 |
| 206 | 3.2.4.1.5.4 | Mechanical Design Impact Revisions (In-House Results) | 2.5d | 2002-08-20 | 2002-08-22 | 205 | 51d |  |  | ME1 [50%] | 10h | 1,150 |
| 207 | 3.2.4.1.5.5 | Shipping / Packaging Design Impact Revisions (In-House Results) | 5d | 2002-08-20 | 2002-08-27 | 205 | 48.5d |  |  | ME2 [25%] | 10h | 1,150 |
| 208 | 3.2.4.1.5.6 | Formal ISTA Testing / Certification | 5d | 2002-12-18 | 2002-12-26 | 167 | 0d |  |  | ME2 | 40h | 4,600 |
| 209 | 3.2.4.1.6 | **ESD** | 2d | 2002-10-28 | 2002-10-30 |  | 38d |  |  |  | 8h |  |
| 210 | 3.2.4.1.6.1 | Proto 2 Testing | 2d | 2002-10-28 | 2002-10-30 | 254 | 38d |  |  | EE1 [50%]; P507005 | 8h |  |
| 211 | 3.2.4.1.7 | **Environmental** | 10d | 2002-10-04 | 2002-10-18 | 251 | 46.5d |  |  |  | 480h | 70,200 |
| 212 | 3.2.4.1.7.1 | Product - Thermal Mapping | 2w | 2002-10-04 | 2002-10-18 |  | 46.5d |  |  | ME2; P507004 | 80h | 9,200 |
| 213 | 3.2.4.1.7.2 | Product - Temperature | 2w | 2002-10-04 | 2002-10-18 |  | 46.5d |  |  | ME2; P507004 | 80h | 9,200 |
| 214 | 3.2.4.1.7.3 | Product - Altitude | 2w | 2002-10-04 | 2002-10-18 |  | 46.5d |  |  | ME2; P507004 | 80h | 9,200 |
| 215 | 3.2.4.1.7.4 | Product - Humidity | 2w | 2002-10-04 | 2002-10-18 |  | 46.5d |  |  | ME2; P507004 | 80h | 9,200 |
| 216 | 3.2.4.1.7.5 | Product - Vibration | 2w | 2002-10-04 | 2002-10-18 |  | 46.5d |  |  | ME2; P507004 | 80h | 9,200 |
| 217 | 3.2.4.1.7.6 | Product - Shock / Drop / Impact | 2w | 2002-10-04 | 2002-10-18 |  | 46.5d |  |  | ME2; P507004 | 80h | 9,200 |

| ID | WBS | Task | Duration | Start | Finish | Predecessors | Total slack | Free slack | Constraint | Resources | Work | Cost |
| --- | --- | --- | --- | --- | --- | --- | --- | --- | --- | --- | --- | --- |
| 218 | 3.2.4.2 | **Final Regulatory** | 20d | 2003-02-12 | 2003-03-12 | 222, 50, 168, 228, 56, 194 | 35d |  |  |  |  |  |
| 219 | 3.2.4.2.1 | Final FCC Certification | 2w | 2003-02-12 | 2003-02-26 |  | 45d |  |  |  |  |  |
| 220 | 3.2.4.2.2 | Final FDA 21 CFR laser certification | 2w | 2003-02-12 | 2003-02-26 |  | 35d | 0d |  |  |  |  |
| 221 | 3.2.4.2.3 | Final UL, cUL Certification | 2w | 2003-02-26 | 2003-03-12 | 220 | 35d |  |  |  |  |  |
| 222 | 3.2.4.3 | **Power Supply Certification** | 21d? | 2002-08-16 | 2002-09-17 |  | 138d | 103d |  |  |  |  |
| 223 | 3.2.4.3.1 | Factory Approval and Vendor Qualification | 1d? | 2002-08-16 | 2002-08-19 |  | 135d | 0d | start no earlier than 2002-08-16 |  |  |  |
| 224 | 3.2.4.3.2 | UL, cUL registrations | 4w | 2002-08-19 | 2002-09-17 | 223 | 135d |  |  |  |  |  |
| 225 | 3.2.5 | **Documentation and Art** | 198d? | 2002-01-01 | 2002-10-07 |  | 112.12d | 50.5d |  |  | 136h | 990 |
| 226 | 3.2.5.1 | **Product Requirements** | 20d | 2002-08-16 | 2002-09-16 |  | 122.12d |  |  |  |  |  |
| 227 | 3.2.5.1.1 | DJ-C40 Product Requirements Document | 4w | 2002-08-16 | 2002-09-16 | 22 | 109.12d | 6d |  |  |  |  |
| 228 | 3.2.5.2 | **User Guide** | 198d | 2002-01-01 | 2002-10-07 |  | 6.88d |  |  |  |  |  |
| 229 | 3.2.5.2.1 | DJ-C40 | 6w | 2002-08-16 | 2002-09-30 | 22 | 6.88d | 0d |  |  |  |  |
| 230 | 3.2.5.2.2 | FML | 2w | 2002-08-16 | 2002-08-30 | 22 | 26.88d | 20d |  |  |  |  |
| 231 | 3.2.5.2.3 | Regulatory message, Warnings, Disclaimers, Acknowlegements | 2w | 2002-01-01 | 2002-01-15 |  | 189.88d | 183d |  |  |  |  |
| 232 | 3.2.5.2.4 | Final User Guide | 1w | 2002-09-30 | 2002-10-07 | 229, 230, 231 | 6.88d |  | finish no later than 2002-10-15 |  |  |  |
| 233 | 3.2.5.3 | **Shipping CD Art and Text** | 30d? | 2002-08-20 | 2002-10-02 |  | 115.12d | 53.5d |  |  | 57.4h | 385 |
| 234 | 3.2.5.3.1 | Complete CD art spec | 1w | 2002-08-20 | 2002-08-27 |  | 102.12d | 0d | start no earlier than 2002-08-20 | PM1 | 40h |  |
| 235 | 3.2.5.3.2 | First Draft of cd graphics | 2.5d | 2002-08-27 | 2002-08-29 | 234 | 102.12d | 0d |  | GA1 [50%]; PM1 [5%] | 9h | 220 |
| 236 | 3.2.5.3.3 | Second Draft of cd graphics | 1.5d | 2002-09-06 | 2002-09-10 | 9 | 102.12d | 0d |  | GA1 [50%] | 6h | 165 |
| 237 | 3.2.5.3.4 | Final approval | 1d? | 2002-09-10 | 2002-09-11 | 236 | 102.12d | 0d |  |  |  |  |
| 238 | 3.2.5.3.5 | Order 50 Sample cds | 3w | 2002-09-11 | 2002-10-02 | 237 | 102.12d |  |  | PM1 [2%] | 2.4h |  |
| 239 | 3.2.5.4 | **Package Art** | 85d? | 2002-05-15 | 2002-09-12 |  | 36.5d | 0d |  |  | 37.6h | 385 |
| 240 | 3.2.5.4.1 | Packaging Spec | 4w | 2002-05-15 | 2002-06-12 |  | 108.5d |  | start no earlier than 2002-05-15 | PM1 [10%] | 16h |  |
| 241 | 3.2.5.4.2 | 1st Draft of packaging art | 2.5d? | 2002-08-27 | 2002-08-29 |  | 43.5d | 0d | start no earlier than 2002-08-27 | GA1 [50%]; PM1 [20%] | 14h | 275 |
| 242 | 3.2.5.4.3 | 2nd Draft of packaging graphics | 1d? | 2002-09-06 | 2002-09-09 | 10 | 43.5d | 0d |  | GA1 [50%]; PM1 [20%] | 5.6h | 110 |
| 243 | 3.2.5.4.4 | Final Approval | 2.5d? | 2002-09-09 | 2002-09-12 | 242 | 43.5d |  |  | PM1 [10%] | 2h |  |

| ID | WBS | Task | Duration | Start | Finish | Predecessors | Baseline start | Baseline finish | Baseline duration | Total slack | Free slack | Constraint | Resources | Work | Cost | Baseline cost |
| --- | --- | --- | --- | --- | --- | --- | --- | --- | --- | --- | --- | --- | --- | --- | --- | --- |
| 244 | 3.2.5.5 | **Remote Control** | 15d | 2002-08-12 | 2002-08-30 |  |  |  |  | 104.12d | 0d |  |  | 41h | 220 |  |
| 245 | 3.2.5.5.1 | Remote Specification | 2w | 2002-08-12 | 2002-08-23 |  |  |  |  | 91.12d | 0d | finish no earlier than 2002-08-23 | PM1 [50%]; PM2 [18.8%] | 25h |  |  |
| 246 | 3.2.5.5.2 | 1st Draft of remote graphics | 1d | 2002-08-26 | 2002-08-26 | 245 |  |  |  | 91.12d | 0d |  | GA1 [50%]; PM2 [25%] | 6h | 110 |  |
| 247 | 3.2.5.5.3 | 2nd Draft of remote graphics | 1d | 2002-08-28 | 2002-08-28 | 11 |  |  |  | 91.12d | 0d |  | GA1 [50%]; PM2 [25%] | 6h | 110 |  |
| 248 | 3.2.5.5.4 | Final Release of remote graphics | 2d | 2002-08-29 | 2002-08-30 | 247 |  |  |  | 91.12d |  |  | PM1 [25%] | 4h |  |  |
| 249 | 3.2.6 | **Manufacturability** | 82.62d | 2002-07-31 | 2002-11-25 |  |  |  |  | 40.62d |  |  |  | 64h | 5,980 |  |
| 250 | 3.2.6.1 | Box Assembly Plan | 3w | 2002-07-31 | 2002-08-20 |  |  |  |  | 40.62d | 0d | finish no earlier than 2002-08-20 | MFE [10%] | 12h |  |  |
| 251 | 3.2.6.2 | **Early Assembly** | 4d | 2002-09-30 | 2002-10-04 | 121, 133 |  |  |  | 10.5d | 0d |  |  |  |  |  |
| 252 | 3.2.6.2.1 | Assemble Unit P503001 | 1d | 2002-09-30 | 2002-10-01 |  |  |  |  | 13.5d | 0d |  |  |  |  |  |
| 253 | 3.2.6.2.2 | Assemble P503002 - P803005 | 3d | 2002-10-01 | 2002-10-04 | 252 |  |  |  | 13.5d |  |  |  |  |  |  |
| 254 | 3.2.6.3 | **Proto 2 Assembly** | 7d | 2002-10-17 | 2002-10-28 | 50, 103, 250 |  |  |  | 0d |  |  |  | 52h | 5,980 |  |
| 255 | 3.2.6.3.1 | Proto #2 Run First Unit Assembly / Review | 2d | 2002-10-17 | 2002-10-21 |  | 2002-07-01 | 2002-07-01 | 0.5d | 0d |  |  | ME1; ME2 | 32h | 3,680 | 1,560 |
| 256 | 3.2.6.3.2 | Develop Assembly plan for PCA | 3d | 2002-10-17 | 2002-10-22 |  |  |  |  | 4d |  |  |  |  |  |  |
| 257 | 3.2.6.3.3 | Proto #2 Assembly Support | 5d | 2002-10-21 | 2002-10-28 | 255 |  |  |  | 0d |  |  | ME1 [50%] | 20h | 2,300 |  |
| 258 | 3.2.6.3.4 | Unit Assembly at PCA | 5d | 2002-10-21 | 2002-10-28 | 255 |  |  |  | 0d |  |  |  |  |  |  |
| 259 | 3.2.6.4 | DFTVT | 4w | 2002-10-28 | 2002-11-25 | 257 |  |  |  | 108.5d |  |  |  |  |  |  |
| 260 | 3.2.6.5 | Box Test Plan | 2w | 2002-08-21 | 2002-09-04 | 250 |  |  |  | 133.12d | 0d |  |  |  |  |  |
| 261 | 3.2.6.6 | DFTVT | 4w | 2002-09-05 | 2002-10-02 | 260 |  |  |  | 133.12d |  |  |  |  |  |  |
| 266 | 3.3 | **Production** | 343d? | 2002-01-01 | 2003-05-01 |  |  |  |  | 0d |  |  |  |  |  |  |
| 267 | 3.3.1 | Purchase | 1d? | 2002-01-01 | 2002-01-02 |  |  |  |  | 329d |  |  |  |  |  |  |
| 268 | 3.3.2 | Pilot Run | 1d? | 2002-01-01 | 2002-01-02 |  |  |  |  | 329d |  |  |  |  |  |  |
| 269 | 3.3.3 | Production | 1d? | 2002-01-01 | 2002-01-02 |  |  |  |  | 329d |  |  |  |  |  |  |
| 272 | 3.3.4 | **DFM** | 1d? | 2003-04-30 | 2003-05-01 |  |  |  |  | 0d |  |  |  |  |  |  |
| 273 | 3.3.4.1 | PCB DFM | 1d? | 2003-04-30 | 2003-05-01 | 17 |  |  |  | 0d |  | start no earlier than 2002-09-16 |  |  |  |  |
| 274 | 3.3.4.2 | PCB DFT | 1d? | 2003-04-30 | 2003-05-01 | 17 |  |  |  | 0d |  |  |  |  |  |  |
| 275 | 3.3.4.3 | Box DFA | 1d? | 2003-04-30 | 2003-05-01 | 17 |  |  |  | 0d |  |  |  |  |  |  |
| 276 | 3.3.4.4 | Box DFT | 1d? | 2003-04-30 | 2003-05-01 | 17 |  |  |  | 0d |  |  |  |  |  |  |

| ID | WBS | Task | Type | Duration | Start | Finish | Predecessors | Total slack | Free slack | Constraint |
| --- | --- | --- | --- | --- | --- | --- | --- | --- | --- | --- |
| 277 | 3.3.5 | **DVT** |  | 160d? | 2002-06-28 | 2003-02-13 |  | 55d |  |  |
| 278 | 3.3.5.1 | **Mechanical** |  | 79.88d? | 2002-07-05 | 2002-10-25 |  | 130.12d |  |  |
| 279 | 3.3.5.1.1 | Prototype Sample (V7) | milestone | 0d | 2002-08-23 | 2002-08-23 |  | 162d |  | start no earlier than 2002-08-23 |
| 280 | 3.3.5.1.2 | Mech Parts Tooling |  | 34.88d? | 2002-08-30 | 2002-10-18 |  | 122.12d |  | finish no earlier than 2002-10-18 |
| 281 | 3.3.5.1.3 | Tools Approval |  | 5.88d? | 2002-10-04 | 2002-10-11 |  | 127.12d |  | finish no earlier than 2002-10-11 |
| 282 | 3.3.5.1.4 | DVT Samples, n=50, tooled parts |  | 5.88d? | 2002-10-18 | 2002-10-25 |  | 117.12d |  | finish no earlier than 2002-10-25 |
| 283 | 3.3.5.1.5 | Quality Inspection & Test Plan |  | 5.88d? | 2002-07-05 | 2002-07-12 |  | 191.12d |  | finish no earlier than 2002-07-12 |
| 284 | 3.3.5.2 | **Electrical** |  | 36d | 2002-09-06 | 2002-10-28 |  | 130d |  |  |
| 285 | 3.3.5.2.1 | DVT Schematics & Gerber (v4) |  | 1d | 2002-09-06 | 2002-09-09 |  | 152d |  | start no earlier than 2002-09-06 |
| 286 | 3.3.5.2.2 | DVT BOM & AVL (v4) |  | 1d | 2002-09-06 | 2002-09-09 |  | 152d |  | start no earlier than 2002-09-06 |
| 287 | 3.3.5.2.3 | DVT PCBA FP Sahara (4) |  | 1d | 2002-09-06 | 2002-09-09 |  | 147d | 0d | start no earlier than 2002-09-06 |
| 288 | 3.3.5.2.4 | DVT Compliance Test Report |  | 1w | 2002-09-09 | 2002-09-16 | 287 | 147d |  |  |
| 289 | 3.3.5.2.5 | DVT PCBA UB Pilot (50) |  | 1d | 2002-10-18 | 2002-10-21 |  | 117d | 0d | start no earlier than 2002-10-18 |
| 290 | 3.3.5.2.6 | DVT Compliance Test Report |  | 1w | 2002-10-21 | 2002-10-28 | 289 | 117d |  |  |
| 291 | 3.3.5.3 | **Industrializatin** |  | 84d | 2002-06-28 | 2002-10-25 |  | 131d |  |  |
| 292 | 3.3.5.3.1 | Production Process Plan - 1st pass |  | 1w | 2002-06-28 | 2002-07-05 |  | 157d | 5d | start no earlier than 2002-06-28 |
| 293 | 3.3.5.3.2 | Production Process Plan - TriHonor |  | 2w | 2002-07-12 | 2002-07-26 | 292 | 152d | 25d | start no earlier than 2002-07-12 |
| 294 | 3.3.5.3.3 | Production Process Plan - Final Plan |  | 1w | 2002-08-30 | 2002-09-09 | 293 | 127d | 0d | start no earlier than 2002-08-30 |
| 295 | 3.3.5.3.4 | Production Process Setup |  | 5w | 2002-09-09 | 2002-10-14 | 294 | 127d |  |  |
| 296 | 3.3.5.3.5 | Production Test Plan -1st cut |  | 1w | 2002-06-28 | 2002-07-05 |  | 137d | 10d | start no earlier than 2002-06-28 |
| 297 | 3.3.5.3.6 | Production Test Plan -development |  | 6w | 2002-07-19 | 2002-08-30 | 296 | 127d | 0d | start no earlier than 2002-07-19 |
| 298 | 3.3.5.3.7 | Production Test Plan -Final Review |  | 1w | 2002-08-30 | 2002-09-09 | 297 | 127d | 0d |  |
| 299 | 3.3.5.3.8 | Production Tester Setup |  | 5w | 2002-09-09 | 2002-10-14 | 298 | 127d |  |  |
| 300 | 3.3.5.3.9 | PCBA Test Plan - 1st Cut |  | 1w | 2002-07-05 | 2002-07-12 |  | 167d | 5d | start no earlier than 2002-07-05 |
| 301 | 3.3.5.3.10 | PCBA Test Plan - FP plan |  | 1w | 2002-07-19 | 2002-07-26 | 300 | 162d | 5d | start no earlier than 2002-07-19 |
| 302 | 3.3.5.3.11 | PCBA Test Plan - final plan |  | 1w | 2002-08-02 | 2002-08-09 | 301 | 157d | 24d | start no earlier than 2002-08-02 |
| 303 | 3.3.5.3.12 | ICT Fixture & Program |  | 3w | 2002-09-13 | 2002-10-04 | 302 | 133d |  | start no earlier than 2002-09-13 |
| 304 | 3.3.5.3.13 | Fucntional Tester |  | 3w | 2002-09-13 | 2002-10-04 |  | 132d | 0d | start no earlier than 2002-09-13 |
| 305 | 3.3.5.3.14 | Commision PCBA Testers |  | 1d | 2002-10-04 | 2002-10-07 | 304 | 132d |  |  |
| 306 | 3.3.5.3.15 | QC/QA Plan - 1st cut |  | 1w | 2002-07-05 | 2002-07-12 |  | 187d | 35d | start no earlier than 2002-07-05 |
| 307 | 3.3.5.3.16 | QC/QA Plan - final plan |  | 1w | 2002-08-30 | 2002-09-09 | 306 | 152d |  | start no earlier than 2002-08-30 |
| 308 | 3.3.5.3.17 | Vendor RFQ A |  | 1w | 2002-06-28 | 2002-07-05 |  | 192d | 44d | start no earlier than 2002-06-28 |
| 309 | 3.3.5.3.18 | Vendor RFQ B |  | 1w | 2002-09-06 | 2002-09-13 | 308 | 148d |  | start no earlier than 2002-09-06 |
| 310 | 3.3.5.3.19 | Safety Regualtion Test & Cert. |  | 12w | 2002-07-12 | 2002-10-07 |  | 132d |  | start no earlier than 2002-07-12 |
| 311 | 3.3.5.3.20 | DVT Reliability Test |  | 1w | 2002-10-18 | 2002-10-25 |  | 118d |  | start no earlier than 2002-10-18 |

| ID | WBS | Task | Duration | Start | Finish | Predecessors | Total slack | Free slack | Constraint |
| --- | --- | --- | --- | --- | --- | --- | --- | --- | --- |
| 312 | 3.3.5.4 | **CR** | 160d? | 2002-06-28 | 2003-02-13 |  | 55d |  |  |
| 313 | 3.3.5.4.1 | Final Drawing Release Form | 1d | 2003-02-12 | 2003-02-13 | 180 | 55d |  | start no earlier than 2002-06-28 |
| 314 | 3.3.5.4.2 | Final Tool Release Form | 1d? | 2002-06-28 | 2002-07-01 |  | 201d |  | start no earlier than 2002-06-28 |
| 315 | 3.3.5.4.3 | Final Schematic & Gerber Release | 1d? | 2002-12-19 | 2002-12-20 | 60 | 80d |  | start no earlier than 2002-06-28 |
| 316 | 3.3.5.4.4 | Final PCBA BOM Release | 1d? | 2002-12-19 | 2002-12-20 | 60 | 80d |  |  |
| 317 | 3.3.5.4.5 | Final Firmware Release | 1d? | 2003-01-24 | 2003-01-27 | 33 | 67.5d |  |  |
| 318 | 3.3.5.4.6 | Production Process Flow & Instruction | 63.88d? | 2002-07-08 | 2002-10-04 |  | 132.12d |  | finish no earlier than 2002-10-04 |
| 319 | 3.3.5.4.7 | Production Test Flow & Instruction | 63.88d? | 2002-07-08 | 2002-10-04 |  | 132.12d |  | finish no earlier than 2002-10-04 |
| 320 | 3.3.5.4.8 | QC/QA Flow & Instruction | 1d? | 2002-10-24 | 2002-10-25 |  | 118d |  | start no earlier than 2002-10-24 |
| 321 | 3.3.6 | **PVT** | 65d? | 2002-09-03 | 2002-12-04 |  | 104.12d |  |  |
| 322 | 3.3.6.1 | **Mechanical** | 1d? | 2002-09-16 | 2002-09-17 |  | 159d |  |  |
| 323 | 3.3.6.1.1 | PVT Samples | 1d? | 2002-09-16 | 2002-09-17 |  | 146d |  | start no earlier than 2002-09-16 |
| 324 | 3.3.6.2 | **Electrical** | 1d? | 2002-09-16 | 2002-09-17 |  | 159d |  |  |
| 325 | 3.3.6.2.1 | PVT Samples (Pilot Run) | 1d? | 2002-09-16 | 2002-09-17 |  | 146d |  | start no earlier than 2002-09-16 |
| 326 | 3.3.6.2.2 | PVT Comliance | 1d? | 2002-09-16 | 2002-09-17 |  | 146d |  | start no earlier than 2002-09-16 |
| 327 | 3.3.6.3 | **Industrialization** | 1d? | 2002-09-16 | 2002-09-17 |  | 159d |  |  |
| 328 | 3.3.6.3.1 | Process & Test Setup | 1d? | 2002-09-16 | 2002-09-17 |  | 146d |  | start no earlier than 2002-09-16 |
| 329 | 3.3.6.3.2 | Production/Yield Commissioning | 1d? | 2002-09-16 | 2002-09-17 |  | 146d |  | start no earlier than 2002-09-16 |
| 330 | 3.3.6.4 | **Purchase** | 65d? | 2002-09-03 | 2002-12-04 |  | 104.12d |  |  |
| 331 | 3.3.6.4.1 | Shipping CD | 1d? | 2002-09-16 | 2002-09-17 |  | 146d |  | start no earlier than 2002-09-16 |
| 332 | 3.3.6.4.2 | **Remote Control** | 65d | 2002-09-03 | 2002-12-04 | 244 | 104.12d |  |  |
| 333 | 3.3.6.4.2.1 | Place order | 2d | 2002-09-03 | 2002-09-04 |  | 91.12d | 0d |  |
| 334 | 3.3.6.4.2.2 | Art Review | 2w | 2002-09-05 | 2002-09-18 | 333 | 91.12d | 0d |  |
| 335 | 3.3.6.4.2.3 | First Samples (5) | 5w | 2002-09-19 | 2002-10-23 | 334 | 91.12d | 0d |  |
| 336 | 3.3.6.4.2.4 | FA Review | 3d | 2002-10-24 | 2002-10-28 | 335 | 91.12d | 0d |  |
| 337 | 3.3.6.4.2.5 | First 50 | 2w | 2002-10-29 | 2002-11-11 | 336 | 91.12d | 0d |  |
| 338 | 3.3.6.4.2.6 | Shipment of 50 | 3d | 2002-11-12 | 2002-11-14 | 337 | 103.12d |  |  |
| 339 | 3.3.6.4.2.7 | Full shipment of 5000 | 2w | 2002-11-12 | 2002-11-25 | 337 | 91.12d | 0d |  |
| 340 | 3.3.6.4.2.8 | Shipping of 5000 | 1w | 2002-11-26 | 2002-12-04 | 339 | 91.12d |  |  |
| 341 | 3.3.6.4.3 | LLT Components Buy (1k) > 8 wks | 1d? | 2002-09-16 | 2002-09-17 |  | 146d |  | start no earlier than 2002-09-16 |
| 342 | 3.3.6.4.4 | LLT Components (LCD) Buy (1k) | 1d? | 2002-09-16 | 2002-09-17 |  | 146d |  | start no earlier than 2002-09-16 |
| 343 | 3.3.6.4.5 | PO for MP 1000 units (Electrical) | 1d? | 2002-09-16 | 2002-09-17 |  | 146d |  | start no earlier than 2002-09-16 |
| 344 | 3.3.6.4.6 | PO for MP 1000 units (System) | 1d? | 2002-09-16 | 2002-09-17 |  | 146d |  | start no earlier than 2002-09-16 |

| ID | WBS | Task | Duration | Start | Finish | Total slack | Constraint |
| --- | --- | --- | --- | --- | --- | --- | --- |
| 345 | 3.3.7 | **MP Start** | 1d? | 2002-09-16 | 2002-09-17 | 159d |  |
| 346 | 3.3.7.1 | Maxx Production Start | 1d? | 2002-09-16 | 2002-09-17 | 146d | start no earlier than 2002-09-16 |
