# FP UB Sahara Dev and Prod schedule_82202

Schedule from MS Project, 2002-01-01 to 2003-04-16, costs in $.
iObjects

## Calendars

- Standard: Mon-Fri 08:00-12:00, 13:00-17:00; Sat-Sun off. Exceptions (off unless hours are given): 2002-09-02, 2002-11-28 to 2002-11-29, 2002-12-25.

## Resources

| Resource | Rate |
| --- | --- |
| PM1 |  |
| EE1 |  |
| EE2 |  |
| Tech 1 |  |
| Lead |  |
| PM2 |  |
| SW1 |  |
| SW2 |  |
| ME1 | 115 |
| ME2 | 115 |
| GA1 | 27.5 |
| GA2 | 50 |
| GA3 | 115 |
| PM3 | 115 |
| PCB |  |
| PCBA |  |
| Route | 80 |
| MPE |  |
| MFE |  |
| P507001 |  |
| P507002 |  |
| P507003 |  |
| P507004 |  |
| P507005 |  |
| P507009 |  |
| P507010 |  |
| MFG1 |  |
| MFG2 |  |
| Fiori |  |
| Moeller |  |
| Fullplay |  |
| Profab |  |
| Tech 2 |  |
| OB507001 |  |
| OB507002 |  |
| OB507003 |  |
| OB507004 |  |
| OB507005 |  |
| OB507006 |  |
| OB507007 |  |
| OB507008 |  |
| Dynamark |  |
| Tuscarora |  |

## Schedule

| ID | WBS | Task | Type | Duration | Start | Finish | Predecessors | Total slack | Free slack | Constraint | Resources | Work | Cost |
| --- | --- | --- | --- | --- | --- | --- | --- | --- | --- | --- | --- | --- | --- |
| 1 | 1 | **Fullplay Media Systems, Inc.** |  | 0d | 2002-04-01 | 2002-04-01 |  | 192.5d | 147.75d | start no earlier than 2002-04-01 |  |  |  |
| 2 | 1.1 | Confidential Information | milestone | 0d | 2002-04-01 | 2002-04-01 |  | 279.5d |  | start no earlier than 2002-04-01 |  |  |  |
| 4 | 1.2 | **Sahara Program** |  | 332.75d? | 2002-01-01 | 2003-04-16 |  | 0d |  |  |  | 3866.65h | 247,697.49 |
| 5 | 1.2.1 | **Marketing** |  | 122.62d? | 2002-08-15 | 2003-02-07 |  | 48.12d |  |  |  |  |  |
| 6 | 1.2.1.1 | PRD |  | 1d? | 2002-08-15 | 2002-08-16 |  | 180.5d |  | start no earlier than 2002-08-15 |  |  |  |
| 7 | 1.2.1.2 | **Accessories** |  | 28.12d? | 2002-08-27 | 2002-10-07 |  | 93.88d |  |  |  |  |  |
| 8 | 1.2.1.2.1 | Review and Revise User Guide (DJ, FML, Remote, Netowrking, Web interface) |  | 1w | 2002-09-30 | 2002-10-07 | 236 | 144.5d |  |  |  |  |  |
| 9 | 1.2.1.2.2 | Review and Revise CD art |  | 1w | 2002-08-29 | 2002-09-06 | 243 | 102.5d | 0d |  |  |  |  |
| 10 | 1.2.1.2.3 | Review and Revise Packaging |  | 1w | 2002-08-29 | 2002-09-06 | 249 | 36d | 0d |  |  |  |  |
| 11 | 1.2.1.2.4 | Review and Revise Remote Spec |  | 1d? | 2002-08-27 | 2002-08-27 | 254 | 103.62d | 0d |  |  |  |  |
| 12 | 1.2.1.3 | **Promotions Schedule** |  | 101.62d? | 2002-09-16 | 2003-02-07 |  | 48.12d |  |  |  |  |  |
| 13 | 1.2.1.3.1 | Marketing Photo Shoot |  | 2d | 2002-09-27 | 2002-10-01 | 260 | 9.25d | 0d |  | P507001 |  |  |
| 14 | 1.2.1.3.2 | Ship to CES |  | 2d | 2002-10-01 | 2002-10-03 | 13 | 136.75d |  |  |  |  |  |
| 15 | 1.2.1.3.3 | **Begin Releasing units to Reviewers and Sales** |  | 53d | 2002-09-16 | 2002-12-02 |  | 96.75d |  |  |  |  |  |
| 16 | 1.2.1.3.3.1 | Shipping cd | milestone | 0d | 2002-10-02 | 2002-10-02 | 241 | 137.75d |  |  |  |  |  |
| 17 | 1.2.1.3.3.2 | Packaging | milestone | 0d | 2002-12-02 | 2002-12-02 | 170 | 96.75d |  |  |  |  |  |
| 18 | 1.2.1.3.3.3 | User guide | milestone | 0d | 2002-09-16 | 2002-09-16 | 234 | 149.75d |  |  |  |  |  |
| 19 | 1.2.1.3.3.4 | Proto 2 / -03-B | milestone | 0d | 2002-10-25 | 2002-10-25 | 262 | 120d |  |  |  |  |  |
| 20 | 1.2.1.3.3.5 | RC1 FW | milestone | 0d | 2002-10-25 | 2002-10-25 | 33 | 120d |  |  |  |  |  |
| 21 | 1.2.1.3.4 | CES | milestone | 6.88d? | 2003-01-29 | 2003-02-07 | 161, 241, 36, 235, 262 | 48.12d |  | finish no earlier than 2003-01-10 |  |  |  |
| 22 | 1.2.2 | **Development** |  | 321.25d? | 2002-01-01 | 2003-04-01 |  | 10.5d | 0d |  |  | 3866.65h | 247,697.49 |
| 23 | 1.2.2.1 | **Firmware** |  | 208.75d | 2002-04-01 | 2003-01-22 |  | 59d |  |  |  | 616h |  |
| 24 | 1.2.2.1.1 | DJ-C40 FW Dev |  | 120d | 2002-04-01 | 2002-09-17 |  | 147.75d |  | start no earlier than 2002-04-01 |  |  |  |
| 25 | 1.2.2.1.2 | **Beta 1** |  | 70d | 2002-06-24 | 2002-10-01 |  | 18.75d |  |  |  |  |  |
| 26 | 1.2.2.1.2.1 | Release Beta 1 FW on DJ35 units |  | 34d | 2002-06-24 | 2002-08-09 |  | 19.75d | 5d | start no earlier than 2002-06-24 |  |  |  |
| 27 | 1.2.2.1.2.2 | Feature Complete | milestone | 0d | 2002-08-16 | 2002-08-16 | 26 | 14.75d | 0d | start no earlier than 2002-08-16 |  |  |  |
| 28 | 1.2.2.1.2.3 | SQA |  | 5w | 2002-08-16 | 2002-09-23 | 27 | 19.75d | 1d |  |  |  |  |
| 29 | 1.2.2.1.2.4 | FVT |  | 1w | 2002-09-24 | 2002-10-01 | 28, 234 | 18.75d |  | start no earlier than 2002-09-24 |  |  |  |
| 30 | 1.2.2.1.3 | CDDB Update |  | 2d | 2002-10-15 | 2002-10-17 |  | 6.75d |  | start no earlier than 2002-10-15 |  |  |  |

| ID | WBS | Task | Type | Duration | Start | Finish | Predecessors | Total slack | Free slack | Constraint | Resources | Work | Cost |
| --- | --- | --- | --- | --- | --- | --- | --- | --- | --- | --- | --- | --- | --- |
| 31 | 1.2.2.1.4 | **Release Candidate 1** |  | 30d | 2002-10-25 | 2002-12-10 | 25, 239, 30, 262 | 0d |  |  |  | 40h |  |
| 32 | 1.2.2.1.4.1 | Prepare Test pool for Candidate 1 |  | 5d | 2002-10-25 | 2002-11-01 |  | 25d |  |  | PM2 | 40h |  |
| 33 | 1.2.2.1.4.2 | Release Candidate 1 FW on Sahara proto 2 devices | milestone | 0d | 2002-10-25 | 2002-10-25 |  | 0d |  |  | PM2 |  |  |
| 34 | 1.2.2.1.4.3 | Candidate 1 Evaluation |  | 6w | 2002-10-25 | 2002-12-10 | 33 | 0d |  |  |  |  |  |
| 35 | 1.2.2.1.5 | CDDB Update |  | 2d | 2002-12-03 | 2002-12-05 |  | 3.75d |  | start no earlier than 2002-12-03 | PM2 | 16h |  |
| 36 | 1.2.2.1.6 | **Gold Release** |  | 30d | 2002-12-10 | 2003-01-22 | 31, 35 | 0d |  |  |  | 560h |  |
| 37 | 1.2.2.1.6.1 | Final Debug |  | 30d | 2002-12-10 | 2003-01-22 |  | 0d |  | start no earlier than 2002-11-01 | PM2 | 240h |  |
| 38 | 1.2.2.1.6.2 | Final Bootloader Image |  | 30d | 2002-12-10 | 2003-01-22 |  | 0d |  |  | PM2 | 240h |  |
| 39 | 1.2.2.1.6.3 | Final Shipping CD |  | 10d | 2002-12-10 | 2002-12-24 |  | 20d | 0d | start no earlier than 2002-12-02 | PM2 | 80h |  |
| 40 | 1.2.2.2 | **Electrical** |  | 189.75d? | 2002-05-20 | 2003-02-13 |  | 43d |  |  |  | 416h | 18,872.5 |
| 41 | 1.2.2.2.1 | DJ35 PCB Build x52 |  | 23d | 2002-05-20 | 2002-06-20 |  | 209.75d |  | start no earlier than 2002-05-20 |  |  |  |
| 42 | 1.2.2.2.2 | UB BOM feedback |  | 23d | 2002-05-20 | 2002-06-20 |  | 209.75d |  | start no earlier than 2002-05-20 |  |  |  |
| 43 | 1.2.2.2.3 | **FP Build PCB-03-A** |  | 34d | 2002-07-22 | 2002-09-09 |  | 5.75d | 0d |  |  | 400h | 10,551.2 |
| 44 | 1.2.2.2.3.1 | FP Route PCB-03-A |  | 4d | 2002-07-22 | 2002-07-26 |  | 5.75d | 0d | start no earlier than 2002-07-22 |  |  |  |
| 45 | 1.2.2.2.3.2 | Review Placement |  | 1d | 2002-07-26 | 2002-07-29 | 44 | 5.75d | 0d |  |  |  |  |
| 46 | 1.2.2.2.3.3 | Paradigm Critical Route |  | 2d | 2002-07-29 | 2002-07-31 | 45 | 5.75d | 0d |  |  |  |  |
| 47 | 1.2.2.2.3.4 | FP Critical Route Review |  | 1d | 2002-07-31 | 2002-08-01 | 46 | 5.75d | 0d |  |  |  |  |
| 48 | 1.2.2.2.3.5 | FP Design Changes |  | 2d | 2002-08-01 | 2002-08-05 | 47 | 5.75d | 0d |  |  |  |  |
| 49 | 1.2.2.2.3.6 | Paradigm Final Route |  | 2d | 2002-08-05 | 2002-08-07 | 48 | 5.75d | 0d |  |  |  |  |
| 50 | 1.2.2.2.3.7 | Review Final Route |  | 4d | 2002-08-07 | 2002-08-13 | 49 | 5.75d | 0d |  |  |  |  |
| 51 | 1.2.2.2.3.8 | FP MB RTFAB-03-A (50) |  | 3d | 2002-08-13 | 2002-08-16 | 50 | 5.75d | 0d |  | PCB |  | 9,210 |
| 52 | 1.2.2.2.3.9 | FP MB RTASY-03-A (8) |  | 5d | 2002-08-16 | 2002-08-23 | 51 | 5.75d | 0d | start no earlier than 2002-08-16 | PCBA |  | 1,341.2 |
| 53 | 1.2.2.2.3.10 | FP bare board HWEVT (open boards) |  | 10d | 2002-08-23 | 2002-09-09 | 52 | 5.75d |  |  | EE1; EE2; Tech 1; Tech 2; Lead; OB507001; OB507002; OB507003; OB507004; OB507005; OB507006; OB507007; OB507008 | 400h |  |
| 54 | 1.2.2.2.4 | **FP Build PCB-03-B** |  | 23d | 2002-09-09 | 2002-10-10 | 43 | 5.75d | 0d |  |  | 16h | 8,321.3 |
| 55 | 1.2.2.2.4.1 | FP Route PCB-03-B |  | 5d | 2002-09-09 | 2002-09-16 |  | 5.75d | 0d |  | Route [40%] | 16h | 1,280 |
| 56 | 1.2.2.2.4.2 | FP RTFAB-03-B |  | 3d | 2002-09-16 | 2002-09-19 | 55 | 5.75d | 0d |  | PCB |  |  |
| 57 | 1.2.2.2.4.3 | FP RTASY-03-B |  | 5d | 2002-09-19 | 2002-09-26 | 56 | 5.75d | 0d |  | PCBA |  | 7,041.3 |
| 58 | 1.2.2.2.4.4 | FP HWEVT (4 open boards) |  | 10d | 2002-09-26 | 2002-10-10 | 57 | 5.75d |  |  |  |  |  |
| 59 | 1.2.2.2.5 | FP HW DVT |  | 20d | 2002-10-25 | 2002-11-22 | 54, 262 | 10.5d | 8.25d |  |  |  |  |

Notes:
- 53: Decision to Build B
- 59: Josh and Bruce need to prepare DVT test plan / How many units need? 1 lab queen.

| ID | WBS | Task | Type | Duration | Start | Finish | Predecessors | Baseline start | Baseline finish | Baseline duration | Total slack | Free slack | Constraint | Resources | Work | Cost | Baseline cost |
| --- | --- | --- | --- | --- | --- | --- | --- | --- | --- | --- | --- | --- | --- | --- | --- | --- | --- |
| 60 | 1.2.2.2.6 | **FP Build PCB-04-A** |  | 13d | 2003-01-22 | 2003-02-10 | 59, 199, 36 |  |  |  | 0d |  |  |  |  |  |  |
| 61 | 1.2.2.2.6.1 | FP Route -04-A |  | 5d | 2003-01-22 | 2003-01-29 |  |  |  |  | 0d |  |  |  |  |  |  |
| 62 | 1.2.2.2.6.2 | FP RTFAB-04-A |  | 3d | 2003-01-29 | 2003-02-03 | 61 |  |  |  | 0d |  |  |  |  |  |  |
| 63 | 1.2.2.2.6.3 | FP RTASY-04-A |  | 5d | 2003-02-03 | 2003-02-10 | 62 |  |  |  | 0d |  |  |  |  |  |  |
| 64 | 1.2.2.2.7 | HW DVT -04-A |  | 3d | 2003-02-10 | 2003-02-13 | 60 |  |  |  | 43d | 0d |  |  |  |  |  |
| 65 | 1.2.2.2.8 | **Functional Test Fixture (FTF)** |  | 60d? | 2002-10-10 | 2003-01-07 | 54 |  |  |  | 70.75d |  |  |  |  |  |  |
| 66 | 1.2.2.2.8.1 | Software Design Requirements |  | 2w | 2002-10-10 | 2002-10-24 |  |  |  |  | 119.75d | 0d |  |  |  |  |  |
| 67 | 1.2.2.2.8.2 | Electrical Design Requirements |  | 2w | 2002-10-10 | 2002-10-24 |  |  |  |  | 70.75d | 0d |  |  |  |  |  |
| 68 | 1.2.2.2.8.3 | Mechanical Design Requirements |  | 2w | 2002-10-10 | 2002-10-24 |  |  |  |  | 70.75d | 0d |  |  |  |  |  |
| 69 | 1.2.2.2.8.4 | Software Development |  | 1d? | 2002-10-24 | 2002-10-25 | 66 |  |  |  | 119.75d |  |  |  |  |  |  |
| 70 | 1.2.2.2.8.5 | Electrical Development |  | 8w | 2002-10-24 | 2002-12-23 | 67 |  |  |  | 70.75d | 0d |  |  |  |  |  |
| 71 | 1.2.2.2.8.6 | Mechanical Development |  | 8w | 2002-10-24 | 2002-12-23 | 68 |  |  |  | 70.75d | 0d |  |  |  |  |  |
| 72 | 1.2.2.2.8.7 | FTF EVT |  | 1w | 2002-12-23 | 2002-12-31 | 70, 71 |  |  |  | 70.75d | 0d |  |  |  |  |  |
| 73 | 1.2.2.2.8.8 | FTF DVT |  | 1w | 2002-12-31 | 2003-01-07 | 72 |  |  |  | 70.75d | 0d |  |  |  |  |  |
| 74 | 1.2.2.2.8.9 | Release Final FTF | milestone | 0d | 2003-01-07 | 2003-01-07 | 73 |  |  |  | 70.75d |  |  |  |  |  |  |
| 75 | 1.2.2.3 | **Mechanical** |  | 244.25d? | 2002-04-18 | 2003-04-01 |  | 2002-04-18 | 2002-09-19 | 111d | 0.62d |  |  | PM3 [20%] | 1902.65h | 159,614.99 | 105,300 |
| 76 | 1.2.2.3.1 | **Phase 1 Planning** |  | 2d | 2002-04-18 | 2002-04-22 |  | 2002-04-18 | 2002-04-22 | 3d | 0.62d | 0d |  |  |  |  | 3,640 |
| 77 | 1.2.2.3.1.1 | Kickoff Meeting |  | 0.5d | 2002-04-18 | 2002-04-18 |  | 2002-04-18 | 2002-04-18 | 0.5d | 0.62d | 0d | start no earlier than 2002-04-18 |  |  |  | 1,040 |
| 78 | 1.2.2.3.1.2 | Detailed Schedule Build / Review |  | 1d | 2002-04-18 | 2002-04-19 | 77 | 2002-04-18 | 2002-04-22 | 2d | 0.62d | 0d |  |  |  |  | 2,080 |
| 79 | 1.2.2.3.1.3 | Design Change Requirements Review |  | 0.5d | 2002-04-19 | 2002-04-22 | 78 | 2002-04-22 | 2002-04-22 | 0.5d | 0.62d |  |  |  |  |  | 520 |
| 80 | 1.2.2.3.2 | **Phase 2A Product Engineering** |  | 59.88d | 2002-04-22 | 2002-07-12 | 76 | 2002-04-23 | 2002-05-23 | 22.5d | 0.62d |  |  |  |  |  | 37,440 |
| 81 | 1.2.2.3.2.1 | Brainstorm Engineering Strategies |  | 0.25d | 2002-04-22 | 2002-04-22 |  | 2002-04-23 | 2002-04-23 | 0.5d | 0.62d | 0d |  |  |  |  | 1,560 |
| 82 | 1.2.2.3.2.2 | CD Sourcing and Research, Trip Prep |  | 6d | 2002-04-22 | 2002-04-30 | 81 |  |  |  | 0.62d |  |  |  |  |  |  |
| 83 | 1.2.2.3.2.3 | Asian Production Partner Trip and Download |  | 6d | 2002-05-01 | 2002-05-08 | 82 |  |  |  | 0d |  | must start on 2002-05-01 |  |  |  |  |
| 84 | 1.2.2.3.2.4 | Engineering and CAD work - 1st rev production |  | 12d | 2002-05-09 | 2002-05-24 | 83 | 2002-04-23 | 2002-04-30 | 5d | 14.62d | 0d |  |  |  |  | 10,400 |
| 85 | 1.2.2.3.2.5 | Preliminary Files to Tooling Vendors | milestone | 0d | 2002-05-24 | 2002-05-24 | 84 | 2002-05-23 | 2002-05-23 | 0d? | 14.62d | 0d |  |  |  |  |  |
| 86 | 1.2.2.3.2.6 | CM File Review |  | 5.5d | 2002-05-27 | 2002-06-03 | 85 |  |  |  | 14.62d | 0d |  |  |  |  |  |
| 87 | 1.2.2.3.2.7 | Conference Call with CM (Feedback) |  | 0.5d | 2002-06-03 | 2002-06-03 | 86 |  |  |  | 14.62d | 0d |  |  |  |  |  |
| 88 | 1.2.2.3.2.8 | Engineering and CAD - 2nd rev (refinements, second level) |  | 10d | 2002-06-04 | 2002-06-17 | 87 |  |  |  | 14.62d | 9d |  |  |  |  |  |
| 89 | 1.2.2.3.2.9 | Engineering and CAD - CD faceplate aligment redesign, etc. |  | 5d | 2002-07-01 | 2002-07-05 | 88, 102 |  |  |  | 5.62d | 0d |  |  |  |  |  |
| 90 | 1.2.2.3.2.10 | Engineering and CAD - final venting, rack ears, file tweaks / reviews, etc. |  | 5d | 2002-07-08 | 2002-07-12 | 89 |  |  |  | 192.88d |  |  |  |  |  |  |

| ID | WBS | Task | Type | Duration | Start | Finish | Predecessors | Baseline start | Baseline finish | Baseline duration | Total slack | Free slack | Constraint | Resources | Work | Cost | Baseline cost |
| --- | --- | --- | --- | --- | --- | --- | --- | --- | --- | --- | --- | --- | --- | --- | --- | --- | --- |
| 91 | 1.2.2.3.3 | **Phase 2B Thermal / Acoustic Baseline Testing** |  | 19d | 2002-05-09 | 2002-06-04 |  | 2002-04-18 | 2002-05-21 | 23.5d | 220.88d |  |  |  |  |  | 24,960 |
| 92 | 1.2.2.3.3.1 | Test Planning and Prep - Thermal |  | 1.5d | 2002-05-09 | 2002-05-10 | 83 | 2002-04-18 | 2002-04-23 | 4d | 223.38d | 0d |  |  |  |  | 4,160 |
| 93 | 1.2.2.3.3.2 | Test Planning and Prep - Acoustic |  | 2d | 2002-05-09 | 2002-05-10 | 83 | 2002-05-02 | 2002-05-07 | 4d | 220.88d | 0d |  |  |  |  | 4,160 |
| 94 | 1.2.2.3.3.3 | Thermal Data Collection |  | 15d | 2002-05-10 | 2002-05-31 | 92 |  |  |  | 223.38d |  |  |  |  |  |  |
| 95 | 1.2.2.3.3.4 | Acoustic Data Collection |  | 15d | 2002-05-13 | 2002-05-31 | 93 |  |  |  | 220.88d | 0d |  |  |  |  |  |
| 96 | 1.2.2.3.3.5 | Summary Preparation |  | 2d | 2002-06-03 | 2002-06-04 | 95 | 2002-05-16 | 2002-05-20 | 3d | 220.88d |  |  |  |  |  | 3,120 |
| 97 | 1.2.2.3.4 | **Phase 3 Prototyping** |  | 156.38d? | 2002-06-03 | 2003-01-14 | 87 | 2002-05-15 | 2002-07-04 | 36.5d | 19.62d |  |  |  | 1187.85h | 77,412.99 | 24,960 |
| 98 | 1.2.2.3.4.1 | **Prototyping Round 1** |  | 42.5d | 2002-06-03 | 2002-08-01 |  | 2002-05-15 | 2002-06-13 | 21.5d | 3.62d | 0d |  |  |  |  | 14,560 |
| 99 | 1.2.2.3.4.1.1 | Files to Proto Vendors | milestone | 0d | 2002-06-03 | 2002-06-03 |  | 2002-05-15 | 2002-05-15 | 0d? | 19.62d | 0d |  |  |  |  |  |
| 100 | 1.2.2.3.4.1.2 | Quote Generation |  | 3d | 2002-06-04 | 2002-06-06 | 99 | 2002-05-15 | 2002-05-20 | 3d | 19.62d | 0d |  |  |  |  | 1,560 |
| 101 | 1.2.2.3.4.1.3 | Receive and Review Quotes |  | 2d | 2002-06-07 | 2002-06-10 | 100 | 2002-05-20 | 2002-05-21 | 1d | 19.62d | 14d |  |  |  |  | 520 |
| 102 | 1.2.2.3.4.1.4 | FINAL CD-ROM SPEC CONFIRMATION ON BTC | milestone | 0d | 2002-07-01 | 2002-07-01 | 101 |  |  |  | 5.62d | 0d | start no earlier than 2002-07-01 |  |  |  |  |
| 103 | 1.2.2.3.4.1.5 | Release FullPlay PO Numbers to Prototyper | milestone | 0d | 2002-07-05 | 2002-07-05 | 89, 102 | 2002-05-21 | 2002-05-21 | 0d? | 5.62d | 0d |  |  |  |  |  |
| 104 | 1.2.2.3.4.1.6 | SLA / Sheet Metal Construction |  | 10d | 2002-07-08 | 2002-07-19 | 103 | 2002-05-21 | 2002-06-05 | 10d | 5.62d | 2d |  |  |  |  | 2,600 |
| 105 | 1.2.2.3.4.1.7 | Prototype Assembly Review and CAD Database Refinements |  | 6d | 2002-07-24 | 2002-07-31 | 104 |  |  |  | 3.62d | 0d | start no earlier than 2002-07-24 |  |  |  |  |
| 106 | 1.2.2.3.4.1.8 | Updated Files to Tooling Vendors |  | 0.5d | 2002-08-01 | 2002-08-01 | 105 | 2002-06-13 | 2002-06-13 | 0d? | 3.62d |  |  |  |  |  |  |
| 107 | 1.2.2.3.4.2 | **Prototyping Round 2** |  | 54.38d? | 2002-08-01 | 2002-10-17 | 98 | 2002-06-13 | 2002-07-04 | 15d | 0d |  |  |  | 905.85h | 45,902.99 | 10,400 |
| 108 | 1.2.2.3.4.2.1 | CAD Tweaks (UL / CE / FCC Construction Review) |  | 4d | 2002-08-01 | 2002-08-07 |  |  |  |  | 3.62d | 0d |  | ME1 | 32h | 3,680 |  |
| 109 | 1.2.2.3.4.2.2 | FP - Electrical (Connector / Cable Changes | milestone | 0d | 2002-08-07 | 2002-08-07 | 108 |  |  |  | 3.62d | 0d |  |  |  |  |  |
| 110 | 1.2.2.3.4.2.3 | Updated Files to Prototyping Vendors |  | 1d | 2002-08-07 | 2002-08-08 | 109 | 2002-06-13 | 2002-06-13 | 0d? | 3.62d |  |  | ME1 | 8h | 920 |  |
| 111 | 1.2.2.3.4.2.4 | **Plastics (37)** |  | 45.75d | 2002-08-14 | 2002-10-17 | 110 |  |  |  | 0d |  |  |  | 490h | 29,096 |  |
| 112 | 1.2.2.3.4.2.4.1 | Issue CAD drawings |  | 1d | 2002-08-14 | 2002-08-15 |  |  |  |  | 5.5d | 0d | start no earlier than 2002-08-14 | ME1 | 8h | 920 |  |
| 113 | 1.2.2.3.4.2.4.2 | Issue FP PO |  | 3d | 2002-08-15 | 2002-08-20 | 112 |  |  |  | 5.5d | 0d |  | PM1 | 24h |  |  |
| 114 | 1.2.2.3.4.2.4.3 | SLA |  | 5d | 2002-08-20 | 2002-08-27 | 113 |  |  |  | 5.5d | 0d |  | Moeller | 40h |  |  |
| 115 | 1.2.2.3.4.2.4.4 | SLA review |  | 0.25d | 2002-08-27 | 2002-08-27 | 114 |  |  |  | 5.5d | 0d |  | Moeller | 2h |  |  |
| 116 | 1.2.2.3.4.2.4.5 | 2 silicon molds |  | 2d | 2002-08-27 | 2002-08-29 | 115 |  |  |  | 5.5d | 0d |  | Moeller | 16h |  |  |
| 117 | 1.2.2.3.4.2.4.6 | First Cast review |  | 1d | 2002-08-29 | 2002-08-30 | 116 |  |  |  | 5.5d | 0d |  | ME1 | 8h | 920 |  |
| 118 | 1.2.2.3.4.2.4.7 | 1st Cast 20 sets |  | 3d | 2002-08-30 | 2002-09-05 | 117 |  |  |  | 5.5d | 0d |  | Moeller | 24h |  |  |
| 119 | 1.2.2.3.4.2.4.8 | Clean 20 sets |  | 3.5d | 2002-09-05 | 2002-09-10 | 118 |  |  |  | 5.5d | 0d |  | Moeller | 28h |  |  |
| 120 | 1.2.2.3.4.2.4.9 | Paint 20 sets |  | 3d | 2002-09-10 | 2002-09-13 | 119 |  |  |  | 5.5d | 0d |  | Moeller | 24h |  |  |
| 121 | 1.2.2.3.4.2.4.10 | Review 20 sets |  | 0.25d | 2002-09-13 | 2002-09-16 | 120 |  |  |  | 5.5d | 0d |  | ME1; PM1 | 4h | 230 |  |
| 122 | 1.2.2.3.4.2.4.11 | Silkscreen/pad print review |  | 0.25d | 2002-09-16 | 2002-09-16 | 121 |  |  |  | 5.5d | 0d |  | ME1; PM1 | 4h | 230 |  |
| 123 | 1.2.2.3.4.2.4.12 | Silkscreen/Pad Print 20 sets |  | 4d | 2002-09-16 | 2002-09-20 | 122 |  |  |  | 5.5d | 0d |  | Moeller | 32h |  |  |
| 124 | 1.2.2.3.4.2.4.13 | Prep for delivery |  | 0.25d | 2002-09-20 | 2002-09-20 | 123 |  |  |  | 5.5d | 0d |  | Moeller | 2h |  |  |
| 125 | 1.2.2.3.4.2.4.14 | Ship 1st 20 plastic sets | milestone | 0.25d | 2002-09-20 | 2002-09-20 | 124 |  |  |  | 5.5d | 3.25d |  | Moeller | 2h |  |  |
| 126 | 1.2.2.3.4.2.4.15 | 2nd cast 20 sets |  | 6d | 2002-09-10 | 2002-09-18 | 119 |  |  |  | 9.75d | 0d |  | Moeller | 48h |  |  |
| 127 | 1.2.2.3.4.2.4.16 | Clean 20 sets |  | 4d | 2002-09-18 | 2002-09-24 | 126 |  |  |  | 9.75d | 0d |  | Moeller | 32h |  |  |
| 128 | 1.2.2.3.4.2.4.17 | Paint 20 sets |  | 2d | 2002-09-24 | 2002-09-26 | 127 |  |  |  | 9.75d | 0d |  | Moeller | 16h |  |  |
| 129 | 1.2.2.3.4.2.4.18 | Review 20 sets |  | 0.25d | 2002-09-26 | 2002-09-27 | 128 |  |  |  | 9.75d | 0d |  | ME1; PM1 | 4h | 230 |  |
| 130 | 1.2.2.3.4.2.4.19 | Silkscreen/ pad print 20 sets |  | 4.5d | 2002-09-27 | 2002-10-03 | 129 |  |  |  | 9.75d | 0d |  | Moeller | 36h |  |  |
| 131 | 1.2.2.3.4.2.4.20 | Prep for delivery |  | 0.25d | 2002-10-03 | 2002-10-03 | 130 |  |  |  | 9.75d | 0d |  | Moeller | 2h |  |  |
| 132 | 1.2.2.3.4.2.4.21 | Ship 2nd 20 plastic sets | milestone | 0.25d | 2002-10-03 | 2002-10-04 | 131 |  |  |  | 9.75d |  |  | Moeller | 2h |  |  |
| 133 | 1.2.2.3.4.2.4.22 | review 5 jackplates at Moeller |  | 1d | 2002-09-17 | 2002-09-18 | 153 |  |  |  | 3.25d | 0d |  | ME1; PM1 | 16h | 920 |  |
| 134 | 1.2.2.3.4.2.4.23 | Paint 5 jackplates |  | 2d | 2002-09-18 | 2002-09-20 | 133 |  |  |  | 3.25d | 0d |  | Moeller | 16h |  |  |
| 135 | 1.2.2.3.4.2.4.24 | Review Jackplate silkscreen |  | 0.25d | 2002-09-20 | 2002-09-20 | 134 |  |  |  | 3.25d | 0d |  | ME1; PM1 | 4h | 230 |  |
| 136 | 1.2.2.3.4.2.4.25 | Silkscreen 5 jackplates |  | 2d | 2002-09-20 | 2002-09-24 | 135 |  |  |  | 3.25d | 1d |  | Moeller | 16h |  |  |
| 137 | 1.2.2.3.4.2.4.26 | review 5 chasssis and covers |  | 0.25d | 2002-09-23 | 2002-09-23 | 155 |  |  |  | 0d |  |  | ME1; PM1 | 4h | 230 |  |
| 138 | 1.2.2.3.4.2.4.27 | paint 5 chassis and covers |  | 2d | 2002-09-23 | 2002-09-25 | 137 |  |  |  | 2.25d | 0d |  | Moeller | 16h |  |  |
| 139 | 1.2.2.3.4.2.4.28 | Prep 1st 5 sets |  | 0.5d | 2002-09-25 | 2002-09-25 | 138, 136 |  |  |  | 2.25d | 0d |  | Moeller | 4h |  |  |
| 140 | 1.2.2.3.4.2.4.29 | Ship 1st 5 metal sets |  | 0.25d | 2002-09-25 | 2002-09-26 | 139 |  |  |  | 2.25d | 0d |  | Moeller | 2h |  |  |
| 141 | 1.2.2.3.4.2.4.30 | review 32 sets at Moeller |  | 0.25d | 2002-10-09 | 2002-10-09 | 158 |  |  |  | 0d |  |  | ME1; PM1 | 4h | 230 |  |
| 142 | 1.2.2.3.4.2.4.31 | Paint 32 sets |  | 2d | 2002-10-09 | 2002-10-11 | 141 |  |  |  | 0d |  |  | Moeller | 16h |  |  |
| 143 | 1.2.2.3.4.2.4.32 | Silkscreen jackplates |  | 2d | 2002-10-11 | 2002-10-15 | 142 |  |  |  | 0d |  |  | Moeller | 16h |  |  |
| 144 | 1.2.2.3.4.2.4.33 | Prep 37 sets |  | 2d | 2002-10-15 | 2002-10-17 | 143 |  |  |  | 0d |  |  | Moeller | 16h |  |  |
| 145 | 1.2.2.3.4.2.4.34 | Ship 2nd metal sets |  | 0.25d | 2002-10-17 | 2002-10-17 | 144 |  |  |  | 0d |  |  | Moeller | 2h |  |  |

| ID | WBS | Task | Type | Duration | Start | Finish | Predecessors | Baseline start | Baseline finish | Baseline duration | Total slack | Free slack | Constraint | Resources | Work | Cost | Baseline cost |
| --- | --- | --- | --- | --- | --- | --- | --- | --- | --- | --- | --- | --- | --- | --- | --- | --- | --- |
| 146 | 1.2.2.3.4.2.5 | **Sheet Metal Build (QTY 37)** |  | 39.25d? | 2002-08-14 | 2002-10-09 | 110 |  |  |  | 0d |  |  | ME1 [7.6%] | 375.85h | 12,206.99 |  |
| 147 | 1.2.2.3.4.2.5.1 | Issue CAD drawings |  | 1d | 2002-08-14 | 2002-08-15 |  |  |  |  | 0d |  | start no earlier than 2002-08-14 | ME1 |  |  |  |
| 148 | 1.2.2.3.4.2.5.2 | Issue FP PO |  | 3d | 2002-08-15 | 2002-08-20 | 147 |  |  |  | 0d |  |  | PM1 | 24h |  |  |
| 149 | 1.2.2.3.4.2.5.3 | Programming |  | 2d | 2002-08-20 | 2002-08-22 | 148 |  |  |  | 0d |  |  | Profab | 16h |  |  |
| 150 | 1.2.2.3.4.2.5.4 | Tooling |  | 10d | 2002-08-22 | 2002-09-06 | 149 |  |  |  | 0d |  |  | Profab | 80h |  |  |
| 151 | 1.2.2.3.4.2.5.5 | Set-up |  | 1d | 2002-09-06 | 2002-09-09 | 150 |  |  |  | 0d |  |  | Profab | 8h |  |  |
| 152 | 1.2.2.3.4.2.5.6 | 1st 5 jackplates |  | 5d | 2002-09-09 | 2002-09-16 | 151 |  |  |  | 3.25d | 0d |  | Profab | 40h |  |  |
| 153 | 1.2.2.3.4.2.5.7 | ship 1st 5 jackplates |  | 1d | 2002-09-16 | 2002-09-17 | 152 |  |  |  | 3.25d | 0d |  | Profab | 8h |  |  |
| 154 | 1.2.2.3.4.2.5.8 | 1st 5 chassis, covers and racks |  | 9d | 2002-09-09 | 2002-09-20 | 151 |  |  |  | 0d |  |  | Profab | 72h |  |  |
| 155 | 1.2.2.3.4.2.5.9 | ship 1st 5 chassis, covers and racks |  | 1d | 2002-09-20 | 2002-09-23 | 154 |  |  |  | 0d |  |  | Profab | 8h |  |  |
| 156 | 1.2.2.3.4.2.5.10 | Set-up |  | 1d | 2002-09-23 | 2002-09-24 | 137 |  |  |  | 0d |  |  | Profab | 8h |  |  |
| 157 | 1.2.2.3.4.2.5.11 | 2nd 32 sets |  | 10d | 2002-09-24 | 2002-10-08 | 156 |  |  |  | 0d |  |  | Profab | 80h |  |  |
| 158 | 1.2.2.3.4.2.5.12 | Ship |  | 1d? | 2002-10-08 | 2002-10-09 | 157 |  |  |  | 0d |  |  | Profab | 8h |  |  |
| 159 | 1.2.2.3.4.2.6 | Parts Received | milestone | 0d | 2002-10-17 | 2002-10-17 | 111 |  |  |  | 0d |  |  |  |  |  |  |
| 160 | 1.2.2.3.4.3 | Limited CAD Updates as Required |  | 5d | 2002-10-01 | 2002-10-08 | 13 | 2002-07-02 | 2002-07-04 | 3d | 9.25d | 7d |  | ME1 [50%]; P507001 | 20h | 2,300 | 3,120 |
| 161 | 1.2.2.3.4.4 | **Packaging Design** |  | 92.12d | 2002-07-22 | 2002-12-02 |  |  |  |  | 89.88d | 41.75d |  |  | 68h | 6,900 |  |
| 162 | 1.2.2.3.4.4.1 | Initial Quoting and Vendor Communication |  | 10d | 2002-07-22 | 2002-08-02 |  |  |  |  | 127.5d | 0d | start no earlier than 2002-07-22 | ME2 [25%] | 20h | 2,300 |  |
| 163 | 1.2.2.3.4.4.2 | Quote Review and Partner Selection |  | 3d | 2002-08-05 | 2002-08-07 | 162 |  |  |  | 127.5d | 7.12d |  | ME2 [50%] | 12h | 1,380 |  |
| 164 | 1.2.2.3.4.4.3 | Submission of CAD Files to Package Design |  | 0.5d | 2002-08-19 | 2002-08-19 | 108, 163 |  |  |  | 120.38d | 30.5d | start no earlier than 2002-08-19 | ME2 | 4h | 460 |  |
| 165 | 1.2.2.3.4.4.4 | Package Design Process |  | 10d | 2002-10-02 | 2002-10-16 | 164, 259 |  |  |  | 89.88d | 0d |  | ME2 [10%]; P507005 | 8h | 920 |  |
| 166 | 1.2.2.3.4.4.5 | Review of Package Design Solution |  | 1d | 2002-10-16 | 2002-10-17 | 165 |  |  |  | 89.88d | 0d |  | ME2 | 8h | 920 |  |
| 167 | 1.2.2.3.4.4.6 | Submit Package Art |  | 1d | 2002-09-12 | 2002-09-13 | 247 |  |  |  | 113.88d | 24d |  | PM1 | 8h |  |  |
| 168 | 1.2.2.3.4.4.7 | Iteration on Package Design |  | 5d | 2002-10-17 | 2002-10-24 | 160, 167, 166, 221, 222 |  |  |  | 89.88d | 0d |  | ME2 [10%] | 4h | 460 |  |
| 169 | 1.2.2.3.4.4.8 | Final Packaging Solution Documentation |  | 5d | 2002-10-24 | 2002-10-31 | 168 |  |  |  | 89.88d | 0d |  | ME2 [10%] | 4h | 460 |  |
| 170 | 1.2.2.3.4.4.9 | Final Packaging Samples (???????) |  | 4w | 2002-10-31 | 2002-12-02 | 169 |  |  |  | 89.88d | 0d |  |  |  |  |  |

Notes:
- 170: Could take 6 - 8 weeks to get samples

| ID | WBS | Task | Type | Duration | Start | Finish | Predecessors | Baseline start | Baseline finish | Baseline duration | Total slack | Free slack | Constraint | Resources | Work | Cost | Baseline cost |
| --- | --- | --- | --- | --- | --- | --- | --- | --- | --- | --- | --- | --- | --- | --- | --- | --- | --- |
| 171 | 1.2.2.3.4.5 | **Proto #3** |  | 33.5d | 2002-11-22 | 2003-01-14 | 191, 262, 59 |  |  |  | 10.5d |  |  |  | 194h | 22,310 |  |
| 172 | 1.2.2.3.4.5.1 | CAD Revisions |  | 5d | 2002-11-22 | 2002-12-03 |  |  |  |  | 10.5d | 0d |  | ME1 | 40h | 4,600 |  |
| 173 | 1.2.2.3.4.5.2 | Updated Files to Prototyping Vendors / Preliminary to Tooling |  | 1d | 2002-12-03 | 2002-12-04 | 172, 199 | 2002-06-13 | 2002-06-13 | 0d? | 10.5d | 0d |  | ME1 | 8h | 920 |  |
| 174 | 1.2.2.3.4.5.3 | Release FullPlay PO Numbers to Prototypers | milestone | 0d | 2002-12-04 | 2002-12-04 | 173 | 2002-06-13 | 2002-06-13 | 0d? | 10.5d | 0d |  |  |  |  |  |
| 175 | 1.2.2.3.4.5.4 | SLA Build (1 unit) |  | 5d | 2002-12-04 | 2002-12-11 | 174 | 2002-06-14 | 2002-06-27 | 10d | 10.5d | 0d |  | ME1 [25%] | 10h | 1,150 | 2,600 |
| 176 | 1.2.2.3.4.5.5 | Urethane Casting (based on SLA scale master) ( 5 units) |  | 15d | 2002-12-11 | 2003-01-02 | 175 |  |  |  | 10.5d | 0d |  | ME1 [25%] | 30h | 3,450 |  |
| 177 | 1.2.2.3.4.5.6 | Sheet Metal Build (QTY 5) |  | 15d | 2002-12-04 | 2002-12-26 | 174 |  |  |  | 15.5d | 5d |  | ME1 [25%] | 30h | 3,450 |  |
| 178 | 1.2.2.3.4.5.7 | Parts Received | milestone | 0d | 2003-01-02 | 2003-01-02 | 176, 177 |  |  |  | 10.5d | 0d |  |  |  |  |  |
| 179 | 1.2.2.3.4.5.8 | Proto #3 Run First Unit Assembly / Review |  | 2d | 2003-01-02 | 2003-01-06 | 178 | 2002-07-01 | 2002-07-01 | 0.5d | 10.5d | 0d |  | ME1; ME2 | 32h | 3,680 | 1,560 |
| 180 | 1.2.2.3.4.5.9 | Limited CAD Updates as Required |  | 5d | 2003-01-06 | 2003-01-13 | 179 | 2002-07-02 | 2002-07-04 | 3d | 10.5d | 0d |  | ME1 [50%] | 20h | 2,300 | 3,120 |
| 181 | 1.2.2.3.4.5.10 | Proto #3 Assembly Support |  | 5d | 2003-01-06 | 2003-01-13 | 179 |  |  |  | 66d |  |  | ME1 [50%] | 20h | 2,300 |  |
| 182 | 1.2.2.3.4.5.11 | Final CAD Release to Tooling Vendors |  | 0.5d | 2003-01-13 | 2003-01-14 | 199, 180 | 2002-07-04 | 2002-07-04 | 0d? | 10.5d | 0d |  | ME1 | 4h | 460 |  |
| 183 | 1.2.2.3.5 | **Tooling and Production Ramp Support (TBD)** |  | 161.25d | 2002-08-13 | 2003-04-01 |  | 2002-07-05 | 2002-09-19 | 55d | 10.5d |  |  |  | 324h | 37,260 | 14,300 |
| 184 | 1.2.2.3.5.1 | CTF Drawing Creation |  | 30d | 2002-08-13 | 2002-09-25 |  |  |  |  | 141.75d |  | start no earlier than 2002-08-13 | ME1 [10%] | 24h | 2,760 |  |
| 185 | 1.2.2.3.5.2 | Tooling Design Start / Order Raw Mat'ls |  | 5w | 2002-12-04 | 2003-01-09 | 173 | 2002-07-05 | 2002-08-15 | 6w | 13d | 2.5d |  | ME1 [25%] | 50h | 5,750 | 7,800 |
| 186 | 1.2.2.3.5.3 | Tooling Finalization |  | 3w | 2003-01-14 | 2003-02-04 | 182, 185 |  |  |  | 10.5d | 0d |  | ME1 [25%] | 30h | 3,450 |  |
| 187 | 1.2.2.3.5.4 | First Articles |  | 5d | 2003-02-04 | 2003-02-11 | 186 |  |  |  | 10.5d | 0d |  | ME1 | 40h | 4,600 |  |
| 188 | 1.2.2.3.5.5 | Tooling Mods and Texturing |  | 2w | 2003-02-11 | 2003-02-25 | 187 |  |  |  | 10.5d | 0d |  | ME1 | 80h | 9,200 |  |
| 189 | 1.2.2.3.5.6 | Design Support for Manufacturing Ramp |  | 5w | 2003-02-25 | 2003-04-01 | 188 | 2002-08-16 | 2002-09-19 | 5w | 10.5d |  |  | ME1 [50%] | 100h | 11,500 | 6,500 |
| 190 | 1.2.2.4 | **Regulatory, Environmental and Reliability Testing** |  | 163.88d? | 2002-07-22 | 2003-03-12 |  |  |  |  | 24d |  |  |  | 748h | 64,080 |  |
| 191 | 1.2.2.4.1 | **Preliminary** |  | 79.12d? | 2002-07-22 | 2002-11-11 |  |  |  |  | 20.25d | 9.75d |  |  | 634h | 50,370 |  |
| 192 | 1.2.2.4.1.1 | **Planning and Preparation** |  | 10.62d | 2002-07-22 | 2002-08-05 |  |  |  |  | 33.25d |  |  |  | 34h | 4,510 |  |
| 193 | 1.2.2.4.1.1.1 | Initial Quoting and Vendor Communication |  | 5d | 2002-07-22 | 2002-07-26 |  |  |  |  | 33.38d | 0d | start no earlier than 2002-07-22 | ME2 [25%] | 10h | 1,150 |  |
| 194 | 1.2.2.4.1.1.2 | Quote Review and Partner Selection |  | 3d | 2002-07-29 | 2002-07-31 | 193 |  |  |  | 33.38d | 0.12d |  | ME2 [50%] | 12h | 1,380 |  |
| 195 | 1.2.2.4.1.1.3 | Preliminary Construction Review |  | 2.5d | 2002-08-01 | 2002-08-05 | 194 |  |  |  | 33.25d | 0d | start no earlier than 2002-08-01 | ME2 [60%] | 12h | 1,980 |  |

| ID | WBS | Task | Duration | Start | Finish | Predecessors | Total slack | Free slack | Constraint | Resources | Work | Cost |
| --- | --- | --- | --- | --- | --- | --- | --- | --- | --- | --- | --- | --- |
| 196 | 1.2.2.4.1.2 | **FCC** | 6d | 2002-10-02 | 2002-10-10 |  | 20.25d |  |  |  | 36h | 3,780 |
| 197 | 1.2.2.4.1.2.1 | EMI Proto 2 Compliance Testing w/ Rod Munro | 3d | 2002-10-02 | 2002-10-07 | 259 | 20.25d | 0d |  | ME2 [75%]; EE1 [75%]; P507002; P507003 | 24h | 3,090 |
| 198 | 1.2.2.4.1.2.2 | Summarize test results and feedback into design | 3d | 2002-10-07 | 2002-10-10 | 197 | 42.25d |  |  | ME2 [25%]; EE1 [25%] | 12h | 690 |
| 199 | 1.2.2.4.1.3 | **Safety** | 18d? | 2002-10-02 | 2002-10-28 | 192, 43, 259 | 20.25d |  |  |  | 380h | 13,800 |
| 200 | 1.2.2.4.1.3.1 | Identify Safety Warning Labels and Text Requirements | 1d? | 2002-10-02 | 2002-10-03 |  | 37.25d |  |  | ME2 | 8h | 920 |
| 201 | 1.2.2.4.1.3.2 | UL Proto 2 Certification | 3w | 2002-10-07 | 2002-10-28 | 197 | 20.25d | 0d |  | ME2 [10%]; P507002; EE1 | 132h | 12,880 |
| 202 | 1.2.2.4.1.4 | **FDA** | 51d? | 2002-08-08 | 2002-10-21 |  | 25.25d | 5d |  |  | 36h | 6,380 |
| 203 | 1.2.2.4.1.4.1 | 21 CFR Rules Review | 3w | 2002-08-08 | 2002-08-29 |  | 35.25d | 0d | start no earlier than 2002-08-08 | PM1 [10%]; ME2 [10%] | 12h |  |
| 204 | 1.2.2.4.1.4.2 | FDA Laser Consultation | 3w | 2002-08-29 | 2002-09-20 | 203 | 35.25d | 0d |  | PM1 [10%]; ME2 [10%] | 24h | 6,380 |
| 205 | 1.2.2.4.1.4.3 | Send sample to BTC | 1d? | 2002-09-20 | 2002-09-23 | 204 | 35.25d | 10d |  |  |  |  |
| 206 | 1.2.2.4.1.4.4 | FDA Testing | 2w | 2002-10-07 | 2002-10-21 | 205, 197 | 25.25d |  |  | P507003 |  |  |
| 207 | 1.2.2.4.1.5 | **ESD** | 16d | 2002-09-17 | 2002-10-09 |  | 33.25d |  |  |  | 88h |  |
| 208 | 1.2.2.4.1.5.1 | Acquire Testing Device | 2w | 2002-09-17 | 2002-10-01 |  | 37.25d | 4d | start no earlier than 2002-09-17 | EE1 | 80h |  |
| 209 | 1.2.2.4.1.5.2 | ESD Proto 2 Testing | 2d | 2002-10-07 | 2002-10-09 | 259, 208, 197 | 33.25d | 13d |  | EE1 [50%]; P507004 | 8h |  |
| 210 | 1.2.2.4.1.6 | **Environmental** | 10d | 2002-10-28 | 2002-11-11 | 259, 202, 209, 201 | 20.25d |  |  |  | 60h | 21,900 |
| 211 | 1.2.2.4.1.6.1 | Product - Thermal Mapping | 2w | 2002-10-28 | 2002-11-11 |  | 20.25d |  |  | ME2 [12.5%]; P507004; Dynamark | 10h | 1,150 |
| 212 | 1.2.2.4.1.6.2 | Product - Temperature | 2w | 2002-10-28 | 2002-11-11 |  | 20.25d |  |  | ME2 [12.5%]; P507004; Dynamark | 10h | 1,150 |
| 213 | 1.2.2.4.1.6.3 | Product - Altitude | 2w | 2002-10-28 | 2002-11-11 |  | 20.25d |  |  | ME2 [12.5%]; P507004; Dynamark | 10h | 1,150 |
| 214 | 1.2.2.4.1.6.4 | Product - Humidity | 2w | 2002-10-28 | 2002-11-11 |  | 20.25d |  |  | ME2 [12.5%]; P507004; Dynamark | 10h | 1,150 |
| 215 | 1.2.2.4.1.6.5 | Product - Vibration | 2w | 2002-10-28 | 2002-11-11 |  | 20.25d |  |  | ME2 [12.5%]; P507004; Dynamark | 10h | 1,150 |
| 216 | 1.2.2.4.1.6.6 | Product - Shock / Drop / Impact | 2w | 2002-10-28 | 2002-11-11 |  | 20.25d |  |  | ME2 [12.5%]; P507004; Dynamark | 10h | 1,150 |
| 217 | 1.2.2.4.2 | **Testing - Shipping and Packaging Solution (ISTA)** | 92d | 2002-07-29 | 2002-12-09 |  | 90.75d |  |  |  | 114h | 13,710 |
| 218 | 1.2.2.4.2.1 | Initial Quoting and Vendor Communication | 10d | 2002-07-29 | 2002-08-12 |  | 125.88d | 0d | start no earlier than 2002-07-29 | ME2 [25%] | 20h | 2,300 |
| 219 | 1.2.2.4.2.2 | Quote Review and Partner Selection | 3d | 2002-08-12 | 2002-08-15 | 218 | 125.88d | 0d |  | ME2 [50%] | 12h | 1,380 |
| 220 | 1.2.2.4.2.3 | Preliminary Informal Testing | 3d | 2002-08-15 | 2002-08-20 | 219 | 125.88d | 0d |  | ME2 [50%] | 12h | 1,380 |
| 221 | 1.2.2.4.2.4 | Mechanical Design Impact Revisions (In-House Results) | 5d | 2002-08-20 | 2002-08-27 | 220 | 125.88d | 36d |  | ME1 [50%] | 20h | 2,300 |
| 222 | 1.2.2.4.2.5 | Shipping / Packaging Design Impact Revisions (In-House Results) | 5d | 2002-08-20 | 2002-08-27 | 220 | 125.88d | 36d |  | ME2 [25%] | 10h | 1,150 |
| 223 | 1.2.2.4.2.6 | Formal ISTA Testing / Certification | 5d | 2002-12-02 | 2002-12-09 | 170 | 90.75d |  |  | ME2; Tuscarora | 40h | 5,200 |

Notes:
- 204: $5000 fee an estimate for consulting and possible testing, reporting and certification

| ID | WBS | Task | Duration | Start | Finish | Predecessors | Total slack | Free slack | Constraint | Resources | Work | Cost |
| --- | --- | --- | --- | --- | --- | --- | --- | --- | --- | --- | --- | --- |
| 224 | 1.2.2.4.3 | **Final Regulatory** | 20d? | 2003-02-12 | 2003-03-12 | 229, 191, 232, 267 | 0d |  |  |  |  |  |
| 225 | 1.2.2.4.3.1 | Build Testing Models from production materials | 1d? | 2003-02-12 | 2003-02-13 | 187 | 19d |  |  |  |  |  |
| 226 | 1.2.2.4.3.2 | Final FCC Certification | 2w | 2003-02-12 | 2003-02-26 |  | 10d |  |  |  |  |  |
| 227 | 1.2.2.4.3.3 | Final FDA 21 CFR laser certification | 2w | 2003-02-12 | 2003-02-26 |  | 0d |  |  |  |  |  |
| 228 | 1.2.2.4.3.4 | Final UL, cUL Certification | 2w | 2003-02-26 | 2003-03-12 | 227 | 0d |  |  |  |  |  |
| 229 | 1.2.2.4.4 | **Power Supply Certification** | 21d? | 2002-08-16 | 2002-09-17 |  | 103.75d |  |  |  |  |  |
| 230 | 1.2.2.4.4.1 | Factory Approval and Vendor Qualification | 1d? | 2002-08-16 | 2002-08-19 |  | 103.75d | 0d | start no earlier than 2002-08-16 |  |  |  |
| 231 | 1.2.2.4.4.2 | UL, cUL registrations | 4w | 2002-08-19 | 2002-09-17 | 230 | 103.75d |  |  |  |  |  |
| 232 | 1.2.2.5 | **Documentation and Art** | 181.75d? | 2002-05-15 | 2003-01-29 |  | 10d |  |  |  | 136h | 990 |
| 233 | 1.2.2.5.1 | **Product Requirements** | 20d | 2002-08-16 | 2002-09-16 |  | 24.75d |  |  |  |  |  |
| 234 | 1.2.2.5.1.1 | DJ-C40 Product Requirements Document | 4w | 2002-08-16 | 2002-09-16 | 27 | 24.75d | 0d |  |  |  |  |
| 235 | 1.2.2.5.2 | **User Guide** | 123.25d | 2002-08-05 | 2003-01-29 |  | 10d | 0d |  |  |  |  |
| 236 | 1.2.2.5.2.1 | DJ-C40 | 6w | 2002-08-16 | 2002-09-30 | 27 | 14.75d | 0d |  |  |  |  |
| 237 | 1.2.2.5.2.2 | FML | 6w | 2002-08-16 | 2002-09-30 | 27 | 14.75d | 0d |  |  |  |  |
| 238 | 1.2.2.5.2.3 | Regulatory message, Warnings, Disclaimers, Acknowlegements | 4w | 2002-08-05 | 2002-09-03 | 195 | 33.25d | 18.5d |  |  |  |  |
| 239 | 1.2.2.5.2.4 | Release Candidate 1 | 1w | 2002-09-30 | 2002-10-07 | 238, 236, 237 | 14.75d |  |  |  |  |  |
| 240 | 1.2.2.5.2.5 | Final User Guide | 1w | 2003-01-22 | 2003-01-29 | 36 | 10d |  |  |  |  |  |
| 241 | 1.2.2.5.3 | **Shipping CD Art and Text** | 30d? | 2002-08-20 | 2002-10-02 |  | 92.75d | 0d |  |  | 57.4h | 385 |
| 242 | 1.2.2.5.3.1 | Complete CD art spec | 1w | 2002-08-20 | 2002-08-27 |  | 92.75d | 0d | start no earlier than 2002-08-20 | PM1 | 40h |  |
| 243 | 1.2.2.5.3.2 | First Draft of cd graphics | 2.5d | 2002-08-27 | 2002-08-29 | 242 | 92.75d | 0d |  | GA1 [50%]; PM1 [5%] | 9h | 220 |
| 244 | 1.2.2.5.3.3 | Second Draft of cd graphics | 1.5d | 2002-09-06 | 2002-09-10 | 9 | 92.75d | 0d |  | GA1 [50%] | 6h | 165 |
| 245 | 1.2.2.5.3.4 | Final approval | 1d? | 2002-09-10 | 2002-09-11 | 244 | 92.75d | 0d |  |  |  |  |
| 246 | 1.2.2.5.3.5 | Order 50 Sample cds | 3w | 2002-09-11 | 2002-10-02 | 245 | 92.75d |  |  | PM1 [2%] | 2.4h |  |
| 247 | 1.2.2.5.4 | **Package Art** | 85d? | 2002-05-15 | 2002-09-12 |  | 106.75d | 0d |  |  | 37.6h | 385 |
| 248 | 1.2.2.5.4.1 | Packaging Spec | 4w | 2002-05-15 | 2002-06-12 |  | 171.75d |  | start no earlier than 2002-05-15 | PM1 [10%] | 16h |  |
| 249 | 1.2.2.5.4.2 | 1st Draft of packaging art | 2.5d? | 2002-08-27 | 2002-08-29 |  | 106.75d | 0d | start no earlier than 2002-08-27 | GA1 [50%]; PM1 [20%] | 14h | 275 |
| 250 | 1.2.2.5.4.3 | 2nd Draft of packaging graphics | 1d? | 2002-09-06 | 2002-09-09 | 10 | 106.75d | 0d |  | GA1 [50%]; PM1 [20%] | 5.6h | 110 |
| 251 | 1.2.2.5.4.4 | Final Approval | 2.5d? | 2002-09-09 | 2002-09-12 | 250 | 106.75d |  |  | PM1 [10%] | 2h |  |

| ID | WBS | Task | Duration | Start | Finish | Predecessors | Baseline start | Baseline finish | Baseline duration | Total slack | Free slack | Constraint | Resources | Work | Cost | Baseline cost |
| --- | --- | --- | --- | --- | --- | --- | --- | --- | --- | --- | --- | --- | --- | --- | --- | --- |
| 252 | 1.2.2.5.5 | **Remote Control** | 15d | 2002-08-12 | 2002-08-30 |  |  |  |  | 93.88d | 0d |  |  | 41h | 220 |  |
| 253 | 1.2.2.5.5.1 | Remote Specification | 2w | 2002-08-12 | 2002-08-23 |  |  |  |  | 93.88d | 0d | finish no earlier than 2002-08-23 | PM1 [50%]; PM2 [18.8%] | 25h |  |  |
| 254 | 1.2.2.5.5.2 | 1st Draft of remote graphics | 1d | 2002-08-26 | 2002-08-26 | 253 |  |  |  | 93.88d | 0d |  | GA1 [50%]; PM2 [25%] | 6h | 110 |  |
| 255 | 1.2.2.5.5.3 | 2nd Draft of remote graphics | 1d | 2002-08-28 | 2002-08-28 | 11 |  |  |  | 93.88d | 0d |  | GA1 [50%]; PM2 [25%] | 6h | 110 |  |
| 256 | 1.2.2.5.5.4 | Final Release of remote graphics | 2d | 2002-08-29 | 2002-08-30 | 255 |  |  |  | 93.88d |  |  | PM1 [25%] | 4h |  |  |
| 257 | 1.2.2.6 | **Manufacturability** | 287.75d | 2002-01-01 | 2003-02-12 |  |  |  |  | 44d |  |  |  | 48h | 4,140 |  |
| 258 | 1.2.2.6.1 | Box Assembly Plan | 3w | 2002-07-31 | 2002-08-20 |  |  |  |  | 40.88d | 0d | finish no earlier than 2002-08-20 | MFE [10%] | 12h |  |  |
| 259 | 1.2.2.6.2 | **Early Assembly** | 4d | 2002-09-26 | 2002-10-02 | 125, 140, 43 |  |  |  | 20.25d | 0d |  |  |  |  |  |
| 260 | 1.2.2.6.2.1 | Assemble Unit P503001 | 1d | 2002-09-26 | 2002-09-27 |  |  |  |  | 20.25d | 0d |  |  |  |  |  |
| 261 | 1.2.2.6.2.2 | Assemble P503002 - P803005 | 3d | 2002-09-27 | 2002-10-02 | 260 |  |  |  | 20.25d |  |  |  |  |  |  |
| 262 | 1.2.2.6.3 | **Proto 2 Assembly** | 6d | 2002-10-17 | 2002-10-25 | 54, 107, 258 |  |  |  | 0d |  |  |  | 36h | 4,140 |  |
| 263 | 1.2.2.6.3.1 | Proto #2 Run First Unit Assembly / Review | 1d | 2002-10-17 | 2002-10-18 |  | 2002-07-01 | 2002-07-01 | 0.5d | 0d |  |  | ME1; ME2 | 16h | 1,840 | 1,560 |
| 264 | 1.2.2.6.3.2 | Develop Assembly plan for PCA | 1d | 2002-10-17 | 2002-10-18 |  |  |  |  | 5d |  |  |  |  |  |  |
| 265 | 1.2.2.6.3.3 | Proto #2 Assembly Support | 5d | 2002-10-18 | 2002-10-25 | 263 |  |  |  | 0d |  |  | ME1 [50%] | 20h | 2,300 |  |
| 266 | 1.2.2.6.3.4 | Unit Assembly at PCA | 5d | 2002-10-18 | 2002-10-25 | 263 |  |  |  | 0d |  |  |  |  |  |  |
| 267 | 1.2.2.6.4 | **Proto 3 Assembly** | 287.75d | 2002-01-01 | 2003-02-12 |  |  |  |  | 0d |  |  |  |  |  |  |
| 268 | 1.2.2.6.4.1 | Build 5 units | 2d | 2003-02-10 | 2003-02-12 | 60, 179 |  |  |  | 0d |  |  |  |  |  |  |
| 269 | 1.2.2.6.4.2 | Revise Final Assembly Plan | 3d | 2002-01-01 | 2002-01-04 |  |  |  |  | 284.75d |  |  |  |  |  |  |
| 270 | 1.2.2.6.5 | DFTVT | 4w | 2002-10-25 | 2002-11-22 | 265 |  |  |  | 99d |  |  |  |  |  |  |
| 271 | 1.2.2.6.6 | Box Test Plan | 2w | 2002-08-21 | 2002-09-04 | 258 |  |  |  | 135.88d | 0d |  |  |  |  |  |
| 272 | 1.2.2.6.7 | DFTVT | 4w | 2002-09-05 | 2002-10-02 | 271 |  |  |  | 135.88d |  |  |  |  |  |  |
| 274 | 1.2.3 | **Production** | 95d | 2002-12-03 | 2003-04-16 |  |  |  |  | 0d |  |  |  |  |  |  |
| 275 | 1.2.3.1 | Purchase | 16w | 2002-12-03 | 2003-03-26 |  |  |  |  | 0d |  | as late as possible |  |  |  |  |
| 277 | 1.2.3.2 | Pilot Run | 3w | 2003-03-26 | 2003-04-16 | 188, 275 |  |  |  | 0d |  |  |  |  |  |  |
| 278 | 1.2.3.3 | Production | 5w | 2003-03-12 | 2003-04-16 | 224 |  |  |  | 0d |  |  |  |  |  |  |

| ID | WBS | Task | Type | Duration | Start | Finish | Predecessors | Total slack | Free slack | Constraint |
| --- | --- | --- | --- | --- | --- | --- | --- | --- | --- | --- |
| 280 | 1.2.4 | **United Box Schedules** |  | 194.25d? | 2002-06-28 | 2003-04-02 |  | 10.5d |  |  |
| 281 | 1.2.4.1 | **DFM** |  | 1d? | 2003-04-01 | 2003-04-02 |  | 10.5d |  |  |
| 282 | 1.2.4.1.1 | PCB DFM |  | 1d? | 2003-04-01 | 2003-04-02 | 22 | 10.5d |  | start no earlier than 2002-09-16 |
| 283 | 1.2.4.1.2 | PCB DFT |  | 1d? | 2003-04-01 | 2003-04-02 | 22 | 10.5d |  |  |
| 284 | 1.2.4.1.3 | Box DFA |  | 1d? | 2003-04-01 | 2003-04-02 | 22 | 10.5d |  |  |
| 285 | 1.2.4.1.4 | Box DFT |  | 1d? | 2003-04-01 | 2003-04-02 | 22 | 10.5d |  |  |
| 286 | 1.2.4.2 | **DVT** |  | 161.75d? | 2002-06-28 | 2003-02-14 |  | 43d |  |  |
| 287 | 1.2.4.2.1 | **Mechanical** |  | 79.88d? | 2002-07-05 | 2002-10-25 |  | 119.88d |  |  |
| 288 | 1.2.4.2.1.1 | Prototype Sample (V7) | milestone | 0d | 2002-08-23 | 2002-08-23 |  | 164.75d |  | start no earlier than 2002-08-23 |
| 289 | 1.2.4.2.1.2 | Mech Parts Tooling |  | 34.88d? | 2002-08-30 | 2002-10-18 |  | 124.88d |  | finish no earlier than 2002-10-18 |
| 290 | 1.2.4.2.1.3 | Tools Approval |  | 5.88d? | 2002-10-04 | 2002-10-11 |  | 129.88d |  | finish no earlier than 2002-10-11 |
| 291 | 1.2.4.2.1.4 | DVT Samples, n=50, tooled parts |  | 5.88d? | 2002-10-18 | 2002-10-25 |  | 119.88d |  | finish no earlier than 2002-10-25 |
| 292 | 1.2.4.2.1.5 | Quality Inspection & Test Plan |  | 5.88d? | 2002-07-05 | 2002-07-12 |  | 193.88d |  | finish no earlier than 2002-07-12 |
| 293 | 1.2.4.2.2 | **Electrical** |  | 36d | 2002-09-06 | 2002-10-28 |  | 119.75d |  |  |
| 294 | 1.2.4.2.2.1 | DVT Schematics & Gerber (v4) |  | 1d | 2002-09-06 | 2002-09-09 |  | 154.75d |  | start no earlier than 2002-09-06 |
| 295 | 1.2.4.2.2.2 | DVT BOM & AVL (v4) |  | 1d | 2002-09-06 | 2002-09-09 |  | 154.75d |  | start no earlier than 2002-09-06 |
| 296 | 1.2.4.2.2.3 | DVT PCBA FP Sahara (4) |  | 1d | 2002-09-06 | 2002-09-09 |  | 149.75d | 0d | start no earlier than 2002-09-06 |
| 297 | 1.2.4.2.2.4 | DVT Compliance Test Report |  | 1w | 2002-09-09 | 2002-09-16 | 296 | 149.75d |  |  |
| 298 | 1.2.4.2.2.5 | DVT PCBA UB Pilot (50) |  | 1d | 2002-10-18 | 2002-10-21 |  | 119.75d | 0d | start no earlier than 2002-10-18 |
| 299 | 1.2.4.2.2.6 | DVT Compliance Test Report |  | 1w | 2002-10-21 | 2002-10-28 | 298 | 119.75d |  |  |
| 300 | 1.2.4.2.3 | **Industrializatin** |  | 84d | 2002-06-28 | 2002-10-25 |  | 120.75d |  |  |
| 301 | 1.2.4.2.3.1 | Production Process Plan - 1st pass |  | 1w | 2002-06-28 | 2002-07-05 |  | 159.75d | 5d | start no earlier than 2002-06-28 |
| 302 | 1.2.4.2.3.2 | Production Process Plan - TriHonor |  | 2w | 2002-07-12 | 2002-07-26 | 301 | 154.75d | 25d | start no earlier than 2002-07-12 |
| 303 | 1.2.4.2.3.3 | Production Process Plan - Final Plan |  | 1w | 2002-08-30 | 2002-09-09 | 302 | 129.75d | 0d | start no earlier than 2002-08-30 |
| 304 | 1.2.4.2.3.4 | Production Process Setup |  | 5w | 2002-09-09 | 2002-10-14 | 303 | 129.75d |  |  |
| 305 | 1.2.4.2.3.5 | Production Test Plan -1st cut |  | 1w | 2002-06-28 | 2002-07-05 |  | 139.75d | 10d | start no earlier than 2002-06-28 |
| 306 | 1.2.4.2.3.6 | Production Test Plan -development |  | 6w | 2002-07-19 | 2002-08-30 | 305 | 129.75d | 0d | start no earlier than 2002-07-19 |
| 307 | 1.2.4.2.3.7 | Production Test Plan -Final Review |  | 1w | 2002-08-30 | 2002-09-09 | 306 | 129.75d | 0d |  |
| 308 | 1.2.4.2.3.8 | Production Tester Setup |  | 5w | 2002-09-09 | 2002-10-14 | 307 | 129.75d |  |  |
| 309 | 1.2.4.2.3.9 | PCBA Test Plan - 1st Cut |  | 1w | 2002-07-05 | 2002-07-12 |  | 169.75d | 5d | start no earlier than 2002-07-05 |
| 310 | 1.2.4.2.3.10 | PCBA Test Plan - FP plan |  | 1w | 2002-07-19 | 2002-07-26 | 309 | 164.75d | 5d | start no earlier than 2002-07-19 |
| 311 | 1.2.4.2.3.11 | PCBA Test Plan - final plan |  | 1w | 2002-08-02 | 2002-08-09 | 310 | 159.75d | 24d | start no earlier than 2002-08-02 |
| 312 | 1.2.4.2.3.12 | ICT Fixture & Program |  | 3w | 2002-09-13 | 2002-10-04 | 311 | 135.75d |  | start no earlier than 2002-09-13 |
| 313 | 1.2.4.2.3.13 | Fucntional Tester |  | 3w | 2002-09-13 | 2002-10-04 |  | 134.75d | 0d | start no earlier than 2002-09-13 |
| 314 | 1.2.4.2.3.14 | Commision PCBA Testers |  | 1d | 2002-10-04 | 2002-10-07 | 313 | 134.75d |  |  |
| 315 | 1.2.4.2.3.15 | QC/QA Plan - 1st cut |  | 1w | 2002-07-05 | 2002-07-12 |  | 189.75d | 35d | start no earlier than 2002-07-05 |
| 316 | 1.2.4.2.3.16 | QC/QA Plan - final plan |  | 1w | 2002-08-30 | 2002-09-09 | 315 | 154.75d |  | start no earlier than 2002-08-30 |
| 317 | 1.2.4.2.3.17 | Vendor RFQ A |  | 1w | 2002-06-28 | 2002-07-05 |  | 194.75d | 44d | start no earlier than 2002-06-28 |
| 318 | 1.2.4.2.3.18 | Vendor RFQ B |  | 1w | 2002-09-06 | 2002-09-13 | 317 | 150.75d |  | start no earlier than 2002-09-06 |
| 319 | 1.2.4.2.3.19 | Safety Regualtion Test & Cert. |  | 12w | 2002-07-12 | 2002-10-07 |  | 134.75d |  | start no earlier than 2002-07-12 |
| 320 | 1.2.4.2.3.20 | DVT Reliability Test |  | 1w | 2002-10-18 | 2002-10-25 |  | 120.75d |  | start no earlier than 2002-10-18 |

| ID | WBS | Task | Duration | Start | Finish | Predecessors | Total slack | Free slack | Constraint |
| --- | --- | --- | --- | --- | --- | --- | --- | --- | --- |
| 321 | 1.2.4.2.4 | **CR** | 161.75d? | 2002-06-28 | 2003-02-14 |  | 43d |  |  |
| 322 | 1.2.4.2.4.1 | Final Drawing Release Form | 1d | 2003-01-14 | 2003-01-15 | 182 | 65.5d |  | start no earlier than 2002-06-28 |
| 323 | 1.2.4.2.4.2 | Final Tool Release Form | 1d? | 2002-06-28 | 2002-07-01 |  | 203.75d |  | start no earlier than 2002-06-28 |
| 324 | 1.2.4.2.4.3 | Final Schematic & Gerber Release | 1d? | 2003-02-13 | 2003-02-14 | 64 | 43d |  | start no earlier than 2002-06-28 |
| 325 | 1.2.4.2.4.4 | Final PCBA BOM Release | 1d? | 2003-02-13 | 2003-02-14 | 64 | 43d |  |  |
| 326 | 1.2.4.2.4.5 | Final Firmware Release | 1d? | 2002-12-24 | 2002-12-26 | 39 | 79d |  |  |
| 327 | 1.2.4.2.4.6 | Production Process Flow & Instruction | 63.88d? | 2002-07-08 | 2002-10-04 |  | 134.88d |  | finish no earlier than 2002-10-04 |
| 328 | 1.2.4.2.4.7 | Production Test Flow & Instruction | 63.88d? | 2002-07-08 | 2002-10-04 |  | 134.88d |  | finish no earlier than 2002-10-04 |
| 329 | 1.2.4.2.4.8 | QC/QA Flow & Instruction | 1d? | 2002-10-24 | 2002-10-25 |  | 120.75d |  | start no earlier than 2002-10-24 |
| 330 | 1.2.4.3 | **PVT** | 65d? | 2002-09-03 | 2002-12-04 |  | 93.88d |  |  |
| 331 | 1.2.4.3.1 | **Mechanical** | 1d? | 2002-09-16 | 2002-09-17 |  | 148.75d |  |  |
| 332 | 1.2.4.3.1.1 | PVT Samples | 1d? | 2002-09-16 | 2002-09-17 |  | 148.75d |  | start no earlier than 2002-09-16 |
| 333 | 1.2.4.3.2 | **Electrical** | 1d? | 2002-09-16 | 2002-09-17 |  | 148.75d |  |  |
| 334 | 1.2.4.3.2.1 | PVT Samples (Pilot Run) | 1d? | 2002-09-16 | 2002-09-17 |  | 148.75d |  | start no earlier than 2002-09-16 |
| 335 | 1.2.4.3.2.2 | PVT Comliance | 1d? | 2002-09-16 | 2002-09-17 |  | 148.75d |  | start no earlier than 2002-09-16 |
| 336 | 1.2.4.3.3 | **Industrialization** | 1d? | 2002-09-16 | 2002-09-17 |  | 148.75d |  |  |
| 337 | 1.2.4.3.3.1 | Process & Test Setup | 1d? | 2002-09-16 | 2002-09-17 |  | 148.75d |  | start no earlier than 2002-09-16 |
| 338 | 1.2.4.3.3.2 | Production/Yield Commissioning | 1d? | 2002-09-16 | 2002-09-17 |  | 148.75d |  | start no earlier than 2002-09-16 |
| 339 | 1.2.4.3.4 | **Purchase** | 65d? | 2002-09-03 | 2002-12-04 |  | 93.88d |  |  |
| 340 | 1.2.4.3.4.1 | Shipping CD | 1d? | 2002-09-16 | 2002-09-17 |  | 148.75d |  | start no earlier than 2002-09-16 |
| 341 | 1.2.4.3.4.2 | **Remote Control** | 65d | 2002-09-03 | 2002-12-04 | 252 | 93.88d |  |  |
| 342 | 1.2.4.3.4.2.1 | Place order | 2d | 2002-09-03 | 2002-09-04 |  | 93.88d | 0d |  |
| 343 | 1.2.4.3.4.2.2 | Art Review | 2w | 2002-09-05 | 2002-09-18 | 342 | 93.88d | 0d |  |
| 344 | 1.2.4.3.4.2.3 | First Samples (5) | 5w | 2002-09-19 | 2002-10-23 | 343 | 93.88d | 0d |  |
| 345 | 1.2.4.3.4.2.4 | FA Review | 3d | 2002-10-24 | 2002-10-28 | 344 | 93.88d | 0d |  |
| 346 | 1.2.4.3.4.2.5 | First 50 | 2w | 2002-10-29 | 2002-11-11 | 345 | 93.88d | 0d |  |
| 347 | 1.2.4.3.4.2.6 | Shipment of 50 | 3d | 2002-11-12 | 2002-11-14 | 346 | 105.88d |  |  |
| 348 | 1.2.4.3.4.2.7 | Full shipment of 5000 | 2w | 2002-11-12 | 2002-11-25 | 346 | 93.88d | 0d |  |
| 349 | 1.2.4.3.4.2.8 | Shipping of 5000 | 1w | 2002-11-26 | 2002-12-04 | 348 | 93.88d |  |  |
| 350 | 1.2.4.3.4.3 | LLT Components Buy (1k) > 8 wks | 1d? | 2002-09-16 | 2002-09-17 |  | 148.75d |  | start no earlier than 2002-09-16 |
| 351 | 1.2.4.3.4.4 | LLT Components (LCD) Buy (1k) | 1d? | 2002-09-16 | 2002-09-17 |  | 148.75d |  | start no earlier than 2002-09-16 |
| 352 | 1.2.4.3.4.5 | PO for MP 1000 units (Electrical) | 1d? | 2002-09-16 | 2002-09-17 |  | 148.75d |  | start no earlier than 2002-09-16 |
| 353 | 1.2.4.3.4.6 | PO for MP 1000 units (System) | 1d? | 2002-09-16 | 2002-09-17 |  | 148.75d |  | start no earlier than 2002-09-16 |

| ID | WBS | Task | Duration | Start | Finish | Total slack | Constraint |
| --- | --- | --- | --- | --- | --- | --- | --- |
| 354 | 1.2.4.4 | **MP Start** | 1d? | 2002-09-16 | 2002-09-17 | 148.75d |  |
| 355 | 1.2.4.4.1 | Maxx Production Start | 1d? | 2002-09-16 | 2002-09-17 | 148.75d | start no earlier than 2002-09-16 |
