# FP UB Sahara Dev and Prod schedule_82602

Schedule from MS Project, 2002-01-01 to 2003-06-30, costs in $.
iObjects

## Calendars

- Standard: Mon-Fri 08:00-12:00, 13:00-17:00; Sat-Sun off. Exceptions (off unless hours are given): 2002-09-02, 2002-11-28 to 2002-11-29, 2002-12-25.

## Resources

| Resource | Rate | Cost per use |
| --- | --- | --- |
| PM1 |  | 0.28 |
| EE1 |  |  |
| EE2 |  |  |
| Tech 1 |  |  |
| Lead |  |  |
| PM2 |  |  |
| SW1 |  |  |
| SW2 |  |  |
| ME1 | 115 |  |
| ME2 | 115 |  |
| GA1 | 27.5 |  |
| GA2 | 50 |  |
| GA3 | 115 |  |
| PM3 | 115 |  |
| PCB |  |  |
| PCBA |  |  |
| Route | 80 |  |
| MPE |  |  |
| MFE |  |  |
| P507001 |  |  |
| P507002 |  |  |
| P507003 |  |  |
| P507004 |  |  |
| P507005 |  |  |
| P507009 |  |  |
| P507010 |  |  |
| MFG1 |  |  |
| MFG2 |  |  |
| Fiori |  |  |
| Moeller |  |  |
| Fullplay |  |  |
| Profab |  |  |
| Tech 2 |  |  |
| OB507001 |  |  |
| OB507002 |  |  |
| OB507003 |  |  |
| OB507004 |  |  |
| OB507005 |  |  |
| OB507006 |  |  |
| OB507007 |  |  |
| OB507008 |  |  |
| Dynamark |  |  |
| Tuscarora |  |  |
| Audio Precision Tester |  |  |
| Seagate |  |  |
| Josh |  |  |

## Schedule

| ID | WBS | Task | Type | Duration | Start | Finish | Predecessors | Baseline start | Baseline finish | Baseline duration | Total slack | Free slack | Constraint | Resources | Work | Cost | Baseline cost |
| --- | --- | --- | --- | --- | --- | --- | --- | --- | --- | --- | --- | --- | --- | --- | --- | --- | --- |
| 1 | 1 | Fullplay Media Systems, Inc. | milestone | 0d | 2002-04-01 | 2002-04-01 |  | 2002-04-01 | 2002-04-01 | 0d | 321.5d |  | start no earlier than 2002-04-01 |  |  |  |  |
| 2 | 2 | Confidential Information | milestone | 0d | 2002-04-01 | 2002-04-01 |  | 2002-04-01 | 2002-04-01 | 0d | 321.5d |  | start no earlier than 2002-04-01 |  |  |  |  |
| 4 | 3 | **Sahara Program** |  | 385.5d? | 2002-01-01 | 2003-06-30 |  | 2002-01-01 | 2003-06-30 | 385.5d? | 0d |  |  |  | 4193.51h | 273,196.49 | 273,196.49 |
| 5 | 3.1 | **Marketing** |  | 138.75d? | 2002-08-15 | 2003-03-03 |  | 2002-08-15 | 2003-02-14 | 127.62d? | 17.5d |  |  |  |  |  |  |
| 6 | 3.1.1 | PRD |  | 1d? | 2002-08-15 | 2002-08-16 |  | 2002-08-15 | 2002-08-16 | 1d? | 222.5d |  | start no earlier than 2002-08-15 |  |  |  |  |
| 7 | 3.1.2 | **Accessories** |  | 36.12d? | 2002-08-27 | 2002-10-17 |  | 2002-08-27 | 2002-10-17 | 36.12d? | 9.62d |  |  |  |  |  |  |
| 8 | 3.1.2.1 | Review and Revise User Guide (DJ, FML, Remote, Netowrking, Web interface) |  | 1w | 2002-10-10 | 2002-10-17 | 251 | 2002-10-10 | 2002-10-17 | 1w | 179.5d |  |  |  |  |  |  |
| 9 | 3.1.2.2 | Review and Revise CD art |  | 1w | 2002-08-29 | 2002-09-06 | 269 | 2002-08-29 | 2002-09-06 | 1w | 108.5d | 0d |  |  |  |  |  |
| 10 | 3.1.2.3 | Review and Revise Packaging |  | 1w | 2002-08-29 | 2002-09-06 | 275 | 2002-08-29 | 2002-09-06 | 1w | 122.5d | 0d |  |  |  |  |  |
| 11 | 3.1.2.4 | Review and Revise Remote Spec |  | 1d? | 2002-08-27 | 2002-08-27 | 280 | 2002-08-27 | 2002-08-27 | 1d? | 129.62d | 0d |  |  |  |  |  |
| 12 | 3.1.3 | **Promotions Schedule** |  | 117.75d? | 2002-09-16 | 2003-03-03 |  | 2002-09-16 | 2003-02-14 | 106.62d? | 84.75d |  |  |  |  |  |  |
| 13 | 3.1.3.1 | Marketing Photo Shoot |  | 2d | 2002-09-27 | 2002-10-01 | 289 | 2002-09-27 | 2002-10-01 | 2d | 149.62d | 0d |  | P507001 |  |  |  |
| 14 | 3.1.3.2 | Ship to CES |  | 2d | 2002-10-01 | 2002-10-03 | 13 | 2002-10-01 | 2002-10-03 | 2d | 189.5d |  |  |  |  |  |  |
| 15 | 3.1.3.3 | **Begin Releasing units to Reviewers and Sales** |  | 54d? | 2002-09-16 | 2002-12-03 |  | 2002-09-16 | 2002-12-03 | 54d? | 148.5d |  |  |  |  |  |  |
| 16 | 3.1.3.3.1 | Shipping cd | milestone | 0d | 2002-10-02 | 2002-10-02 | 267 | 2002-10-02 | 2002-10-02 | 0d | 190.5d |  |  |  |  |  |  |
| 17 | 3.1.3.3.2 | Packaging | milestone | 0d | 2002-12-03 | 2002-12-03 | 178 | 2002-12-03 | 2002-12-03 | 0d | 148.5d |  |  |  |  |  |  |
| 18 | 3.1.3.3.3 | User guide | milestone | 0d | 2002-09-16 | 2002-09-16 | 249 | 2002-09-16 | 2002-09-16 | 0d | 202.5d |  |  |  |  |  |  |
| 19 | 3.1.3.3.4 | Proto 2 / -03-B | milestone | 0d | 2002-10-25 | 2002-10-25 | 292 | 2002-10-25 | 2002-10-25 | 0d | 172.75d |  |  |  |  |  |  |
| 20 | 3.1.3.3.5 | RC1 FW | milestone | 0d | 2002-11-18 | 2002-11-18 | 40 | 2002-11-01 | 2002-11-01 | 0d | 156.62d |  |  |  |  |  |  |
| 21 | 3.1.3.3.6 | Remote Control |  | 1d? | 2002-11-19 | 2002-11-19 | 40 | 2002-11-01 | 2002-11-04 | 1d? | 155.62d |  |  |  |  |  |  |
| 22 | 3.1.3.4 | CES | milestone | 6.88d? | 2003-02-21 | 2003-03-03 | 169, 267, 43, 250, 292 | 2003-02-05 | 2003-02-14 | 6.88d? | 84.75d |  | finish no earlier than 2003-01-10 |  |  |  |  |
| 23 | 3.2 | **Development** |  | 333.5d? | 2002-01-01 | 2003-04-17 |  | 2002-01-01 | 2003-04-17 | 333.5d? | 51d | 0d |  |  | 4193.51h | 271,096.49 | 271,096.49 |
| 24 | 3.2.1 | **Firmware** |  | 288.88d? | 2002-01-01 | 2003-02-13 |  | 2002-01-01 | 2003-01-29 | 277.75d? | 95.62d |  |  |  | 616h |  |  |
| 25 | 3.2.1.1 | DJ-C40 FW Dev |  | 120d | 2002-04-01 | 2002-09-17 |  | 2002-04-01 | 2002-09-17 | 120d | 200.5d |  | start no earlier than 2002-04-01 |  |  |  |  |

Notes:
- 21: alos needs 37 samples with final silkscreen

| ID | WBS | Task | Type | Duration | Start | Finish | Predecessors | Baseline start | Baseline finish | Baseline duration | Total slack | Free slack | Constraint | Resources | Work | Cost | Baseline cost |
| --- | --- | --- | --- | --- | --- | --- | --- | --- | --- | --- | --- | --- | --- | --- | --- | --- | --- |
| 26 | 3.2.1.2 | **Beta 1** |  | 70d | 2002-06-24 | 2002-10-01 |  | 2002-06-24 | 2002-10-01 | 70d | 39.5d | 29.88d |  |  |  |  |  |
| 27 | 3.2.1.2.1 | Release Beta 1 FW on DJ35 units |  | 34d | 2002-06-24 | 2002-08-09 |  | 2002-06-24 | 2002-08-09 | 34d | 30.5d | 5d | start no earlier than 2002-06-24 |  |  |  |  |
| 28 | 3.2.1.2.2 | Feature Complete | milestone | 0d | 2002-08-16 | 2002-08-16 | 27 | 2002-08-16 | 2002-08-16 | 0d | 25.5d | 0d | start no earlier than 2002-08-16 |  |  |  |  |
| 29 | 3.2.1.2.3 | SQA |  | 5w | 2002-08-16 | 2002-09-23 | 28 | 2002-08-16 | 2002-09-23 | 5w | 30.5d | 1d |  |  |  |  |  |
| 30 | 3.2.1.2.4 | FVT |  | 1w | 2002-09-24 | 2002-10-01 | 29, 249 | 2002-09-24 | 2002-10-01 | 1w | 29.5d |  | start no earlier than 2002-09-24 |  |  |  |  |
| 31 | 3.2.1.3 | CDDB Update |  | 2d | 2002-10-15 | 2002-10-17 |  | 2002-10-15 | 2002-10-17 | 2d | 178.5d |  | start no earlier than 2002-10-15 |  |  |  |  |
| 32 | 3.2.1.4 | Final Remote Control Sample for firmware (2 ) |  | 1d? | 2002-01-01 | 2002-01-02 |  | 2002-01-01 | 2002-01-02 | 1d? | 383.5d |  |  |  |  |  |  |
| 33 | 3.2.1.5 | SW receives (?) -03-A open boards for dev |  | 1d? | 2002-09-09 | 2002-09-10 | 60 | 2002-09-09 | 2002-09-10 | 1d? | 205.5d |  |  |  |  |  |  |
| 34 | 3.2.1.6 | hardware test release |  | 1w | 2002-09-10 | 2002-09-17 | 61 | 2002-09-10 | 2002-09-17 | 1w | 0d |  |  |  |  |  |  |
| 35 | 3.2.1.7 | Functionality Tests |  | 1d? | 2002-09-17 | 2002-09-18 | 34 | 2002-09-17 | 2002-09-18 | 1d? | 46.5d | 0d |  |  |  |  |  |
| 36 | 3.2.1.8 | Firmware Installer |  | 1d? | 2002-09-18 | 2002-09-19 | 35 | 2002-09-18 | 2002-09-19 | 1d? | 46.5d | 0d |  |  |  |  |  |
| 37 | 3.2.1.9 | Final Hardware Firmware |  | 1d? | 2002-09-19 | 2002-09-20 | 36 |  |  |  | 46.5d | 25.75d |  |  |  |  |  |
| 38 | 3.2.1.10 | **Release Candidate 1** |  | 35d | 2002-11-12 | 2003-01-02 | 26, 265, 292, 37, 306, 36 | 2002-10-25 | 2002-12-17 | 35d | 9.62d | 0d |  |  | 40h |  |  |
| 39 | 3.2.1.10.1 | Prepare Test pool for Candidate 1 |  | 5d | 2002-11-12 | 2002-11-18 |  | 2002-10-25 | 2002-11-01 | 5d | 9.62d | 0d |  | PM2 | 40h |  |  |
| 40 | 3.2.1.10.2 | Release Candidate 1 FW on Sahara proto 2 devices | milestone | 0d | 2002-11-18 | 2002-11-18 | 39 | 2002-11-01 | 2002-11-01 | 0d | 9.62d | 0d |  | PM2 |  |  |  |
| 41 | 3.2.1.10.3 | Candidate 1 Evaluation |  | 6w | 2002-11-19 | 2003-01-02 | 40 | 2002-11-01 | 2002-12-17 | 6w | 9.62d |  |  |  |  |  |  |
| 42 | 3.2.1.11 | CDDB Update |  | 2d | 2002-12-03 | 2002-12-05 |  | 2002-12-03 | 2002-12-05 | 2d | 29.5d | 8.75d | start no earlier than 2002-12-03 | PM2 | 16h |  |  |
| 43 | 3.2.1.12 | **Gold Release** |  | 30d | 2003-01-03 | 2003-02-13 | 38, 42 | 2002-12-17 | 2003-01-29 | 30d | 9.62d | 0d |  |  | 560h |  |  |
| 44 | 3.2.1.12.1 | Final Debug |  | 30d | 2003-01-03 | 2003-02-13 |  | 2002-12-17 | 2003-01-29 | 30d | 9.62d |  | start no earlier than 2002-11-01 | PM2 | 240h |  |  |
| 45 | 3.2.1.12.2 | Final Bootloader Image |  | 30d | 2003-01-03 | 2003-02-13 |  | 2002-12-17 | 2003-01-29 | 30d | 9.62d |  |  | PM2 | 240h |  |  |
| 46 | 3.2.1.12.3 | Final Shipping CD |  | 10d | 2003-01-03 | 2003-01-16 |  | 2002-12-17 | 2003-01-01 | 10d | 29.62d | 0d | start no earlier than 2002-12-02 | PM2 | 80h |  |  |
| 47 | 3.2.2 | **Electrical** |  | 163d? | 2002-05-20 | 2003-01-08 |  | 2002-05-20 | 2003-02-20 | 194.75d? | 45d |  |  |  | 416h | 18,872.5 | 18,872.5 |
| 48 | 3.2.2.1 | DJ35 PCB Build x52 |  | 23d | 2002-05-20 | 2002-06-20 |  | 2002-05-20 | 2002-06-20 | 23d | 262.5d |  | start no earlier than 2002-05-20 |  |  |  |  |
| 49 | 3.2.2.2 | UB BOM feedback |  | 23d | 2002-05-20 | 2002-06-20 |  | 2002-05-20 | 2002-06-20 | 23d | 262.5d |  | start no earlier than 2002-05-20 |  |  |  |  |

Notes:
- 32: silkscreen not important, get samples of remote with shipping codes.
- 36: dependencies with manufacturability

| ID | WBS | Task | Type | Duration | Start | Finish | Predecessors | Baseline start | Baseline finish | Baseline duration | Total slack | Free slack | Constraint | Resources | Work | Cost | Baseline cost |
| --- | --- | --- | --- | --- | --- | --- | --- | --- | --- | --- | --- | --- | --- | --- | --- | --- | --- |
| 50 | 3.2.2.3 | **FP Build PCB-03-A** |  | 35d? | 2002-07-22 | 2002-09-10 |  | 2002-07-22 | 2002-09-10 | 35d? | 0d |  |  |  | 400h | 10,551.2 | 10,551.2 |
| 51 | 3.2.2.3.1 | FP Route PCB-03-A |  | 4d | 2002-07-22 | 2002-07-26 |  | 2002-07-22 | 2002-07-26 | 4d | 0d |  | start no earlier than 2002-07-22 |  |  |  |  |
| 52 | 3.2.2.3.2 | Review Placement |  | 1d | 2002-07-26 | 2002-07-29 | 51 | 2002-07-26 | 2002-07-29 | 1d | 0d |  |  |  |  |  |  |
| 53 | 3.2.2.3.3 | Paradigm Critical Route |  | 2d | 2002-07-29 | 2002-07-31 | 52 | 2002-07-29 | 2002-07-31 | 2d | 0d |  |  |  |  |  |  |
| 54 | 3.2.2.3.4 | FP Critical Route Review |  | 1d | 2002-07-31 | 2002-08-01 | 53 | 2002-07-31 | 2002-08-01 | 1d | 0d |  |  |  |  |  |  |
| 55 | 3.2.2.3.5 | FP Design Changes |  | 2d | 2002-08-01 | 2002-08-05 | 54 | 2002-08-01 | 2002-08-05 | 2d | 0d |  |  |  |  |  |  |
| 56 | 3.2.2.3.6 | Paradigm Final Route |  | 2d | 2002-08-05 | 2002-08-07 | 55 | 2002-08-05 | 2002-08-07 | 2d | 0d |  |  |  |  |  |  |
| 57 | 3.2.2.3.7 | Review Final Route |  | 4d | 2002-08-07 | 2002-08-13 | 56 | 2002-08-07 | 2002-08-13 | 4d | 0d |  |  |  |  |  |  |
| 58 | 3.2.2.3.8 | FP MB RTFAB-03-A (50) |  | 3d | 2002-08-13 | 2002-08-16 | 57 | 2002-08-13 | 2002-08-16 | 3d | 0d |  |  | PCB |  | 9,210 | 9,210 |
| 59 | 3.2.2.3.9 | FP MB RTASY-03-A (8) |  | 5d | 2002-08-16 | 2002-08-23 | 58 | 2002-08-16 | 2002-08-23 | 5d | 0d |  | start no earlier than 2002-08-16 | PCBA |  | 1,341.2 | 1,341.2 |
| 60 | 3.2.2.3.10 | FP bare board HWEVT (open boards) |  | 10d | 2002-08-23 | 2002-09-09 | 59 | 2002-08-23 | 2002-09-09 | 10d | 0d |  |  | EE1; EE2; Tech 1; Tech 2; Lead; OB507001; OB507002; OB507003; OB507004; OB507005; OB507006; OB507007; OB507008 | 400h |  |  |
| 61 | 3.2.2.3.11 | Open boards to SW |  | 1d? | 2002-09-09 | 2002-09-10 | 60 | 2002-09-09 | 2002-09-10 | 1d? | 0d |  |  |  |  |  |  |
| 62 | 3.2.2.4 | **FP Build PCB-03-B** |  | 23d | 2002-09-10 | 2002-10-11 | 50 | 2002-09-10 | 2002-10-11 | 23d | 17d | 0d |  |  | 16h | 8,321.3 | 8,321.3 |
| 63 | 3.2.2.4.1 | FP Route PCB-03-B |  | 5d | 2002-09-10 | 2002-09-17 |  | 2002-09-10 | 2002-09-17 | 5d | 17d | 0d |  | Route [40%] | 16h | 1,280 | 1,280 |
| 64 | 3.2.2.4.2 | FP RTFAB-03-B |  | 3d | 2002-09-17 | 2002-09-20 | 63 | 2002-09-17 | 2002-09-20 | 3d | 17d | 0d |  | PCB |  |  |  |
| 65 | 3.2.2.4.3 | FP RTASY-03-B |  | 5d | 2002-09-20 | 2002-09-27 | 64 | 2002-09-20 | 2002-09-27 | 5d | 17d | 0d |  | PCBA |  | 7,041.3 | 7,041.3 |
| 66 | 3.2.2.4.4 | FP HWEVT (4 open boards) |  | 10d | 2002-09-27 | 2002-10-11 | 65 | 2002-09-27 | 2002-10-11 | 10d | 17d |  |  |  |  |  |  |
| 67 | 3.2.2.5 | FP HW DVT |  | 20d | 2002-10-25 | 2002-11-22 | 62, 292 | 2002-10-25 | 2002-11-22 | 20d | 12.25d |  |  |  |  |  |  |
| 68 | 3.2.2.6 | **FP Build PCB-04-A** |  | 13d | 2002-12-13 | 2003-01-02 | 67, 200, 37 | 2003-01-29 | 2003-02-17 | 13d | 43.5d | 0d |  |  |  |  |  |
| 69 | 3.2.2.6.1 | FP Route -04-A |  | 5d | 2002-12-13 | 2002-12-20 |  | 2003-01-29 | 2003-02-05 | 5d | 43.5d | 0d |  |  |  |  |  |
| 70 | 3.2.2.6.2 | FP RTFAB-04-A |  | 3d | 2002-12-20 | 2002-12-26 | 69 | 2003-02-05 | 2003-02-10 | 3d | 43.5d | 0d |  |  |  |  |  |
| 71 | 3.2.2.6.3 | FP RTASY-04-A |  | 5d | 2002-12-26 | 2003-01-02 | 70 | 2003-02-10 | 2003-02-17 | 5d | 43.5d |  |  |  |  |  |  |
| 72 | 3.2.2.7 | HW DVT -04-A |  | 3d | 2003-01-02 | 2003-01-07 | 68 | 2003-02-17 | 2003-02-20 | 3d | 123.5d | 0d |  |  |  |  |  |
| 73 | 3.2.2.8 | **Functional Test Fixture (FTF)** |  | 60d? | 2002-10-11 | 2003-01-08 | 62 | 2002-10-11 | 2003-01-08 | 60d? | 122.5d |  |  |  |  |  |  |
| 74 | 3.2.2.8.1 | Software Design Requirements |  | 2w | 2002-10-11 | 2002-10-25 |  | 2002-10-11 | 2002-10-25 | 2w | 171.5d | 0d |  |  |  |  |  |
| 75 | 3.2.2.8.2 | Electrical Design Requirements |  | 2w | 2002-10-11 | 2002-10-25 |  | 2002-10-11 | 2002-10-25 | 2w | 122.5d | 0d |  |  |  |  |  |
| 76 | 3.2.2.8.3 | Mechanical Design Requirements |  | 2w | 2002-10-11 | 2002-10-25 |  | 2002-10-11 | 2002-10-25 | 2w | 122.5d | 0d |  |  |  |  |  |
| 77 | 3.2.2.8.4 | Software Development |  | 1d? | 2002-10-25 | 2002-10-28 | 74 | 2002-10-25 | 2002-10-28 | 1d? | 171.5d |  |  |  |  |  |  |
| 78 | 3.2.2.8.5 | Electrical Development |  | 8w | 2002-10-25 | 2002-12-24 | 75 | 2002-10-25 | 2002-12-24 | 8w | 122.5d | 0d |  |  |  |  |  |
| 79 | 3.2.2.8.6 | Mechanical Development |  | 8w | 2002-10-25 | 2002-12-24 | 76 | 2002-10-25 | 2002-12-24 | 8w | 122.5d | 0d |  |  |  |  |  |
| 80 | 3.2.2.8.7 | FTF EVT |  | 1w | 2002-12-24 | 2003-01-01 | 78, 79 | 2002-12-24 | 2003-01-01 | 1w | 122.5d | 0d |  |  |  |  |  |
| 81 | 3.2.2.8.8 | FTF DVT |  | 1w | 2003-01-01 | 2003-01-08 | 80 | 2003-01-01 | 2003-01-08 | 1w | 122.5d | 0d |  |  |  |  |  |
| 82 | 3.2.2.8.9 | Release Final FTF | milestone | 0d | 2003-01-08 | 2003-01-08 | 81 | 2003-01-08 | 2003-01-08 | 0d | 122.5d |  |  |  |  |  |  |

Notes:
- 60: Decision to Build B
- 67: Josh and Bruce need to prepare DVT test plan / How many units need? 1 lab queen.

| ID | WBS | Task | Type | Duration | Start | Finish | Predecessors | Baseline start | Baseline finish | Baseline duration | Total slack | Free slack | Constraint | Resources | Work | Cost | Baseline cost |
| --- | --- | --- | --- | --- | --- | --- | --- | --- | --- | --- | --- | --- | --- | --- | --- | --- | --- |
| 83 | 3.2.3 | **Mechanical** |  | 256.5d? | 2002-04-18 | 2003-04-17 |  | 2002-04-18 | 2003-04-17 | 256.5d? | 0.62d |  |  | PM3 [20%] | 1922.25h | 161,868.99 | 161,868.99 |
| 84 | 3.2.3.1 | **Phase 1 Planning** |  | 2d | 2002-04-18 | 2002-04-22 |  | 2002-04-18 | 2002-04-22 | 2d | 0.62d | 0d |  |  |  |  |  |
| 85 | 3.2.3.1.1 | Kickoff Meeting |  | 0.5d | 2002-04-18 | 2002-04-18 |  | 2002-04-18 | 2002-04-18 | 0.5d | 0.62d | 0d | start no earlier than 2002-04-18 |  |  |  |  |
| 86 | 3.2.3.1.2 | Detailed Schedule Build / Review |  | 1d | 2002-04-18 | 2002-04-19 | 85 | 2002-04-18 | 2002-04-19 | 1d | 0.62d | 0d |  |  |  |  |  |
| 87 | 3.2.3.1.3 | Design Change Requirements Review |  | 0.5d | 2002-04-19 | 2002-04-22 | 86 | 2002-04-19 | 2002-04-22 | 0.5d | 0.62d |  |  |  |  |  |  |
| 88 | 3.2.3.2 | **Phase 2A Product Engineering** |  | 59.88d | 2002-04-22 | 2002-07-12 | 84 | 2002-04-22 | 2002-07-12 | 59.88d | 0.62d |  |  |  |  |  |  |
| 89 | 3.2.3.2.1 | Brainstorm Engineering Strategies |  | 0.25d | 2002-04-22 | 2002-04-22 |  | 2002-04-22 | 2002-04-22 | 0.25d | 0.62d | 0d |  |  |  |  |  |
| 90 | 3.2.3.2.2 | CD Sourcing and Research, Trip Prep |  | 6d | 2002-04-22 | 2002-04-30 | 89 | 2002-04-22 | 2002-04-30 | 6d | 0.62d |  |  |  |  |  |  |
| 91 | 3.2.3.2.3 | Asian Production Partner Trip and Download |  | 6d | 2002-05-01 | 2002-05-08 | 90 | 2002-05-01 | 2002-05-08 | 6d | 0d |  | must start on 2002-05-01 |  |  |  |  |
| 92 | 3.2.3.2.4 | Engineering and CAD work - 1st rev production |  | 12d | 2002-05-09 | 2002-05-24 | 91 | 2002-05-09 | 2002-05-24 | 12d | 25.62d | 0d |  |  |  |  |  |
| 93 | 3.2.3.2.5 | Preliminary Files to Tooling Vendors | milestone | 0d | 2002-05-24 | 2002-05-24 | 92 | 2002-05-24 | 2002-05-24 | 0d | 25.62d | 0d |  |  |  |  |  |
| 94 | 3.2.3.2.6 | CM File Review |  | 5.5d | 2002-05-27 | 2002-06-03 | 93 | 2002-05-27 | 2002-06-03 | 5.5d | 25.62d | 0d |  |  |  |  |  |
| 95 | 3.2.3.2.7 | Conference Call with CM (Feedback) |  | 0.5d | 2002-06-03 | 2002-06-03 | 94 | 2002-06-03 | 2002-06-03 | 0.5d | 25.62d | 0d |  |  |  |  |  |
| 96 | 3.2.3.2.8 | Engineering and CAD - 2nd rev (refinements, second level) |  | 10d | 2002-06-04 | 2002-06-17 | 95 | 2002-06-04 | 2002-06-17 | 10d | 25.62d | 9d |  |  |  |  |  |
| 97 | 3.2.3.2.9 | Engineering and CAD - CD faceplate aligment redesign, etc. |  | 5d | 2002-07-01 | 2002-07-05 | 96, 110 | 2002-07-01 | 2002-07-05 | 5d | 16.62d | 0d |  |  |  |  |  |
| 98 | 3.2.3.2.10 | Engineering and CAD - final venting, rack ears, file tweaks / reviews, etc. |  | 5d | 2002-07-08 | 2002-07-12 | 97 | 2002-07-08 | 2002-07-12 | 5d | 245.62d |  |  |  |  |  |  |
| 99 | 3.2.3.3 | **Phase 2B Thermal / Acoustic Baseline Testing** |  | 19d | 2002-05-09 | 2002-06-04 |  | 2002-05-09 | 2002-06-04 | 19d | 273.62d |  |  |  |  |  |  |
| 100 | 3.2.3.3.1 | Test Planning and Prep - Thermal |  | 1.5d | 2002-05-09 | 2002-05-10 | 91 | 2002-05-09 | 2002-05-10 | 1.5d | 276.12d | 0d |  |  |  |  |  |
| 101 | 3.2.3.3.2 | Test Planning and Prep - Acoustic |  | 2d | 2002-05-09 | 2002-05-10 | 91 | 2002-05-09 | 2002-05-10 | 2d | 273.62d | 0d |  |  |  |  |  |
| 102 | 3.2.3.3.3 | Thermal Data Collection |  | 15d | 2002-05-10 | 2002-05-31 | 100 | 2002-05-10 | 2002-05-31 | 15d | 276.12d |  |  |  |  |  |  |
| 103 | 3.2.3.3.4 | Acoustic Data Collection |  | 15d | 2002-05-13 | 2002-05-31 | 101 | 2002-05-13 | 2002-05-31 | 15d | 273.62d | 0d |  |  |  |  |  |
| 104 | 3.2.3.3.5 | Summary Preparation |  | 2d | 2002-06-03 | 2002-06-04 | 103 | 2002-06-03 | 2002-06-04 | 2d | 273.62d |  |  |  |  |  |  |
| 105 | 3.2.3.4 | **Phase 3 Prototyping** |  | 168.62d? | 2002-06-03 | 2003-01-30 | 95 | 2002-06-03 | 2003-01-30 | 168.62d? | 30.62d |  |  |  | 1187.85h | 77,412.99 | 77,412.99 |
| 106 | 3.2.3.4.1 | **Prototyping Round 1** |  | 42.5d | 2002-06-03 | 2002-08-01 |  | 2002-06-03 | 2002-08-01 | 42.5d | 14.62d | 0d |  |  |  |  |  |
| 107 | 3.2.3.4.1.1 | Files to Proto Vendors | milestone | 0d | 2002-06-03 | 2002-06-03 |  | 2002-06-03 | 2002-06-03 | 0d | 30.62d | 0d |  |  |  |  |  |
| 108 | 3.2.3.4.1.2 | Quote Generation |  | 3d | 2002-06-04 | 2002-06-06 | 107 | 2002-06-04 | 2002-06-06 | 3d | 30.62d | 0d |  |  |  |  |  |
| 109 | 3.2.3.4.1.3 | Receive and Review Quotes |  | 2d | 2002-06-07 | 2002-06-10 | 108 | 2002-06-07 | 2002-06-10 | 2d | 30.62d | 14d |  |  |  |  |  |
| 110 | 3.2.3.4.1.4 | FINAL CD-ROM SPEC CONFIRMATION ON BTC | milestone | 0d | 2002-07-01 | 2002-07-01 | 109 | 2002-07-01 | 2002-07-01 | 0d | 16.62d | 0d | start no earlier than 2002-07-01 |  |  |  |  |
| 111 | 3.2.3.4.1.5 | Release FullPlay PO Numbers to Prototyper | milestone | 0d | 2002-07-05 | 2002-07-05 | 97, 110 | 2002-07-05 | 2002-07-05 | 0d | 16.62d | 0d |  |  |  |  |  |
| 112 | 3.2.3.4.1.6 | SLA / Sheet Metal Construction |  | 10d | 2002-07-08 | 2002-07-19 | 111 | 2002-07-08 | 2002-07-19 | 10d | 16.62d | 2d |  |  |  |  |  |
| 113 | 3.2.3.4.1.7 | Prototype Assembly Review and CAD Database Refinements |  | 6d | 2002-07-24 | 2002-07-31 | 112 | 2002-07-24 | 2002-07-31 | 6d | 14.62d | 0d | start no earlier than 2002-07-24 |  |  |  |  |
| 114 | 3.2.3.4.1.8 | Updated Files to Tooling Vendors |  | 0.5d | 2002-08-01 | 2002-08-01 | 113 | 2002-08-01 | 2002-08-01 | 0.5d | 14.62d |  |  |  |  |  |  |

| ID | WBS | Task | Type | Duration | Start | Finish | Predecessors | Baseline start | Baseline finish | Baseline duration | Total slack | Free slack | Constraint | Resources | Work | Cost | Baseline cost |
| --- | --- | --- | --- | --- | --- | --- | --- | --- | --- | --- | --- | --- | --- | --- | --- | --- | --- |
| 115 | 3.2.3.4.2 | **Prototyping Round 2** |  | 54.38d? | 2002-08-01 | 2002-10-17 | 106 | 2002-08-01 | 2002-10-17 | 54.38d? | 12.25d | 0d |  |  | 905.85h | 45,902.99 | 45,902.99 |
| 116 | 3.2.3.4.2.1 | CAD Tweaks (UL / CE / FCC Construction Review) |  | 4d | 2002-08-01 | 2002-08-07 |  | 2002-08-01 | 2002-08-07 | 4d | 14.62d | 0d |  | ME1 | 32h | 3,680 | 3,680 |
| 117 | 3.2.3.4.2.2 | FP - Electrical (Connector / Cable Changes | milestone | 0d | 2002-08-07 | 2002-08-07 | 116 | 2002-08-07 | 2002-08-07 | 0d | 14.62d | 0d |  |  |  |  |  |
| 118 | 3.2.3.4.2.3 | Updated Files to Prototyping Vendors |  | 1d | 2002-08-07 | 2002-08-08 | 117 | 2002-08-07 | 2002-08-08 | 1d | 14.62d | 3.62d |  | ME1 | 8h | 920 | 920 |
| 119 | 3.2.3.4.2.4 | **Plastics (37)** |  | 45.75d | 2002-08-14 | 2002-10-17 | 118 | 2002-08-14 | 2002-10-17 | 45.75d | 12.25d | 0d |  |  | 490h | 29,096 | 29,096 |
| 120 | 3.2.3.4.2.4.1 | Issue CAD drawings |  | 1d | 2002-08-14 | 2002-08-15 |  | 2002-08-14 | 2002-08-15 | 1d | 14.25d | 0d | start no earlier than 2002-08-14 | ME1 | 8h | 920 | 920 |
| 121 | 3.2.3.4.2.4.2 | Issue FP PO |  | 3d | 2002-08-15 | 2002-08-20 | 120 | 2002-08-15 | 2002-08-20 | 3d | 14.25d | 0d |  | PM1 | 24h |  |  |
| 122 | 3.2.3.4.2.4.3 | SLA |  | 5d | 2002-08-20 | 2002-08-27 | 121 | 2002-08-20 | 2002-08-27 | 5d | 14.25d | 0d |  | Moeller | 40h |  |  |
| 123 | 3.2.3.4.2.4.4 | SLA review |  | 0.25d | 2002-08-27 | 2002-08-27 | 122 | 2002-08-27 | 2002-08-27 | 0.25d | 14.25d | 0d |  | Moeller | 2h |  |  |
| 124 | 3.2.3.4.2.4.5 | 2 silicon molds |  | 2d | 2002-08-27 | 2002-08-29 | 123 | 2002-08-27 | 2002-08-29 | 2d | 14.25d | 0d |  | Moeller | 16h |  |  |
| 125 | 3.2.3.4.2.4.6 | First Cast review |  | 1d | 2002-08-29 | 2002-08-30 | 124 | 2002-08-29 | 2002-08-30 | 1d | 14.25d | 0d |  | ME1 | 8h | 920 | 920 |
| 126 | 3.2.3.4.2.4.7 | 1st Cast 20 sets |  | 3d | 2002-08-30 | 2002-09-05 | 125 | 2002-08-30 | 2002-09-05 | 3d | 14.25d | 0d |  | Moeller | 24h |  |  |
| 127 | 3.2.3.4.2.4.8 | Clean 20 sets |  | 3.5d | 2002-09-05 | 2002-09-10 | 126 | 2002-09-05 | 2002-09-10 | 3.5d | 14.25d | 0d |  | Moeller | 28h |  |  |
| 128 | 3.2.3.4.2.4.9 | Paint 20 sets |  | 3d | 2002-09-10 | 2002-09-13 | 127 | 2002-09-10 | 2002-09-13 | 3d | 14.25d | 0d |  | Moeller | 24h |  |  |
| 129 | 3.2.3.4.2.4.10 | Review 20 sets |  | 0.25d | 2002-09-13 | 2002-09-16 | 128 | 2002-09-13 | 2002-09-16 | 0.25d | 14.25d | 0d |  | ME1; PM1 | 4h | 230 | 230 |
| 130 | 3.2.3.4.2.4.11 | Silkscreen/pad print review |  | 0.25d | 2002-09-16 | 2002-09-16 | 129 | 2002-09-16 | 2002-09-16 | 0.25d | 14.25d | 0d |  | ME1; PM1 | 4h | 230 | 230 |
| 131 | 3.2.3.4.2.4.12 | Silkscreen/Pad Print 20 sets |  | 4d | 2002-09-16 | 2002-09-20 | 130 | 2002-09-16 | 2002-09-20 | 4d | 14.25d | 0d |  | Moeller | 32h |  |  |
| 132 | 3.2.3.4.2.4.13 | Prep for delivery |  | 0.25d | 2002-09-20 | 2002-09-20 | 131 | 2002-09-20 | 2002-09-20 | 0.25d | 14.25d | 0d |  | Moeller | 2h |  |  |
| 133 | 3.2.3.4.2.4.14 | Ship 1st 20 plastic sets | milestone | 0.25d | 2002-09-20 | 2002-09-20 | 132 | 2002-09-20 | 2002-09-20 | 0.25d | 14.25d | 3.25d |  | Moeller | 2h |  |  |
| 134 | 3.2.3.4.2.4.15 | 2nd cast 20 sets |  | 6d | 2002-09-10 | 2002-09-18 | 127 | 2002-09-10 | 2002-09-18 | 6d | 22d | 0d |  | Moeller | 48h |  |  |
| 135 | 3.2.3.4.2.4.16 | Clean 20 sets |  | 4d | 2002-09-18 | 2002-09-24 | 134 | 2002-09-18 | 2002-09-24 | 4d | 22d | 0d |  | Moeller | 32h |  |  |
| 136 | 3.2.3.4.2.4.17 | Paint 20 sets |  | 2d | 2002-09-24 | 2002-09-26 | 135 | 2002-09-24 | 2002-09-26 | 2d | 22d | 0d |  | Moeller | 16h |  |  |
| 137 | 3.2.3.4.2.4.18 | Review 20 sets |  | 0.25d | 2002-09-26 | 2002-09-27 | 136 | 2002-09-26 | 2002-09-27 | 0.25d | 22d | 0d |  | ME1; PM1 | 4h | 230 | 230 |
| 138 | 3.2.3.4.2.4.19 | Silkscreen/ pad print 20 sets |  | 4.5d | 2002-09-27 | 2002-10-03 | 137 | 2002-09-27 | 2002-10-03 | 4.5d | 22d | 0d |  | Moeller | 36h |  |  |
| 139 | 3.2.3.4.2.4.20 | Prep for delivery |  | 0.25d | 2002-10-03 | 2002-10-03 | 138 | 2002-10-03 | 2002-10-03 | 0.25d | 22d | 0d |  | Moeller | 2h |  |  |
| 140 | 3.2.3.4.2.4.21 | Ship 2nd 20 plastic sets | milestone | 0.25d | 2002-10-03 | 2002-10-04 | 139 | 2002-10-03 | 2002-10-04 | 0.25d | 22d |  |  | Moeller | 2h |  |  |
| 141 | 3.2.3.4.2.4.22 | review 5 jackplates at Moeller |  | 1d | 2002-09-17 | 2002-09-18 | 161 | 2002-09-17 | 2002-09-18 | 1d | 12d | 0d |  | ME1; PM1 | 16h | 920 | 920 |
| 142 | 3.2.3.4.2.4.23 | Paint 5 jackplates |  | 2d | 2002-09-18 | 2002-09-20 | 141 | 2002-09-18 | 2002-09-20 | 2d | 12d | 0d |  | Moeller | 16h |  |  |
| 143 | 3.2.3.4.2.4.24 | Review Jackplate silkscreen |  | 0.25d | 2002-09-20 | 2002-09-20 | 142 | 2002-09-20 | 2002-09-20 | 0.25d | 12d | 0d |  | ME1; PM1 | 4h | 230 | 230 |
| 144 | 3.2.3.4.2.4.25 | Silkscreen 5 jackplates |  | 2d | 2002-09-20 | 2002-09-24 | 143 | 2002-09-20 | 2002-09-24 | 2d | 12d | 1d |  | Moeller | 16h |  |  |
| 145 | 3.2.3.4.2.4.26 | review 5 chasssis and covers |  | 0.25d | 2002-09-23 | 2002-09-23 | 163 | 2002-09-23 | 2002-09-23 | 0.25d | 11d | 0d |  | ME1; PM1 | 4h | 230 | 230 |
| 146 | 3.2.3.4.2.4.27 | paint 5 chassis and covers |  | 2d | 2002-09-23 | 2002-09-25 | 145 | 2002-09-23 | 2002-09-25 | 2d | 11d | 0d |  | Moeller | 16h |  |  |
| 147 | 3.2.3.4.2.4.28 | Prep 1st 5 sets |  | 0.5d | 2002-09-25 | 2002-09-25 | 146, 144 | 2002-09-25 | 2002-09-25 | 0.5d | 11d | 0d |  | Moeller | 4h |  |  |
| 148 | 3.2.3.4.2.4.29 | Ship 1st 5 metal sets |  | 0.25d | 2002-09-25 | 2002-09-26 | 147 | 2002-09-25 | 2002-09-26 | 0.25d | 11d | 0d |  | Moeller | 2h |  |  |
| 149 | 3.2.3.4.2.4.30 | review 32 sets at Moeller |  | 0.25d | 2002-10-09 | 2002-10-09 | 166 | 2002-10-09 | 2002-10-09 | 0.25d | 12.25d | 0d |  | ME1; PM1 | 4h | 230 | 230 |
| 150 | 3.2.3.4.2.4.31 | Paint 32 sets |  | 2d | 2002-10-09 | 2002-10-11 | 149 | 2002-10-09 | 2002-10-11 | 2d | 12.25d | 0d |  | Moeller | 16h |  |  |
| 151 | 3.2.3.4.2.4.32 | Silkscreen jackplates |  | 2d | 2002-10-11 | 2002-10-15 | 150 | 2002-10-11 | 2002-10-15 | 2d | 12.25d | 0d |  | Moeller | 16h |  |  |
| 152 | 3.2.3.4.2.4.33 | Prep 37 sets |  | 2d | 2002-10-15 | 2002-10-17 | 151 | 2002-10-15 | 2002-10-17 | 2d | 12.25d | 0d |  | Moeller | 16h |  |  |
| 153 | 3.2.3.4.2.4.34 | Ship 2nd metal sets |  | 0.25d | 2002-10-17 | 2002-10-17 | 152 | 2002-10-17 | 2002-10-17 | 0.25d | 12.25d |  |  | Moeller | 2h |  |  |

| ID | WBS | Task | Type | Duration | Start | Finish | Predecessors | Baseline start | Baseline finish | Baseline duration | Total slack | Free slack | Constraint | Resources | Work | Cost | Baseline cost |
| --- | --- | --- | --- | --- | --- | --- | --- | --- | --- | --- | --- | --- | --- | --- | --- | --- | --- |
| 154 | 3.2.3.4.2.5 | **Sheet Metal Build (QTY 37)** |  | 39.25d? | 2002-08-14 | 2002-10-09 | 118 | 2002-08-14 | 2002-10-09 | 39.25d? | 11d |  |  | ME1 [7.6%] | 375.85h | 12,206.99 | 12,206.99 |
| 155 | 3.2.3.4.2.5.1 | Issue CAD drawings |  | 1d | 2002-08-14 | 2002-08-15 |  | 2002-08-14 | 2002-08-15 | 1d | 11d | 0d | start no earlier than 2002-08-14 | ME1 |  |  |  |
| 156 | 3.2.3.4.2.5.2 | Issue FP PO |  | 3d | 2002-08-15 | 2002-08-20 | 155 | 2002-08-15 | 2002-08-20 | 3d | 11d | 0d |  | PM1 | 24h |  |  |
| 157 | 3.2.3.4.2.5.3 | Programming |  | 2d | 2002-08-20 | 2002-08-22 | 156 | 2002-08-20 | 2002-08-22 | 2d | 11d | 0d |  | Profab | 16h |  |  |
| 158 | 3.2.3.4.2.5.4 | Tooling |  | 10d | 2002-08-22 | 2002-09-06 | 157 | 2002-08-22 | 2002-09-06 | 10d | 11d | 0d |  | Profab | 80h |  |  |
| 159 | 3.2.3.4.2.5.5 | Set-up |  | 1d | 2002-09-06 | 2002-09-09 | 158 | 2002-09-06 | 2002-09-09 | 1d | 11d | 0d |  | Profab | 8h |  |  |
| 160 | 3.2.3.4.2.5.6 | 1st 5 jackplates |  | 5d | 2002-09-09 | 2002-09-16 | 159 | 2002-09-09 | 2002-09-16 | 5d | 12d | 0d |  | Profab | 40h |  |  |
| 161 | 3.2.3.4.2.5.7 | ship 1st 5 jackplates |  | 1d | 2002-09-16 | 2002-09-17 | 160 | 2002-09-16 | 2002-09-17 | 1d | 12d | 0d |  | Profab | 8h |  |  |
| 162 | 3.2.3.4.2.5.8 | 1st 5 chassis, covers and racks |  | 9d | 2002-09-09 | 2002-09-20 | 159 | 2002-09-09 | 2002-09-20 | 9d | 11d | 0d |  | Profab | 72h |  |  |
| 163 | 3.2.3.4.2.5.9 | ship 1st 5 chassis, covers and racks |  | 1d | 2002-09-20 | 2002-09-23 | 162 | 2002-09-20 | 2002-09-23 | 1d | 11d | 0d |  | Profab | 8h |  |  |
| 164 | 3.2.3.4.2.5.10 | Set-up |  | 1d | 2002-09-23 | 2002-09-24 | 145 | 2002-09-23 | 2002-09-24 | 1d | 12.25d | 0d |  | Profab | 8h |  |  |
| 165 | 3.2.3.4.2.5.11 | 2nd 32 sets |  | 10d | 2002-09-24 | 2002-10-08 | 164 | 2002-09-24 | 2002-10-08 | 10d | 12.25d | 0d |  | Profab | 80h |  |  |
| 166 | 3.2.3.4.2.5.12 | Ship |  | 1d? | 2002-10-08 | 2002-10-09 | 165 | 2002-10-08 | 2002-10-09 | 1d? | 12.25d | 0d |  | Profab | 8h |  |  |
| 167 | 3.2.3.4.2.6 | Parts Received | milestone | 0d | 2002-10-17 | 2002-10-17 | 119 | 2002-10-17 | 2002-10-17 | 0d | 12.25d |  |  |  |  |  |  |
| 168 | 3.2.3.4.3 | Limited CAD Updates as Required |  | 5d | 2002-10-01 | 2002-10-08 | 13 | 2002-10-01 | 2002-10-08 | 5d | 149.62d | 8d |  | ME1 [50%]; P507001 | 20h | 2,300 | 2,300 |
| 169 | 3.2.3.4.4 | **Packaging Design** |  | 93.12d | 2002-07-22 | 2002-12-03 |  | 2002-07-22 | 2002-12-03 | 93.12d | 141.62d | 45.75d |  |  | 68h | 6,900 | 6,900 |
| 170 | 3.2.3.4.4.1 | Initial Quoting and Vendor Communication |  | 10d | 2002-07-22 | 2002-08-02 |  | 2002-07-22 | 2002-08-02 | 10d | 180.25d | 0d | start no earlier than 2002-07-22 | ME2 [25%] | 20h | 2,300 | 2,300 |
| 171 | 3.2.3.4.4.2 | Quote Review and Partner Selection |  | 3d | 2002-08-05 | 2002-08-07 | 170 | 2002-08-05 | 2002-08-07 | 3d | 180.25d | 7.12d |  | ME2 [50%] | 12h | 1,380 | 1,380 |
| 172 | 3.2.3.4.4.3 | Submission of CAD Files to Package Design |  | 0.5d | 2002-08-19 | 2002-08-19 | 116, 171 | 2002-08-19 | 2002-08-19 | 0.5d | 173.12d | 31.5d | start no earlier than 2002-08-19 | ME2 | 4h | 460 | 460 |
| 173 | 3.2.3.4.4.4 | Package Design Process |  | 10d | 2002-10-03 | 2002-10-17 | 172, 288 | 2002-10-03 | 2002-10-17 | 10d | 141.62d | 0d |  | ME2 [10%]; P507005 | 8h | 920 | 920 |
| 174 | 3.2.3.4.4.5 | Review of Package Design Solution |  | 1d | 2002-10-17 | 2002-10-18 | 173 | 2002-10-17 | 2002-10-18 | 1d | 141.62d | 0d |  | ME2 | 8h | 920 | 920 |
| 175 | 3.2.3.4.4.6 | Submit Package Art |  | 1d | 2002-09-12 | 2002-09-13 | 273 | 2002-09-12 | 2002-09-13 | 1d | 166.62d | 25d |  | PM1 | 8h |  |  |
| 176 | 3.2.3.4.4.7 | Iteration on Package Design |  | 5d | 2002-10-18 | 2002-10-25 | 168, 175, 174, 236, 237 | 2002-10-18 | 2002-10-25 | 5d | 141.62d | 0d |  | ME2 [10%] | 4h | 460 | 460 |
| 177 | 3.2.3.4.4.8 | Final Packaging Solution Documentation |  | 5d | 2002-10-25 | 2002-11-01 | 176 | 2002-10-25 | 2002-11-01 | 5d | 141.62d | 0d |  | ME2 [10%] | 4h | 460 | 460 |
| 178 | 3.2.3.4.4.9 | Final Packaging Samples (???????) |  | 4w | 2002-11-01 | 2002-12-03 | 177 | 2002-11-01 | 2002-12-03 | 4w | 141.62d | 0d |  |  |  |  |  |

Notes:
- 178: Could take 6 - 8 weeks to get samples

| ID | WBS | Task | Type | Duration | Start | Finish | Predecessors | Baseline start | Baseline finish | Baseline duration | Total slack | Free slack | Constraint | Resources | Work | Cost | Baseline cost |
| --- | --- | --- | --- | --- | --- | --- | --- | --- | --- | --- | --- | --- | --- | --- | --- | --- | --- |
| 179 | 3.2.3.4.5 | **Proto #3** |  | 33.5d | 2002-12-13 | 2003-01-30 | 200, 292, 67 | 2002-12-13 | 2003-01-30 | 33.5d | 0d |  |  |  | 194h | 22,310 | 22,310 |
| 180 | 3.2.3.4.5.1 | CAD Revisions |  | 5d | 2002-12-13 | 2002-12-20 |  | 2002-12-13 | 2002-12-20 | 5d | 0d |  |  | ME1 | 40h | 4,600 | 4,600 |
| 181 | 3.2.3.4.5.2 | Updated Files to Prototyping Vendors / Preliminary to Tooling |  | 1d | 2002-12-20 | 2002-12-23 | 180, 213 | 2002-12-20 | 2002-12-23 | 1d | 0d |  |  | ME1 | 8h | 920 | 920 |
| 182 | 3.2.3.4.5.3 | Release FullPlay PO Numbers to Prototypers | milestone | 0d | 2002-12-23 | 2002-12-23 | 181 | 2002-12-23 | 2002-12-23 | 0d | 0d |  |  |  |  |  |  |
| 183 | 3.2.3.4.5.4 | SLA Build (1 unit) |  | 5d | 2002-12-23 | 2002-12-31 | 182 | 2002-12-23 | 2002-12-31 | 5d | 0d |  |  | ME1 [25%] | 10h | 1,150 | 1,150 |
| 184 | 3.2.3.4.5.5 | Urethane Casting (based on SLA scale master) ( 5 units) |  | 15d | 2002-12-31 | 2003-01-21 | 183 | 2002-12-31 | 2003-01-21 | 15d | 0d |  |  | ME1 [25%] | 30h | 3,450 | 3,450 |
| 185 | 3.2.3.4.5.6 | Sheet Metal Build (QTY 5) |  | 15d | 2002-12-23 | 2003-01-14 | 182 | 2002-12-23 | 2003-01-14 | 15d | 5d |  |  | ME1 [25%] | 30h | 3,450 | 3,450 |
| 186 | 3.2.3.4.5.7 | Parts Received | milestone | 0d | 2003-01-21 | 2003-01-21 | 184, 185 | 2003-01-21 | 2003-01-21 | 0d | 0d |  |  |  |  |  |  |
| 187 | 3.2.3.4.5.8 | Proto #3 Run First Unit Assembly / Review |  | 2d | 2003-01-21 | 2003-01-23 | 186 | 2003-01-21 | 2003-01-23 | 2d | 0d |  |  | ME1; ME2 | 32h | 3,680 | 3,680 |
| 188 | 3.2.3.4.5.9 | Limited CAD Updates as Required |  | 5d | 2003-01-23 | 2003-01-30 | 187 | 2003-01-23 | 2003-01-30 | 5d | 0d |  |  | ME1 [50%] | 20h | 2,300 | 2,300 |
| 189 | 3.2.3.4.5.10 | Proto #3 Assembly Support |  | 5d | 2003-01-23 | 2003-01-30 | 187 | 2003-01-23 | 2003-01-30 | 5d | 106.5d |  |  | ME1 [50%] | 20h | 2,300 | 2,300 |
| 190 | 3.2.3.4.5.11 | Final CAD Release to Tooling Vendors |  | 0.5d | 2003-01-30 | 2003-01-30 | 213, 188 | 2003-01-30 | 2003-01-30 | 0.5d | 0d |  |  | ME1 | 4h | 460 | 460 |
| 191 | 3.2.3.5 | **Tooling and Production Ramp Support (TBD)** |  | 173.5d? | 2002-08-13 | 2003-04-17 |  | 2002-08-13 | 2003-04-17 | 173.5d | 51d |  |  |  | 324h | 37,260 | 37,260 |
| 192 | 3.2.3.5.1 | CTF Drawing Creation |  | 30d | 2002-08-13 | 2002-09-25 |  | 2002-08-13 | 2002-09-25 | 30d | 194.5d |  | start no earlier than 2002-08-13 | ME1 [10%] | 24h | 2,760 | 2,760 |
| 193 | 3.2.3.5.2 | CAD Release and PO to tooler |  | 1d? | 2002-12-20 | 2002-12-23 | 181SS |  |  |  | 2.5d | 0d |  |  |  |  |  |
| 194 | 3.2.3.5.3 | Tooling Design Start / Order Raw Mat'ls |  | 5w | 2002-12-23 | 2003-01-28 | 193 | 2002-12-23 | 2003-01-28 | 5w | 2.5d |  |  | ME1 [25%] | 50h | 5,750 | 5,750 |
| 195 | 3.2.3.5.4 | Tooling Finalization |  | 3w | 2003-01-30 | 2003-02-20 | 190, 194 | 2003-01-30 | 2003-02-20 | 3w | 0d |  |  | ME1 [25%] | 30h | 3,450 | 3,450 |
| 196 | 3.2.3.5.5 | First Articles |  | 5d | 2003-02-20 | 2003-02-27 | 195 | 2003-02-20 | 2003-02-27 | 5d | 0d |  |  | ME1 | 40h | 4,600 | 4,600 |
| 197 | 3.2.3.5.6 | Tooling Mods and Texturing |  | 2w | 2003-02-27 | 2003-03-13 | 196 | 2003-02-27 | 2003-03-13 | 2w | 0d |  |  | ME1 | 80h | 9,200 | 9,200 |
| 198 | 3.2.3.5.7 | Design Support for Manufacturing Ramp |  | 5w | 2003-03-13 | 2003-04-17 | 197 | 2003-03-13 | 2003-04-17 | 5w | 51d |  |  | ME1 [50%] | 100h | 11,500 | 11,500 |
| 199 | 3.2.4 | **Regulatory, Environmental and Reliability Testing** |  | 313.88d? | 2002-01-01 | 2003-03-20 |  | 2002-01-01 | 2003-03-19 | 312.75d? | 70.62d |  |  |  | 702h | 83,080 | 83,080 |
| 200 | 3.2.4.1 | **Preliminary** |  | 245d? | 2002-01-01 | 2002-12-13 |  | 2002-01-01 | 2002-12-13 | 245d? | 0d |  |  |  | 588h | 69,370 | 69,370 |
| 201 | 3.2.4.1.1 | **Planning and Preparation** |  | 154.5d | 2002-01-01 | 2002-08-05 |  | 2002-01-01 | 2002-08-05 | 154.5d | 55.5d | 41.5d |  |  | 44h | 4,510 | 4,510 |
| 202 | 3.2.4.1.1.1 | Initial Quoting and Vendor Communication |  | 5d | 2002-07-22 | 2002-07-26 |  | 2002-07-22 | 2002-07-26 | 5d | 54.12d | 0d | start no earlier than 2002-07-22 | ME2 [25%] | 10h | 1,150 | 1,150 |
| 203 | 3.2.4.1.1.2 | Quote Review and Partner Selection |  | 3d | 2002-07-29 | 2002-07-31 | 202 | 2002-07-29 | 2002-07-31 | 3d | 54.12d | 0.12d |  | ME2 [50%] | 12h | 1,380 | 1,380 |
| 204 | 3.2.4.1.1.3 | Preliminary Construction Review |  | 2.5d | 2002-08-01 | 2002-08-05 | 203 | 2002-08-01 | 2002-08-05 | 2.5d | 54d | 8.5d | start no earlier than 2002-08-01 | ME2 [60%] | 12h | 1,980 | 1,980 |
| 205 | 3.2.4.1.1.4 | Pass/ Fail Descriptions for Testing |  | 1w | 2002-01-01 | 2002-01-08 |  | 2002-01-01 | 2002-01-08 | 1w | 205d |  |  |  |  |  |  |
| 206 | 3.2.4.1.1.5 | Prepare Data Sheets, Schematics, BOM, gerber etc. for UL testing |  | 1w | 2002-01-01 | 2002-01-08 |  | 2002-01-01 | 2002-01-08 | 1w | 205d |  |  | EE1 [25%] | 10h |  |  |

| ID | WBS | Task | Duration | Start | Finish | Predecessors | Baseline start | Baseline finish | Baseline duration | Total slack | Free slack | Constraint | Resources | Work | Cost | Baseline cost |
| --- | --- | --- | --- | --- | --- | --- | --- | --- | --- | --- | --- | --- | --- | --- | --- | --- |
| 207 | 3.2.4.1.2 | **Acquire Testing Devices** | 1d? | 2002-01-01 | 2002-01-02 |  | 2002-01-01 | 2002-01-02 | 1d? | 222d | 198d |  | EE1 | 24h | 14,000 | 14,000 |
| 208 | 3.2.4.1.2.1 | Audio Precision measurement equipment | 1d? | 2002-01-01 | 2002-01-02 |  | 2002-01-01 | 2002-01-02 | 1d? | 222d |  |  | Lead | 8h | 14,000 | 14,000 |
| 209 | 3.2.4.1.2.2 | ESD Gun | 1d? | 2002-01-01 | 2002-01-02 |  | 2002-01-01 | 2002-01-02 | 1d? | 222d |  |  | Josh | 8h |  |  |
| 210 | 3.2.4.1.3 | **FCC** | 6d | 2002-10-03 | 2002-10-11 | 34 | 2002-10-03 | 2002-10-11 | 6d | 11d |  |  |  | 36h | 3,780 | 3,780 |
| 211 | 3.2.4.1.3.1 | EMI Proto 2 Compliance Testing w/ Rod Munro | 3d | 2002-10-03 | 2002-10-08 | 288 | 2002-10-03 | 2002-10-08 | 3d | 11d | 0d |  | ME2 [75%]; EE1 [75%]; P507002; P507003 | 24h | 3,090 | 3,090 |
| 212 | 3.2.4.1.3.2 | Summarize test results and feedback into design | 3d | 2002-10-08 | 2002-10-11 | 211 | 2002-10-08 | 2002-10-11 | 3d | 43d |  |  | ME2 [25%]; EE1 [25%] | 12h | 690 | 690 |
| 213 | 3.2.4.1.4 | **Safety** | 18d? | 2002-10-03 | 2002-10-29 | 201, 50, 288, 34 | 2002-10-03 | 2002-10-29 | 18d? | 14d |  |  |  | 380h | 13,800 | 13,800 |
| 214 | 3.2.4.1.4.1 | Identify Safety Warning Labels and Text Requirements | 1d? | 2002-10-03 | 2002-10-04 |  | 2002-10-03 | 2002-10-04 | 1d? | 48d |  |  | ME2 | 8h | 920 | 920 |
| 215 | 3.2.4.1.4.2 | UL Proto 2 Certification | 3w | 2002-10-08 | 2002-10-29 | 211 | 2002-10-08 | 2002-10-29 | 3w | 11d |  |  | ME2 [10%]; P507002; EE1; P507004 | 132h | 12,880 | 12,880 |
| 216 | 3.2.4.1.5 | **FDA** | 41d? | 2002-09-17 | 2002-11-13 | 34 | 2002-09-17 | 2002-11-13 | 41d? | 0d |  |  |  | 36h | 6,380 | 6,380 |
| 217 | 3.2.4.1.5.1 | 21 CFR Rules Review | 3w | 2002-09-17 | 2002-10-08 |  | 2002-09-17 | 2002-10-08 | 3w | 0d |  | start no earlier than 2002-08-08 | PM1 [10%]; ME2 [10%] | 12h |  |  |
| 218 | 3.2.4.1.5.2 | FDA Laser Consultation | 3w | 2002-10-08 | 2002-10-29 | 217 | 2002-10-08 | 2002-10-29 | 3w | 0d |  |  | PM1 [10%]; ME2 [10%] | 24h | 6,380 | 6,380 |
| 219 | 3.2.4.1.5.3 | Send sample to BTC | 1d? | 2002-10-29 | 2002-10-30 | 218 | 2002-10-29 | 2002-10-30 | 1d? | 0d |  |  |  |  |  |  |
| 220 | 3.2.4.1.5.4 | FDA Testing | 2w | 2002-10-30 | 2002-11-13 | 219, 211 | 2002-10-30 | 2002-11-13 | 2w | 0d |  |  | P507003 |  |  |  |
| 221 | 3.2.4.1.6 | **ESD** | 2d | 2002-10-08 | 2002-10-10 | 34 | 2002-10-08 | 2002-10-10 | 2d | 24d |  |  |  | 8h |  |  |
| 222 | 3.2.4.1.6.1 | ESD Proto 2 Testing | 2d | 2002-10-08 | 2002-10-10 | 288, 207, 211 | 2002-10-08 | 2002-10-10 | 2d | 24d |  |  | EE1 [50%]; P507004 | 8h |  |  |
| 223 | 3.2.4.1.7 | **Environmental** | 10d | 2002-11-13 | 2002-11-27 | 288, 216, 222, 215, 34 | 2002-11-13 | 2002-11-27 | 10d | 0d |  |  |  | 60h | 21,900 | 21,900 |
| 224 | 3.2.4.1.7.1 | Product - Thermal Mapping | 2w | 2002-11-13 | 2002-11-27 | 205 | 2002-11-13 | 2002-11-27 | 2w | 0d |  |  | ME2 [12.5%]; P507004; Dynamark | 10h | 1,150 | 1,150 |
| 225 | 3.2.4.1.7.2 | Product - Temperature | 2w | 2002-11-13 | 2002-11-27 | 205 | 2002-11-13 | 2002-11-27 | 2w | 0d |  |  | ME2 [12.5%]; P507004; Dynamark | 10h | 1,150 | 1,150 |
| 226 | 3.2.4.1.7.3 | Product - Altitude | 2w | 2002-11-13 | 2002-11-27 | 205 | 2002-11-13 | 2002-11-27 | 2w | 0d |  |  | ME2 [12.5%]; P507004; Dynamark | 10h | 1,150 | 1,150 |
| 227 | 3.2.4.1.7.4 | Product - Humidity | 2w | 2002-11-13 | 2002-11-27 | 205 | 2002-11-13 | 2002-11-27 | 2w | 0d |  |  | ME2 [12.5%]; P507004; Dynamark | 10h | 1,150 | 1,150 |
| 228 | 3.2.4.1.7.5 | Product - Vibration | 2w | 2002-11-13 | 2002-11-27 | 205 | 2002-11-13 | 2002-11-27 | 2w | 0d |  |  | ME2 [12.5%]; P507004; Dynamark | 10h | 1,150 | 1,150 |
| 229 | 3.2.4.1.7.6 | Product - Shock / Drop / Impact | 2w | 2002-11-13 | 2002-11-27 |  | 2002-11-13 | 2002-11-27 | 2w | 0d |  |  | ME2 [12.5%]; P507004; Dynamark | 10h | 1,150 | 1,150 |
| 230 | 3.2.4.1.8 | **Seagate Testing** | 10d | 2002-11-27 | 2002-12-13 | 223 | 2002-11-27 | 2002-12-13 | 10d | 0d |  |  |  |  | 5,000 | 5,000 |
| 231 | 3.2.4.1.8.1 | Various tests performed at Seagate labs | 2w | 2002-11-27 | 2002-12-13 |  | 2002-11-27 | 2002-12-13 | 2w | 0d |  |  | Seagate |  | 5,000 | 5,000 |

Notes:
- 218: $5000 fee an estimate for consulting and possible testing, reporting and certification

| ID | WBS | Task | Duration | Start | Finish | Predecessors | Baseline start | Baseline finish | Baseline duration | Total slack | Free slack | Constraint | Resources | Work | Cost | Baseline cost |
| --- | --- | --- | --- | --- | --- | --- | --- | --- | --- | --- | --- | --- | --- | --- | --- | --- |
| 232 | 3.2.4.2 | **Testing - Shipping and Packaging Solution (ISTA)** | 93d | 2002-07-29 | 2002-12-10 |  | 2002-07-29 | 2002-12-10 | 93d | 142.5d |  |  |  | 114h | 13,710 | 13,710 |
| 233 | 3.2.4.2.1 | Initial Quoting and Vendor Communication | 10d | 2002-07-29 | 2002-08-12 |  | 2002-07-29 | 2002-08-12 | 10d | 178.62d | 0d | start no earlier than 2002-07-29 | ME2 [25%] | 20h | 2,300 | 2,300 |
| 234 | 3.2.4.2.2 | Quote Review and Partner Selection | 3d | 2002-08-12 | 2002-08-15 | 233 | 2002-08-12 | 2002-08-15 | 3d | 178.62d | 0d |  | ME2 [50%] | 12h | 1,380 | 1,380 |
| 235 | 3.2.4.2.3 | Preliminary Informal Testing | 3d | 2002-08-15 | 2002-08-20 | 234 | 2002-08-15 | 2002-08-20 | 3d | 178.62d | 0d |  | ME2 [50%] | 12h | 1,380 | 1,380 |
| 236 | 3.2.4.2.4 | Mechanical Design Impact Revisions (In-House Results) | 5d | 2002-08-20 | 2002-08-27 | 235 | 2002-08-20 | 2002-08-27 | 5d | 178.62d | 37d |  | ME1 [50%] | 20h | 2,300 | 2,300 |
| 237 | 3.2.4.2.5 | Shipping / Packaging Design Impact Revisions (In-House Results) | 5d | 2002-08-20 | 2002-08-27 | 235 | 2002-08-20 | 2002-08-27 | 5d | 178.62d | 37d |  | ME2 [25%] | 10h | 1,150 | 1,150 |
| 238 | 3.2.4.2.6 | Formal ISTA Testing / Certification | 5d | 2002-12-03 | 2002-12-10 | 178 | 2002-12-03 | 2002-12-10 | 5d | 142.5d |  |  | ME2; Tuscarora | 40h | 5,200 | 5,200 |
| 239 | 3.2.4.3 | **Final Regulatory** | 20d? | 2003-02-21 | 2003-03-20 | 244, 200, 247, 297 | 2003-02-19 | 2003-03-19 | 20d? | 9.62d |  |  |  |  |  |  |
| 240 | 3.2.4.3.1 | Build Testing Models from production materials | 1d? | 2003-02-27 | 2003-02-28 | 196 | 2003-02-27 | 2003-02-28 | 1d? | 24d |  |  |  |  |  |  |
| 241 | 3.2.4.3.2 | Final FCC Certification | 2w | 2003-02-21 | 2003-03-06 |  | 2003-02-19 | 2003-03-05 | 2w | 19.62d |  |  |  |  |  |  |
| 242 | 3.2.4.3.3 | Final FDA 21 CFR laser certification | 2w | 2003-02-21 | 2003-03-06 |  | 2003-02-19 | 2003-03-05 | 2w | 9.62d | 0d |  |  |  |  |  |
| 243 | 3.2.4.3.4 | Final UL, cUL Certification | 2w | 2003-03-07 | 2003-03-20 | 242 | 2003-03-05 | 2003-03-19 | 2w | 9.62d |  |  |  |  |  |  |
| 244 | 3.2.4.4 | **Power Supply Certification** | 21d? | 2002-08-16 | 2002-09-17 |  | 2002-08-16 | 2002-09-17 | 21d? | 119.5d | 98.75d |  |  |  |  |  |
| 245 | 3.2.4.4.1 | Factory Approval and Vendor Qualification | 1d? | 2002-08-16 | 2002-08-19 |  | 2002-08-16 | 2002-08-19 | 1d? | 119.5d | 0d | start no earlier than 2002-08-16 |  |  |  |  |
| 246 | 3.2.4.4.2 | UL, cUL registrations | 4w | 2002-08-19 | 2002-09-17 | 245 | 2002-08-19 | 2002-09-17 | 4w | 119.5d |  |  |  |  |  |  |
| 247 | 3.2.5 | **Documentation and Art** | 197.88d? | 2002-05-15 | 2003-02-20 |  | 2002-05-15 | 2003-02-05 | 186.75d? | 9.62d | 0d |  |  | 304.47h | 3,135 | 3,135 |
| 248 | 3.2.5.1 | **Product Requirements** | 20d | 2002-08-16 | 2002-09-16 |  | 2002-08-16 | 2002-09-16 | 20d | 45.5d |  |  |  |  |  |  |
| 249 | 3.2.5.1.1 | DJ-C40 Product Requirements Document | 4w | 2002-08-16 | 2002-09-16 | 28 | 2002-08-16 | 2002-09-16 | 4w | 45.5d | 0d |  |  |  |  |  |
| 250 | 3.2.5.2 | **DJ-C40** | 130.88d? | 2002-08-16 | 2003-02-20 |  | 2002-08-16 | 2003-02-05 | 119.75d? | 9.62d | 0d |  |  | 168.47h | 2,145 | 2,145 |
| 251 | 3.2.5.2.1 | **User Guide** | 38d? | 2002-08-16 | 2002-10-10 | 28 | 2002-08-16 | 2002-10-10 | 38d? | 27.5d | 0d |  |  | 143.17h | 1,650 | 1,650 |
| 252 | 3.2.5.2.1.1 | Final DJ-C40 product graphics to graphic design | 0.06d? | 2002-09-03 | 2002-09-03 |  | 2002-09-03 | 2002-09-03 | 0.06d? | 29.44d | 0d | start no earlier than 2002-09-03 | PM1 | 0.5h |  |  |
| 253 | 3.2.5.2.1.2 | Update all graphics in User Guide with new / final design | 10d | 2002-09-03 | 2002-09-17 | 252 | 2002-09-03 | 2002-09-17 | 10d | 29.44d | 1.94d |  | GA1 [75%]; PM2 [20%] | 62.67h | 1,650 | 1,650 |
| 254 | 3.2.5.2.1.3 | **Update all Content** | 20d? | 2002-08-16 | 2002-09-16 |  | 2002-08-16 | 2002-09-16 | 20d? | 45.5d |  |  | PM2 [40%] | 80h |  |  |
| 255 | 3.2.5.2.1.3.1 | Regulatory message, Warnings, Disclaimers, Acknowlegements | 4w | 2002-08-16 | 2002-09-16 | 204 | 2002-08-16 | 2002-09-16 | 4w | 45.5d | 18d |  | PM1 [10%] | 16h |  |  |
| 256 | 3.2.5.2.1.3.2 | User guide | 1d? | 2002-08-16 | 2002-08-19 |  | 2002-08-16 | 2002-08-19 | 1d? | 64.5d |  |  |  |  |  |  |
| 257 | 3.2.5.2.1.3.3 | FML | 1d? | 2002-08-16 | 2002-08-19 |  | 2002-08-16 | 2002-08-19 | 1d? | 64.5d |  |  |  |  |  |  |
| 258 | 3.2.5.2.1.3.4 | Remote Control | 1d? | 2002-08-16 | 2002-08-19 |  | 2002-08-16 | 2002-08-19 | 1d? | 64.5d |  |  |  |  |  |  |
| 259 | 3.2.5.2.1.4 | Hire Tech Writer | 3w | 2002-08-28 | 2002-09-19 |  | 2002-08-28 | 2002-09-19 | 3w | 27.5d | 0d | start no earlier than 2002-08-28 |  |  |  |  |
| 260 | 3.2.5.2.1.5 | RC1 formatted User Guide | 3w | 2002-09-19 | 2002-10-10 | 253, 259 | 2002-09-19 | 2002-10-10 | 3w | 27.5d |  |  |  |  |  |  |

| ID | WBS | Task | Duration | Start | Finish | Predecessors | Baseline start | Baseline finish | Baseline duration | Total slack | Free slack | Constraint | Resources | Work | Cost | Baseline cost |
| --- | --- | --- | --- | --- | --- | --- | --- | --- | --- | --- | --- | --- | --- | --- | --- | --- |
| 261 | 3.2.5.2.2 | **Quick Start Guide** | 3.19d? | 2002-09-03 | 2002-09-06 |  | 2002-09-03 | 2002-09-06 | 3.19d? | 126.31d |  |  |  | 25.3h | 495 | 495 |
| 262 | 3.2.5.2.2.1 | Final DJ-C40 product graphics to graphic design | 0.06d? | 2002-09-03 | 2002-09-03 |  | 2002-09-03 | 2002-09-03 | 0.06d? | 126.31d | 0d | start no earlier than 2002-09-03 | PM1 | 0.5h |  |  |
| 263 | 3.2.5.2.2.2 | Update existing graphics with final design | 3d | 2002-09-03 | 2002-09-06 | 262 | 2002-09-03 | 2002-09-06 | 3d | 126.31d | 0d |  | GA1 [75%]; PM2 [20%] | 22.8h | 495 | 495 |
| 264 | 3.2.5.2.2.3 | Release candidate ready for review | 0.12d | 2002-09-06 | 2002-09-06 | 263 | 2002-09-06 | 2002-09-06 | 0.12d | 126.31d |  |  | PM1; PM2 | 2h |  |  |
| 265 | 3.2.5.2.3 | Release Candidate 1 | 1w | 2002-10-10 | 2002-10-17 | 255, 251 | 2002-10-10 | 2002-10-17 | 1w | 27.5d | 6.75d |  |  |  |  |  |
| 266 | 3.2.5.2.4 | Final User Guide | 1w | 2003-02-14 | 2003-02-20 | 43 | 2003-01-29 | 2003-02-05 | 1w | 9.62d |  |  |  |  |  |  |
| 267 | 3.2.5.3 | **Shipping CD Art and Text** | 30d? | 2002-08-20 | 2002-10-02 |  | 2002-08-20 | 2002-10-02 | 30d? | 108.5d | 0d |  |  | 57.4h | 385 | 385 |
| 268 | 3.2.5.3.1 | Complete CD art spec | 1w | 2002-08-20 | 2002-08-27 |  | 2002-08-20 | 2002-08-27 | 1w | 108.5d | 0d | start no earlier than 2002-08-20 | PM1 | 40h |  |  |
| 269 | 3.2.5.3.2 | First Draft of cd graphics | 2.5d | 2002-08-27 | 2002-08-29 | 268 | 2002-08-27 | 2002-08-29 | 2.5d | 108.5d | 0d |  | GA1 [50%]; PM1 [5%] | 9h | 220 | 220 |
| 270 | 3.2.5.3.3 | Second Draft of cd graphics | 1.5d | 2002-09-06 | 2002-09-10 | 9 | 2002-09-06 | 2002-09-10 | 1.5d | 108.5d | 0d |  | GA1 [50%] | 6h | 165 | 165 |
| 271 | 3.2.5.3.4 | Final approval | 1d? | 2002-09-10 | 2002-09-11 | 270 | 2002-09-10 | 2002-09-11 | 1d? | 108.5d | 0d |  |  |  |  |  |
| 272 | 3.2.5.3.5 | Order 50 Sample cds | 3w | 2002-09-11 | 2002-10-02 | 271 | 2002-09-11 | 2002-10-02 | 3w | 108.5d |  |  | PM1 [2%] | 2.4h |  |  |
| 273 | 3.2.5.4 | **Package Art** | 85d? | 2002-05-15 | 2002-09-12 |  | 2002-05-15 | 2002-09-12 | 85d? | 122.5d | 0d |  |  | 37.6h | 385 | 385 |
| 274 | 3.2.5.4.1 | Packaging Spec | 4w | 2002-05-15 | 2002-06-12 |  | 2002-05-15 | 2002-06-12 | 4w | 187.5d |  | start no earlier than 2002-05-15 | PM1 [10%] | 16h |  |  |
| 275 | 3.2.5.4.2 | 1st Draft of packaging art | 2.5d? | 2002-08-27 | 2002-08-29 |  | 2002-08-27 | 2002-08-29 | 2.5d? | 122.5d | 0d | start no earlier than 2002-08-27 | GA1 [50%]; PM1 [20%] | 14h | 275 | 275 |
| 276 | 3.2.5.4.3 | 2nd Draft of packaging graphics | 1d? | 2002-09-06 | 2002-09-09 | 10 | 2002-09-06 | 2002-09-09 | 1d? | 122.5d | 0d |  | GA1 [50%]; PM1 [20%] | 5.6h | 110 | 110 |
| 277 | 3.2.5.4.4 | Final Approval | 2.5d? | 2002-09-09 | 2002-09-12 | 276 | 2002-09-09 | 2002-09-12 | 2.5d? | 122.5d |  |  | PM1 [10%] | 2h |  |  |
| 278 | 3.2.5.5 | **Remote Control** | 15d | 2002-08-12 | 2002-08-30 |  | 2002-08-12 | 2002-08-30 | 15d | 9.62d | 0d |  |  | 41h | 220 | 220 |
| 279 | 3.2.5.5.1 | Remote Specification | 2w | 2002-08-12 | 2002-08-23 |  | 2002-08-12 | 2002-08-23 | 2w | 129.62d | 0d | finish no earlier than 2002-08-23 | PM1 [50%]; PM2 [18.8%] | 25h |  |  |
| 280 | 3.2.5.5.2 | 1st Draft of remote graphics | 1d | 2002-08-26 | 2002-08-26 | 279 | 2002-08-26 | 2002-08-26 | 1d | 129.62d | 0d |  | GA1 [50%]; PM2 [25%] | 6h | 110 | 110 |
| 281 | 3.2.5.5.3 | 2nd Draft of remote graphics | 1d | 2002-08-28 | 2002-08-28 | 11 | 2002-08-28 | 2002-08-28 | 1d | 129.62d | 0d |  | GA1 [50%]; PM2 [25%] | 6h | 110 | 110 |
| 282 | 3.2.5.5.4 | Final Release of remote graphics | 2d | 2002-08-29 | 2002-08-30 | 281 | 2002-08-29 | 2002-08-30 | 2d | 129.62d |  |  | PM1 [25%] | 4h |  |  |
| 283 | 3.2.6 | **Manufacturability** | 275d? | 2002-01-01 | 2003-01-27 |  | 2002-01-01 | 2003-02-19 | 292.75d? | 109.5d |  |  |  | 232.8h | 4,140 | 4,140 |
| 284 | 3.2.6.1 | **Box Assembly Plan** | 201d? | 2002-01-01 | 2002-10-10 |  | 2002-01-01 | 2002-10-10 | 201d? | 18d | 0d |  | MFE [10%] | 168.8h |  |  |
| 285 | 3.2.6.1.1 | Firmware Update and Flash Programming | 1d? | 2002-01-01 | 2002-01-02 |  | 2002-01-01 | 2002-01-02 | 1d? | 218d |  |  |  |  |  |  |
| 286 | 3.2.6.1.2 | Functionality test | 1d? | 2002-01-01 | 2002-01-02 |  | 2002-01-01 | 2002-01-02 | 1d? | 218d |  |  |  |  |  |  |
| 287 | 3.2.6.1.3 | Develop Assembly plan for PCA | 1w | 2002-10-03 | 2002-10-10 | 291 | 2002-10-03 | 2002-10-10 | 1w | 18d |  |  | MFE [20%] | 8h |  |  |

Notes:
- 274: UPC could be printed on box / model can be printed on boax / serial number must be a label.

| ID | WBS | Task | Duration | Start | Finish | Predecessors | Baseline start | Baseline finish | Baseline duration | Total slack | Free slack | Resources | Work | Cost | Baseline cost |
| --- | --- | --- | --- | --- | --- | --- | --- | --- | --- | --- | --- | --- | --- | --- | --- |
| 288 | 3.2.6.2 | **Early Assembly** | 5d | 2002-09-26 | 2002-10-03 | 133, 148, 50 | 2002-09-26 | 2002-10-03 | 5d | 11d | 0d |  | 8h |  |  |
| 289 | 3.2.6.2.1 | Assemble Unit P503001 | 1d | 2002-09-26 | 2002-09-27 |  | 2002-09-26 | 2002-09-27 | 1d | 12d | 0d |  |  |  |  |
| 290 | 3.2.6.2.2 | Assemble P503002 - P803005 | 3d | 2002-09-27 | 2002-10-02 | 289 | 2002-09-27 | 2002-10-02 | 3d | 12d |  |  |  |  |  |
| 291 | 3.2.6.2.3 | Revise Assembly Plan | 1w | 2002-09-26 | 2002-10-03 |  | 2002-09-26 | 2002-10-03 | 1w | 11d | 0d | MFE [20%] | 8h |  |  |
| 292 | 3.2.6.3 | **Proto 2 Assembly** | 6d | 2002-10-17 | 2002-10-25 | 62, 115, 284 | 2002-10-17 | 2002-10-25 | 6d | 12.25d | 0d |  | 56h | 4,140 | 4,140 |
| 293 | 3.2.6.3.1 | Proto #2 Run First Unit Assembly / Review | 1d | 2002-10-17 | 2002-10-18 |  | 2002-10-17 | 2002-10-18 | 1d | 12.25d | 0d | ME1; ME2 | 16h | 1,840 | 1,840 |
| 294 | 3.2.6.3.2 | Proto #2 Assembly Support | 5d | 2002-10-18 | 2002-10-25 | 293 | 2002-10-18 | 2002-10-25 | 5d | 12.25d | 0d | ME1 [50%] | 20h | 2,300 | 2,300 |
| 295 | 3.2.6.3.3 | Unit Assembly at PCA | 5d | 2002-10-18 | 2002-10-25 | 293 | 2002-10-18 | 2002-10-25 | 5d | 12.25d |  |  |  |  |  |
| 296 | 3.2.6.3.4 | Revise Assembly Doc and advise Mech design proto 3 | 1w | 2002-10-17 | 2002-10-24 |  | 2002-10-17 | 2002-10-24 | 1w | 13.25d |  | MFE [50%] | 20h |  |  |
| 297 | 3.2.6.4 | **Proto 3 Assembly** | 275d | 2002-01-01 | 2003-01-27 |  | 2002-01-01 | 2003-02-19 | 292.75d | 28.5d | 18.88d |  |  |  |  |
| 298 | 3.2.6.4.1 | Build 5 units | 2d | 2003-01-23 | 2003-01-27 | 68, 187 | 2003-02-17 | 2003-02-19 | 2d | 28.5d |  |  |  |  |  |
| 299 | 3.2.6.4.2 | Revise Final Assembly Plan | 3d | 2002-01-01 | 2002-01-04 |  | 2002-01-01 | 2002-01-04 | 3d | 300.5d |  |  |  |  |  |
| 300 | 3.2.6.5 | DFTVT | 4w | 2002-10-25 | 2002-11-22 | 294 | 2002-10-25 | 2002-11-22 | 4w | 151.75d |  |  |  |  |  |
| 301 | 3.2.6.6 | Box Test Plan | 2w | 2002-10-10 | 2002-10-24 | 284 | 2002-10-10 | 2002-10-24 | 2w | 153.5d | 0d |  |  |  |  |
| 302 | 3.2.6.7 | DFTVT | 4w | 2002-10-24 | 2002-11-21 | 301 | 2002-10-24 | 2002-11-21 | 4w | 153.5d |  |  |  |  |  |
| 304 | 3.3 | **Production** | 385.5d? | 2002-01-01 | 2003-06-30 |  | 2002-01-01 | 2003-06-30 | 385.5d? | 0d |  |  |  | 2,100 | 2,100 |
| 305 | 3.3.1 | **Purchase** | 50d | 2002-09-03 | 2002-11-11 |  | 2002-11-18 | 2003-03-13 | 16w | 9.62d |  |  |  |  |  |
| 306 | 3.3.1.1 | Remote Control | 10w | 2002-09-03 | 2002-11-11 | 278 |  |  |  | 9.62d | 0d |  |  |  |  |
| 307 | 3.3.2 | Pilot Run | 3w | 2003-03-13 | 2003-04-03 | 197, 306 | 2003-03-13 | 2003-04-03 | 3w | 0d |  |  |  |  |  |
| 308 | 3.3.3 | Mass Production (1000 units) | 5w | 2003-04-03 | 2003-05-08 | 239, 307 | 2003-04-03 | 2003-05-08 | 5w | 0d |  |  |  |  |  |
| 309 | 3.3.4 | Ship to US by Air | 1d? | 2003-05-08 | 2003-05-09 | 308 | 2003-05-08 | 2003-05-09 | 1d? | 0d |  |  |  |  |  |
| 310 | 3.3.5 | Ship to US by Sea | 26d | 2003-05-09 | 2003-06-16 | 309 | 2003-05-09 | 2003-06-16 | 26d | 0d |  |  |  | 2,100 | 2,100 |
| 311 | 3.3.6 | Prime Disty Channels | 10d | 2003-06-16 | 2003-06-30 | 310 | 2003-06-16 | 2003-06-30 | 10d | 0d |  |  |  |  |  |
| 313 | 3.3.7 | Travel | 1d? | 2002-01-01 | 2002-01-02 |  | 2002-01-01 | 2002-01-02 | 1d? | 384.5d |  |  |  |  |  |

| ID | WBS | Task | Type | Duration | Start | Finish | Predecessors | Baseline start | Baseline finish | Baseline duration | Total slack | Free slack | Constraint |
| --- | --- | --- | --- | --- | --- | --- | --- | --- | --- | --- | --- | --- | --- |
| 316 | 3.4 | **United Box Schedules** |  | 206.5d? | 2002-06-28 | 2003-04-18 |  | 2002-06-28 | 2003-04-18 | 206.5d? | 51d |  |  |
| 317 | 3.4.1 | **DFM** |  | 1d? | 2003-04-17 | 2003-04-18 |  | 2003-04-17 | 2003-04-18 | 1d? | 51d |  |  |
| 318 | 3.4.1.1 | PCB DFM |  | 1d? | 2003-04-17 | 2003-04-18 | 23 | 2003-04-17 | 2003-04-18 | 1d? | 51d |  | start no earlier than 2002-09-16 |
| 319 | 3.4.1.2 | PCB DFT |  | 1d? | 2003-04-17 | 2003-04-18 | 23 | 2003-04-17 | 2003-04-18 | 1d? | 51d |  |  |
| 320 | 3.4.1.3 | Box DFA |  | 1d? | 2003-04-17 | 2003-04-18 | 23 | 2003-04-17 | 2003-04-18 | 1d? | 51d |  |  |
| 321 | 3.4.1.4 | Box DFT |  | 1d? | 2003-04-17 | 2003-04-18 | 23 | 2003-04-17 | 2003-04-18 | 1d? | 51d |  |  |
| 322 | 3.4.2 | **DVT** |  | 151.5d? | 2002-06-28 | 2003-01-31 |  | 2002-06-28 | 2003-02-21 | 166.75d? | 106d |  |  |
| 323 | 3.4.2.1 | **Mechanical** |  | 79.88d? | 2002-07-05 | 2002-10-25 |  | 2002-07-05 | 2002-10-25 | 79.88d? | 172.62d |  |  |
| 324 | 3.4.2.1.1 | Prototype Sample (V7) | milestone | 0d | 2002-08-23 | 2002-08-23 |  | 2002-08-23 | 2002-08-23 | 0d | 217.5d |  | start no earlier than 2002-08-23 |
| 325 | 3.4.2.1.2 | Mech Parts Tooling |  | 34.88d? | 2002-08-30 | 2002-10-18 |  | 2002-08-30 | 2002-10-18 | 34.88d? | 177.62d |  | finish no earlier than 2002-10-18 |
| 326 | 3.4.2.1.3 | Tools Approval |  | 5.88d? | 2002-10-04 | 2002-10-11 |  | 2002-10-04 | 2002-10-11 | 5.88d? | 182.62d |  | finish no earlier than 2002-10-11 |
| 327 | 3.4.2.1.4 | DVT Samples, n=50, tooled parts |  | 5.88d? | 2002-10-18 | 2002-10-25 |  | 2002-10-18 | 2002-10-25 | 5.88d? | 172.62d |  | finish no earlier than 2002-10-25 |
| 328 | 3.4.2.1.5 | Quality Inspection & Test Plan |  | 5.88d? | 2002-07-05 | 2002-07-12 |  | 2002-07-05 | 2002-07-12 | 5.88d? | 246.62d |  | finish no earlier than 2002-07-12 |
| 329 | 3.4.2.2 | **Electrical** |  | 36d | 2002-09-06 | 2002-10-28 |  | 2002-09-06 | 2002-10-28 | 36d | 172.5d |  |  |
| 330 | 3.4.2.2.1 | DVT Schematics & Gerber (v4) |  | 1d | 2002-09-06 | 2002-09-09 |  | 2002-09-06 | 2002-09-09 | 1d | 207.5d |  | start no earlier than 2002-09-06 |
| 331 | 3.4.2.2.2 | DVT BOM & AVL (v4) |  | 1d | 2002-09-06 | 2002-09-09 |  | 2002-09-06 | 2002-09-09 | 1d | 207.5d |  | start no earlier than 2002-09-06 |
| 332 | 3.4.2.2.3 | DVT PCBA FP Sahara (4) |  | 1d | 2002-09-06 | 2002-09-09 |  | 2002-09-06 | 2002-09-09 | 1d | 202.5d | 0d | start no earlier than 2002-09-06 |
| 333 | 3.4.2.2.4 | DVT Compliance Test Report |  | 1w | 2002-09-09 | 2002-09-16 | 332 | 2002-09-09 | 2002-09-16 | 1w | 202.5d |  |  |
| 334 | 3.4.2.2.5 | DVT PCBA UB Pilot (50) |  | 1d | 2002-10-18 | 2002-10-21 |  | 2002-10-18 | 2002-10-21 | 1d | 172.5d | 0d | start no earlier than 2002-10-18 |
| 335 | 3.4.2.2.6 | DVT Compliance Test Report |  | 1w | 2002-10-21 | 2002-10-28 | 334 | 2002-10-21 | 2002-10-28 | 1w | 172.5d |  |  |
| 336 | 3.4.2.3 | **Industrializatin** |  | 84d | 2002-06-28 | 2002-10-25 |  | 2002-06-28 | 2002-10-25 | 84d | 173.5d |  |  |
| 337 | 3.4.2.3.1 | Production Process Plan - 1st pass |  | 1w | 2002-06-28 | 2002-07-05 |  | 2002-06-28 | 2002-07-05 | 1w | 212.5d | 5d | start no earlier than 2002-06-28 |
| 338 | 3.4.2.3.2 | Production Process Plan - TriHonor |  | 2w | 2002-07-12 | 2002-07-26 | 337 | 2002-07-12 | 2002-07-26 | 2w | 207.5d | 25d | start no earlier than 2002-07-12 |
| 339 | 3.4.2.3.3 | Production Process Plan - Final Plan |  | 1w | 2002-08-30 | 2002-09-09 | 338 | 2002-08-30 | 2002-09-09 | 1w | 182.5d | 0d | start no earlier than 2002-08-30 |
| 340 | 3.4.2.3.4 | Production Process Setup |  | 5w | 2002-09-09 | 2002-10-14 | 339 | 2002-09-09 | 2002-10-14 | 5w | 182.5d |  |  |
| 341 | 3.4.2.3.5 | Production Test Plan -1st cut |  | 1w | 2002-06-28 | 2002-07-05 |  | 2002-06-28 | 2002-07-05 | 1w | 192.5d | 10d | start no earlier than 2002-06-28 |
| 342 | 3.4.2.3.6 | Production Test Plan -development |  | 6w | 2002-07-19 | 2002-08-30 | 341 | 2002-07-19 | 2002-08-30 | 6w | 182.5d | 0d | start no earlier than 2002-07-19 |
| 343 | 3.4.2.3.7 | Production Test Plan -Final Review |  | 1w | 2002-08-30 | 2002-09-09 | 342 | 2002-08-30 | 2002-09-09 | 1w | 182.5d | 0d |  |
| 344 | 3.4.2.3.8 | Production Tester Setup |  | 5w | 2002-09-09 | 2002-10-14 | 343 | 2002-09-09 | 2002-10-14 | 5w | 182.5d |  |  |
| 345 | 3.4.2.3.9 | PCBA Test Plan - 1st Cut |  | 1w | 2002-07-05 | 2002-07-12 |  | 2002-07-05 | 2002-07-12 | 1w | 222.5d | 5d | start no earlier than 2002-07-05 |
| 346 | 3.4.2.3.10 | PCBA Test Plan - FP plan |  | 1w | 2002-07-19 | 2002-07-26 | 345 | 2002-07-19 | 2002-07-26 | 1w | 217.5d | 5d | start no earlier than 2002-07-19 |
| 347 | 3.4.2.3.11 | PCBA Test Plan - final plan |  | 1w | 2002-08-02 | 2002-08-09 | 346 | 2002-08-02 | 2002-08-09 | 1w | 212.5d | 24d | start no earlier than 2002-08-02 |
| 348 | 3.4.2.3.12 | ICT Fixture & Program |  | 3w | 2002-09-13 | 2002-10-04 | 347 | 2002-09-13 | 2002-10-04 | 3w | 188.5d |  | start no earlier than 2002-09-13 |
| 349 | 3.4.2.3.13 | Fucntional Tester |  | 3w | 2002-09-13 | 2002-10-04 |  | 2002-09-13 | 2002-10-04 | 3w | 187.5d | 0d | start no earlier than 2002-09-13 |
| 350 | 3.4.2.3.14 | Commision PCBA Testers |  | 1d | 2002-10-04 | 2002-10-07 | 349 | 2002-10-04 | 2002-10-07 | 1d | 187.5d |  |  |
| 351 | 3.4.2.3.15 | QC/QA Plan - 1st cut |  | 1w | 2002-07-05 | 2002-07-12 |  | 2002-07-05 | 2002-07-12 | 1w | 242.5d | 35d | start no earlier than 2002-07-05 |
| 352 | 3.4.2.3.16 | QC/QA Plan - final plan |  | 1w | 2002-08-30 | 2002-09-09 | 351 | 2002-08-30 | 2002-09-09 | 1w | 207.5d |  | start no earlier than 2002-08-30 |
| 353 | 3.4.2.3.17 | Vendor RFQ A |  | 1w | 2002-06-28 | 2002-07-05 |  | 2002-06-28 | 2002-07-05 | 1w | 247.5d | 44d | start no earlier than 2002-06-28 |
| 354 | 3.4.2.3.18 | Vendor RFQ B |  | 1w | 2002-09-06 | 2002-09-13 | 353 | 2002-09-06 | 2002-09-13 | 1w | 203.5d |  | start no earlier than 2002-09-06 |
| 355 | 3.4.2.3.19 | Safety Regualtion Test & Cert. |  | 12w | 2002-07-12 | 2002-10-07 |  | 2002-07-12 | 2002-10-07 | 12w | 187.5d |  | start no earlier than 2002-07-12 |
| 356 | 3.4.2.3.20 | DVT Reliability Test |  | 1w | 2002-10-18 | 2002-10-25 |  | 2002-10-18 | 2002-10-25 | 1w | 173.5d |  | start no earlier than 2002-10-18 |

| ID | WBS | Task | Duration | Start | Finish | Predecessors | Baseline start | Baseline finish | Baseline duration | Total slack | Free slack | Constraint |
| --- | --- | --- | --- | --- | --- | --- | --- | --- | --- | --- | --- | --- |
| 357 | 3.4.2.4 | **CR** | 151.5d? | 2002-06-28 | 2003-01-31 |  | 2002-06-28 | 2003-02-21 | 166.75d? | 106d |  |  |
| 358 | 3.4.2.4.1 | Final Drawing Release Form | 1d | 2003-01-30 | 2003-01-31 | 190 | 2003-01-30 | 2003-01-31 | 1d | 106d |  | start no earlier than 2002-06-28 |
| 359 | 3.4.2.4.2 | Final Tool Release Form | 1d? | 2002-06-28 | 2002-07-01 |  | 2002-06-28 | 2002-07-01 | 1d? | 256.5d |  | start no earlier than 2002-06-28 |
| 360 | 3.4.2.4.3 | Final Schematic & Gerber Release | 1d? | 2003-01-07 | 2003-01-08 | 72 | 2003-02-20 | 2003-02-21 | 1d? | 123.5d |  | start no earlier than 2002-06-28 |
| 361 | 3.4.2.4.4 | Final PCBA BOM Release | 1d? | 2003-01-07 | 2003-01-08 | 72 | 2003-02-20 | 2003-02-21 | 1d? | 123.5d |  |  |
| 362 | 3.4.2.4.5 | Final Firmware Release | 1d? | 2003-01-17 | 2003-01-17 | 46 | 2003-01-01 | 2003-01-02 | 1d? | 115.62d |  |  |
| 363 | 3.4.2.4.6 | Production Process Flow & Instruction | 63.88d? | 2002-07-08 | 2002-10-04 |  | 2002-07-08 | 2002-10-04 | 63.88d? | 187.62d |  | finish no earlier than 2002-10-04 |
| 364 | 3.4.2.4.7 | Production Test Flow & Instruction | 63.88d? | 2002-07-08 | 2002-10-04 |  | 2002-07-08 | 2002-10-04 | 63.88d? | 187.62d |  | finish no earlier than 2002-10-04 |
| 365 | 3.4.2.4.8 | QC/QA Flow & Instruction | 1d? | 2002-10-24 | 2002-10-25 |  | 2002-10-24 | 2002-10-25 | 1d? | 173.5d |  | start no earlier than 2002-10-24 |
| 366 | 3.4.3 | **PVT** | 65d? | 2002-09-03 | 2002-12-04 |  | 2002-09-03 | 2002-12-04 | 65d? | 146.62d |  |  |
| 367 | 3.4.3.1 | **Mechanical** | 1d? | 2002-09-16 | 2002-09-17 |  | 2002-09-16 | 2002-09-17 | 1d? | 201.5d |  |  |
| 368 | 3.4.3.1.1 | PVT Samples | 1d? | 2002-09-16 | 2002-09-17 |  | 2002-09-16 | 2002-09-17 | 1d? | 201.5d |  | start no earlier than 2002-09-16 |
| 369 | 3.4.3.2 | **Electrical** | 1d? | 2002-09-16 | 2002-09-17 |  | 2002-09-16 | 2002-09-17 | 1d? | 201.5d |  |  |
| 370 | 3.4.3.2.1 | PVT Samples (Pilot Run) | 1d? | 2002-09-16 | 2002-09-17 |  | 2002-09-16 | 2002-09-17 | 1d? | 201.5d |  | start no earlier than 2002-09-16 |
| 371 | 3.4.3.2.2 | PVT Comliance | 1d? | 2002-09-16 | 2002-09-17 |  | 2002-09-16 | 2002-09-17 | 1d? | 201.5d |  | start no earlier than 2002-09-16 |
| 372 | 3.4.3.3 | **Industrialization** | 1d? | 2002-09-16 | 2002-09-17 |  | 2002-09-16 | 2002-09-17 | 1d? | 201.5d |  |  |
| 373 | 3.4.3.3.1 | Process & Test Setup | 1d? | 2002-09-16 | 2002-09-17 |  | 2002-09-16 | 2002-09-17 | 1d? | 201.5d |  | start no earlier than 2002-09-16 |
| 374 | 3.4.3.3.2 | Production/Yield Commissioning | 1d? | 2002-09-16 | 2002-09-17 |  | 2002-09-16 | 2002-09-17 | 1d? | 201.5d |  | start no earlier than 2002-09-16 |
| 375 | 3.4.3.4 | **Purchase** | 65d? | 2002-09-03 | 2002-12-04 |  | 2002-09-03 | 2002-12-04 | 65d? | 146.62d |  |  |
| 376 | 3.4.3.4.1 | Shipping CD | 1d? | 2002-09-16 | 2002-09-17 |  | 2002-09-16 | 2002-09-17 | 1d? | 201.5d |  | start no earlier than 2002-09-16 |
| 377 | 3.4.3.4.2 | **Remote Control** | 65d | 2002-09-03 | 2002-12-04 | 278 | 2002-09-03 | 2002-12-04 | 65d | 146.62d |  |  |
| 378 | 3.4.3.4.2.1 | Place order | 2d | 2002-09-03 | 2002-09-04 |  | 2002-09-03 | 2002-09-04 | 2d | 146.62d | 0d |  |
| 379 | 3.4.3.4.2.2 | Art Review | 2w | 2002-09-05 | 2002-09-18 | 378 | 2002-09-05 | 2002-09-18 | 2w | 146.62d | 0d |  |
| 380 | 3.4.3.4.2.3 | First Samples (5) | 5w | 2002-09-19 | 2002-10-23 | 379 | 2002-09-19 | 2002-10-23 | 5w | 146.62d | 0d |  |
| 381 | 3.4.3.4.2.4 | FA Review | 3d | 2002-10-24 | 2002-10-28 | 380 | 2002-10-24 | 2002-10-28 | 3d | 146.62d | 0d |  |
| 382 | 3.4.3.4.2.5 | First 50 | 2w | 2002-10-29 | 2002-11-11 | 381 | 2002-10-29 | 2002-11-11 | 2w | 146.62d | 0d |  |
| 383 | 3.4.3.4.2.6 | Shipment of 50 | 3d | 2002-11-12 | 2002-11-14 | 382 | 2002-11-12 | 2002-11-14 | 3d | 158.62d |  |  |
| 384 | 3.4.3.4.2.7 | Full shipment of 5000 | 2w | 2002-11-12 | 2002-11-25 | 382 | 2002-11-12 | 2002-11-25 | 2w | 146.62d | 0d |  |
| 385 | 3.4.3.4.2.8 | Shipping of 5000 | 1w | 2002-11-26 | 2002-12-04 | 384 | 2002-11-26 | 2002-12-04 | 1w | 146.62d |  |  |
| 386 | 3.4.3.4.3 | LLT Components Buy (1k) > 8 wks | 1d? | 2002-09-16 | 2002-09-17 |  | 2002-09-16 | 2002-09-17 | 1d? | 201.5d |  | start no earlier than 2002-09-16 |
| 387 | 3.4.3.4.4 | LLT Components (LCD) Buy (1k) | 1d? | 2002-09-16 | 2002-09-17 |  | 2002-09-16 | 2002-09-17 | 1d? | 201.5d |  | start no earlier than 2002-09-16 |
| 388 | 3.4.3.4.5 | PO for MP 1000 units (Electrical) | 1d? | 2002-09-16 | 2002-09-17 |  | 2002-09-16 | 2002-09-17 | 1d? | 201.5d |  | start no earlier than 2002-09-16 |
| 389 | 3.4.3.4.6 | PO for MP 1000 units (System) | 1d? | 2002-09-16 | 2002-09-17 |  | 2002-09-16 | 2002-09-17 | 1d? | 201.5d |  | start no earlier than 2002-09-16 |

| ID | WBS | Task | Duration | Start | Finish | Baseline start | Baseline finish | Baseline duration | Total slack | Constraint |
| --- | --- | --- | --- | --- | --- | --- | --- | --- | --- | --- |
| 390 | 3.4.4 | **MP Start** | 1d? | 2002-09-16 | 2002-09-17 | 2002-09-16 | 2002-09-17 | 1d? | 201.5d |  |
| 391 | 3.4.4.1 | Maxx Production Start | 1d? | 2002-09-16 | 2002-09-17 | 2002-09-16 | 2002-09-17 | 1d? | 201.5d | start no earlier than 2002-09-16 |
