# FP UB Sahara Dev and Prod schedule_82602

Schedule from MS Project, 2002-01-01 to 2003-06-06, costs in $.
iObjects

## Calendars

- Standard: Mon-Fri 08:00-12:00, 13:00-17:00; Sat-Sun off. Exceptions (off unless hours are given): 2002-09-02, 2002-11-28 to 2002-11-29, 2002-12-25.

## Resources

| Resource | Rate | Cost per use |
| --- | --- | --- |
| PM1 |  | 48000 |
| EE1 |  |  |
| EE2 |  |  |
| Tech 1 |  |  |
| Lead |  |  |
| PM2 |  |  |
| SW1 |  |  |
| SW2 |  |  |
| ME1 | 115 |  |
| ME2 | 115 |  |
| GA1 | 27.5 |  |
| GA2 | 50 |  |
| GA3 | 115 |  |
| PM3 | 115 |  |
| PCB |  |  |
| PCBA |  |  |
| Route | 80 |  |
| MPE |  |  |
| MFE |  |  |
| P507001 |  |  |
| P507002 |  |  |
| P507003 |  |  |
| P507004 |  |  |
| P507005 |  |  |
| P507009 |  |  |
| P507010 |  |  |
| MFG1 |  |  |
| MFG2 |  |  |
| Fiori |  |  |
| Moeller |  |  |
| Fullplay |  |  |
| Profab |  |  |
| Tech 2 |  |  |
| OB507001 |  |  |
| OB507002 |  |  |
| OB507003 |  |  |
| OB507004 |  |  |
| OB507005 |  |  |
| OB507006 |  |  |
| OB507007 |  |  |
| OB507008 |  |  |
| Dynamark |  |  |
| Tuscarora |  |  |
| Audio Precision Tester |  |  |
| Seagate |  |  |
| Josh |  |  |

## Schedule

| ID | WBS | Task | Type | Duration | Start | Finish | Predecessors | Baseline start | Baseline finish | Baseline duration | Total slack | Free slack | Constraint | Resources | Work | Cost | Baseline cost |
| --- | --- | --- | --- | --- | --- | --- | --- | --- | --- | --- | --- | --- | --- | --- | --- | --- | --- |
| 1 | 1 | Fullplay Media Systems, Inc. | milestone | 0d | 2002-04-01 | 2002-04-01 |  | 2002-04-01 | 2002-04-01 | 0d | 321.5d |  | start no earlier than 2002-04-01 |  |  |  |  |
| 2 | 2 | Confidential Information | milestone | 0d | 2002-04-01 | 2002-04-01 |  | 2002-04-01 | 2002-04-01 | 0d | 321.5d |  | start no earlier than 2002-04-01 |  |  |  |  |
| 4 | 3 | **Sahara Program** |  | 369d? | 2002-01-01 | 2003-06-06 |  | 2002-01-01 | 2003-06-30 | 385.5d? | 0d |  |  |  | 3865.99h | 240,937.64 | 273,196.49 |
| 5 | 3.1 | **Marketing** |  | 115.38d? | 2002-08-15 | 2003-01-29 |  | 2002-08-15 | 2003-02-14 | 127.62d? | 44d |  |  |  |  |  |  |
| 6 | 3.1.1 | PRD |  | 1d? | 2002-08-15 | 2002-08-16 |  | 2002-08-15 | 2002-08-16 | 1d? | 222.5d |  | start no earlier than 2002-08-15 |  |  |  |  |
| 7 | 3.1.2 | **Accessories** |  | 36.12d? | 2002-08-27 | 2002-10-17 |  | 2002-08-27 | 2002-10-17 | 36.12d? | 36.12d |  |  |  |  |  |  |
| 8 | 3.1.2.1 | Review and Revise User Guide (DJ, FML, Remote, Netowrking, Web interface) |  | 1w | 2002-10-10 | 2002-10-17 | 245 | 2002-10-10 | 2002-10-17 | 1w | 179.5d |  |  |  |  |  |  |
| 9 | 3.1.2.2 | Review and Revise CD art |  | 1w | 2002-08-29 | 2002-09-06 | 263 | 2002-08-29 | 2002-09-06 | 1w | 108.5d | 0d |  |  |  |  |  |
| 10 | 3.1.2.3 | Review and Revise Packaging |  | 2d | 2002-09-23 | 2002-09-25 | 269 | 2002-08-29 | 2002-09-06 | 1w | 110d | 0d |  |  |  |  |  |
| 11 | 3.1.2.4 | Review and Revise Remote Spec |  | 1d? | 2002-08-27 | 2002-08-27 | 274 | 2002-08-27 | 2002-08-27 | 1d? | 55.62d | 0d |  |  |  |  |  |
| 12 | 3.1.3 | **Promotions Schedule** |  | 94.38d? | 2002-09-16 | 2003-01-29 |  | 2002-09-16 | 2003-02-14 | 106.62d? | 91.62d |  |  |  |  |  |  |
| 13 | 3.1.3.1 | Marketing Photo Shoot |  | 2d | 2002-10-21 | 2002-10-23 | 285 | 2002-09-27 | 2002-10-01 | 2d | 152.5d | 0d |  | P507001 |  |  |  |
| 14 | 3.1.3.2 | Ship to CES |  | 2d | 2002-10-23 | 2002-10-25 | 13 | 2002-10-01 | 2002-10-03 | 2d | 156.5d |  |  |  |  |  |  |
| 15 | 3.1.3.3 | **Sales / Review Release Dependencies** |  | 48.88d? | 2002-09-16 | 2002-11-21 |  | 2002-09-16 | 2002-12-03 | 54d? | 134.12d | 0d |  |  |  |  |  |
| 16 | 3.1.3.3.1 | Shipping cd | milestone | 0d | 2002-10-02 | 2002-10-02 | 261 | 2002-10-02 | 2002-10-02 | 0d | 192.5d |  |  |  |  |  |  |
| 17 | 3.1.3.3.2 | Packaging | milestone | 0d | 2002-11-14 | 2002-11-14 | 226 | 2002-12-03 | 2002-12-03 | 0d | 161.5d |  |  |  |  |  |  |
| 18 | 3.1.3.3.3 | User guide | milestone | 0d | 2002-09-16 | 2002-09-16 | 243 | 2002-09-16 | 2002-09-16 | 0d | 204.5d |  |  |  |  |  |  |
| 19 | 3.1.3.3.4 | Proto 2 / -03-B | milestone | 0d | 2002-10-29 | 2002-10-29 | 288 | 2002-10-25 | 2002-10-25 | 0d | 151.5d |  |  |  |  |  |  |
| 20 | 3.1.3.3.5 | RC1 FW | milestone | 0d | 2002-11-12 | 2002-11-12 | 39 | 2002-11-01 | 2002-11-01 | 0d | 141.5d |  |  |  |  |  |  |
| 21 | 3.1.3.3.6 | Remote Control |  | 1d? | 2002-11-21 | 2002-11-21 | 272, 37 | 2002-11-01 | 2002-11-04 | 1d? | 155.62d |  |  |  |  |  |  |
| 22 | 3.1.3.4 | Sales / Review Release |  | 3d | 2002-11-22 | 2002-11-26 | 15 |  |  |  | 134.12d |  |  |  |  |  |  |
| 23 | 3.1.3.5 | CES | milestone | 6.88d? | 2003-01-20 | 2003-01-29 | 261, 45, 244, 288 | 2003-02-05 | 2003-02-14 | 6.88d? | 91.62d |  | finish no earlier than 2003-01-10 |  |  |  |  |
| 24 | 3.2 | **Development** |  | 317d? | 2002-01-01 | 2003-03-26 |  | 2002-01-01 | 2003-04-17 | 333.5d? | 51d | 0d |  |  | 3865.99h | 238,837.64 | 271,096.49 |
| 25 | 3.2.1 | **Firmware** |  | 201.5d? | 2002-04-01 | 2003-01-13 |  | 2002-01-01 | 2003-01-29 | 277.75d? | 102.5d |  |  |  | 96h |  |  |
| 26 | 3.2.1.1 | DJ-C40 FW Dev |  | 120d | 2002-04-01 | 2002-09-17 |  | 2002-04-01 | 2002-09-17 | 120d | 200.5d |  | start no earlier than 2002-04-01 |  |  |  |  |

Notes:
- 21: alos needs 37 samples with final silkscreen

| ID | WBS | Task | Type | Duration | Start | Finish | Predecessors | Baseline start | Baseline finish | Baseline duration | Total slack | Free slack | Constraint | Resources | Work | Cost | Baseline cost |
| --- | --- | --- | --- | --- | --- | --- | --- | --- | --- | --- | --- | --- | --- | --- | --- | --- | --- |
| 27 | 3.2.1.2 | **Beta 1** |  | 70d | 2002-06-24 | 2002-10-01 |  | 2002-06-24 | 2002-10-01 | 70d | 32.5d | 23.75d |  |  |  |  |  |
| 28 | 3.2.1.2.1 | Release Beta 1 FW on DJ35 units |  | 34d | 2002-06-24 | 2002-08-09 |  | 2002-06-24 | 2002-08-09 | 34d | 69.5d | 5d | start no earlier than 2002-06-24 |  |  |  |  |
| 29 | 3.2.1.2.2 | Feature Complete | milestone | 0d | 2002-08-16 | 2002-08-16 | 28 | 2002-08-16 | 2002-08-16 | 0d | 64.5d | 0d | start no earlier than 2002-08-16 |  |  |  |  |
| 30 | 3.2.1.2.3 | SQA |  | 5w | 2002-08-16 | 2002-09-23 | 29 | 2002-08-16 | 2002-09-23 | 5w | 64.5d | 1d |  |  |  |  |  |
| 31 | 3.2.1.2.4 | FVT |  | 1w | 2002-09-24 | 2002-10-01 | 30, 243 | 2002-09-24 | 2002-10-01 | 1w | 63.5d |  | start no earlier than 2002-09-24 |  |  |  |  |
| 32 | 3.2.1.3 | CDDB Update |  | 2d | 2002-10-15 | 2002-10-17 |  | 2002-10-15 | 2002-10-17 | 2d | 51.5d | 6.75d | start no earlier than 2002-10-15 |  |  |  |  |
| 33 | 3.2.1.4 | SW receives (?) -03-A open boards for dev |  | 1d? | 2002-09-16 | 2002-09-17 | 59 | 2002-09-09 | 2002-09-10 | 1d? | 205.5d |  |  |  |  |  |  |
| 34 | 3.2.1.5 | hardware test release |  | 1w | 2002-09-17 | 2002-09-24 | 60 | 2002-09-10 | 2002-09-17 | 1w | 15d | 0d |  |  |  |  |  |
| 35 | 3.2.1.6 | Functionality Tests |  | 4w | 2002-09-24 | 2002-10-22 | 34 | 2002-09-17 | 2002-09-18 | 1d? | 171.5d | 0d |  |  |  |  |  |
| 36 | 3.2.1.7 | Firmware Installer |  | 1d? | 2002-10-22 | 2002-10-23 | 35 | 2002-09-18 | 2002-09-19 | 1d? | 171.5d | 15.88d |  |  |  |  |  |
| 37 | 3.2.1.8 | Remote control drivers |  | 1w | 2002-11-14 | 2002-11-20 | 278, 36 |  |  |  | 155.62d | 0d |  |  |  |  |  |
| 38 | 3.2.1.9 | **Release Candidate 1** |  | 50d | 2002-10-29 | 2003-01-10 | 27, 288, 32 | 2002-10-25 | 2002-12-17 | 35d | 16.5d | 0d |  |  | 80h |  |  |
| 39 | 3.2.1.9.1 | Release Candidate 1 FW on Sahara proto 2 devices |  | 2w | 2002-10-29 | 2002-11-12 |  | 2002-11-01 | 2002-11-01 | 0d | 16.5d | 0d |  | PM2 | 80h |  |  |
| 40 | 3.2.1.9.2 | Candidate 1 Evaluation |  | 4w | 2002-11-12 | 2002-12-12 | 39 | 2002-11-01 | 2002-12-17 | 6w | 16.5d | 0d |  |  |  |  |  |
| 41 | 3.2.1.9.3 | SQA |  | 3w | 2002-12-12 | 2003-01-03 | 40 |  |  |  | 16.5d | 0d |  |  |  |  |  |
| 42 | 3.2.1.9.4 | FVT |  | 1w | 2003-01-03 | 2003-01-10 | 41 |  |  |  | 16.5d |  |  |  |  |  |  |
| 43 | 3.2.1.10 | CDDB Update |  | 2d | 2002-12-03 | 2002-12-05 |  | 2002-12-03 | 2002-12-05 | 2d | 48.5d | 0d | start no earlier than 2002-12-03 | PM2 | 16h |  |  |
| 44 | 3.2.1.11 | Final Hardware Firmware |  | 1d | 2002-12-05 | 2002-12-06 | 43 |  |  |  | 48.5d | 5d |  |  |  |  |  |
| 45 | 3.2.1.12 | Gold Release |  | 1d | 2003-01-10 | 2003-01-13 | 38 | 2002-12-17 | 2003-01-29 | 30d | 16.5d | 0d |  |  |  |  |  |
| 46 | 3.2.2 | **Electrical** |  | 167d? | 2002-05-20 | 2003-01-14 |  | 2002-05-20 | 2003-02-20 | 194.75d? | 64d |  |  |  | 616h | 18,872.5 | 18,872.5 |
| 47 | 3.2.2.1 | DJ35 PCB Build x52 |  | 23d | 2002-05-20 | 2002-06-20 |  | 2002-05-20 | 2002-06-20 | 23d | 262.5d |  | start no earlier than 2002-05-20 |  |  |  |  |
| 48 | 3.2.2.2 | UB BOM feedback |  | 23d | 2002-05-20 | 2002-06-20 |  | 2002-05-20 | 2002-06-20 | 23d | 262.5d |  | start no earlier than 2002-05-20 |  |  |  |  |
| 49 | 3.2.2.3 | **FP Build PCB-03** |  | 40d? | 2002-07-22 | 2002-09-17 |  | 2002-07-22 | 2002-09-10 | 35d? | 19d | 0d |  |  | 600h | 10,551.2 | 10,551.2 |
| 50 | 3.2.2.3.1 | FP Route PCB-03-A |  | 4d | 2002-07-22 | 2002-07-26 |  | 2002-07-22 | 2002-07-26 | 4d | 19d | 0d | start no earlier than 2002-07-22 |  |  |  |  |
| 51 | 3.2.2.3.2 | Review Placement |  | 1d | 2002-07-26 | 2002-07-29 | 50 | 2002-07-26 | 2002-07-29 | 1d | 19d | 0d |  |  |  |  |  |
| 52 | 3.2.2.3.3 | Paradigm Critical Route |  | 2d | 2002-07-29 | 2002-07-31 | 51 | 2002-07-29 | 2002-07-31 | 2d | 19d | 0d |  |  |  |  |  |
| 53 | 3.2.2.3.4 | FP Critical Route Review |  | 1d | 2002-07-31 | 2002-08-01 | 52 | 2002-07-31 | 2002-08-01 | 1d | 19d | 0d |  |  |  |  |  |
| 54 | 3.2.2.3.5 | FP Design Changes |  | 2d | 2002-08-01 | 2002-08-05 | 53 | 2002-08-01 | 2002-08-05 | 2d | 19d | 0d |  |  |  |  |  |
| 55 | 3.2.2.3.6 | Paradigm Final Route |  | 2d | 2002-08-05 | 2002-08-07 | 54 | 2002-08-05 | 2002-08-07 | 2d | 19d | 0d |  |  |  |  |  |
| 56 | 3.2.2.3.7 | Review Final Route |  | 4d | 2002-08-07 | 2002-08-13 | 55 | 2002-08-07 | 2002-08-13 | 4d | 19d | 0d |  |  |  |  |  |
| 57 | 3.2.2.3.8 | FP MB RTFAB-03-A (50) |  | 3d | 2002-08-13 | 2002-08-16 | 56 | 2002-08-13 | 2002-08-16 | 3d | 19d | 0d |  | PCB |  | 9,210 | 9,210 |
| 58 | 3.2.2.3.9 | FP MB RTASY-03-A (8) |  | 5d | 2002-08-16 | 2002-08-23 | 57 | 2002-08-16 | 2002-08-23 | 5d | 19d | 0d | start no earlier than 2002-08-16 | PCBA |  | 1,341.2 | 1,341.2 |
| 59 | 3.2.2.3.10 | FP bare board HWEVT (open boards) |  | 15d | 2002-08-23 | 2002-09-16 | 58 | 2002-08-23 | 2002-09-09 | 10d | 19d | 0d |  | EE1; EE2; Tech 1; Tech 2; Lead; OB507001; OB507002; OB507003; OB507004; OB507005; OB507006; OB507007; OB507008 | 600h |  |  |
| 60 | 3.2.2.3.11 | Open boards to SW |  | 1d? | 2002-09-16 | 2002-09-17 | 59 | 2002-09-09 | 2002-09-10 | 1d? | 19d | 0d |  |  |  |  |  |

Notes:
- 36: dependencies with manufacturability
- 59: Decision to Build B

| ID | WBS | Task | Type | Duration | Start | Finish | Predecessors | Baseline start | Baseline finish | Baseline duration | Total slack | Free slack | Resources | Work | Cost | Baseline cost |
| --- | --- | --- | --- | --- | --- | --- | --- | --- | --- | --- | --- | --- | --- | --- | --- | --- |
| 61 | 3.2.2.4 | **FP Build PCB-04** |  | 22d | 2002-09-17 | 2002-10-17 | 49 | 2002-09-10 | 2002-10-11 | 23d | 19d | 0d |  | 16h | 8,321.3 | 8,321.3 |
| 62 | 3.2.2.4.1 | Prepare .dxf files for pad prints |  | 5d | 2002-09-17 | 2002-09-24 |  |  |  |  | 19d | 0d |  |  |  |  |
| 63 | 3.2.2.4.2 | Prepare changes for new spin |  | 4d | 2002-09-24 | 2002-09-30 | 62 |  |  |  | 19d | 0d |  |  |  |  |
| 64 | 3.2.2.4.3 | FP Route PCB-04 |  | 5d | 2002-09-30 | 2002-10-07 | 63 | 2002-09-10 | 2002-09-17 | 5d | 19d | 0d | Route [40%] | 16h | 1,280 | 1,280 |
| 65 | 3.2.2.4.4 | FP RTFAB-04 |  | 3d | 2002-10-07 | 2002-10-10 | 64 | 2002-09-17 | 2002-09-20 | 3d | 19d | 0d | PCB |  |  |  |
| 66 | 3.2.2.4.5 | FP RTASY-04 |  | 5d | 2002-10-10 | 2002-10-17 | 65 | 2002-09-20 | 2002-09-27 | 5d | 19d | 0d | PCBA |  | 7,041.3 | 7,041.3 |
| 67 | 3.2.2.5 | FP HWEVT (4 open boards) |  | 10d | 2002-10-17 | 2002-10-31 | 66 | 2002-09-27 | 2002-10-11 | 10d | 152d |  |  |  |  |  |
| 68 | 3.2.2.6 | FP HW DVT |  | 20d | 2002-10-29 | 2002-11-26 | 61, 288 | 2002-10-25 | 2002-11-22 | 20d | 36.5d | 5.5d |  |  |  |  |
| 69 | 3.2.2.7 | **FP Build PCB-05** |  | 14d? | 2002-12-06 | 2002-12-27 | 68, 193, 44 | 2003-01-29 | 2003-02-17 | 13d | 31d | 0d |  |  |  |  |
| 70 | 3.2.2.7.1 | FP Route -05 |  | 5d | 2002-12-06 | 2002-12-13 |  | 2003-01-29 | 2003-02-05 | 5d | 31d | 0d |  |  |  |  |
| 71 | 3.2.2.7.2 | FP RTFAB-05 |  | 3d | 2002-12-13 | 2002-12-18 | 70 | 2003-02-05 | 2003-02-10 | 3d | 31d | 0d |  |  |  |  |
| 72 | 3.2.2.7.3 | FP RTASY-05 |  | 5d | 2002-12-18 | 2002-12-26 | 71 | 2003-02-10 | 2003-02-17 | 5d | 31d | 0d |  |  |  |  |
| 73 | 3.2.2.7.4 | FP HWEVT (4 open boards) |  | 1d? | 2002-12-26 | 2002-12-27 | 72 |  |  |  | 31d |  |  |  |  |  |
| 74 | 3.2.2.8 | HW DVT -05 |  | 3d | 2002-12-27 | 2003-01-01 | 69 | 2003-02-17 | 2003-02-20 | 3d | 111d | 0d |  |  |  |  |
| 75 | 3.2.2.9 | **Functional Test Fixture (FTF)** |  | 60d? | 2002-10-17 | 2003-01-14 | 61 | 2002-10-11 | 2003-01-08 | 60d? | 102d |  |  |  |  |  |
| 76 | 3.2.2.9.1 | Software Design Requirements |  | 2w | 2002-10-17 | 2002-10-31 |  | 2002-10-11 | 2002-10-25 | 2w | 151d | 0d |  |  |  |  |
| 77 | 3.2.2.9.2 | Electrical Design Requirements |  | 2w | 2002-10-17 | 2002-10-31 |  | 2002-10-11 | 2002-10-25 | 2w | 102d | 0d |  |  |  |  |
| 78 | 3.2.2.9.3 | Mechanical Design Requirements |  | 2w | 2002-10-17 | 2002-10-31 |  | 2002-10-11 | 2002-10-25 | 2w | 102d | 0d |  |  |  |  |
| 79 | 3.2.2.9.4 | Software Development |  | 1d? | 2002-10-31 | 2002-11-01 | 76 | 2002-10-25 | 2002-10-28 | 1d? | 151d |  |  |  |  |  |
| 80 | 3.2.2.9.5 | Electrical Development |  | 8w | 2002-10-31 | 2002-12-31 | 77 | 2002-10-25 | 2002-12-24 | 8w | 102d | 0d |  |  |  |  |
| 81 | 3.2.2.9.6 | Mechanical Development |  | 8w | 2002-10-31 | 2002-12-31 | 78 | 2002-10-25 | 2002-12-24 | 8w | 102d | 0d |  |  |  |  |
| 82 | 3.2.2.9.7 | FTF EVT |  | 1w | 2002-12-31 | 2003-01-07 | 80, 81 | 2002-12-24 | 2003-01-01 | 1w | 102d | 0d |  |  |  |  |
| 83 | 3.2.2.9.8 | FTF DVT |  | 1w | 2003-01-07 | 2003-01-14 | 82 | 2003-01-01 | 2003-01-08 | 1w | 102d | 0d |  |  |  |  |
| 84 | 3.2.2.9.9 | Release Final FTF | milestone | 0d | 2003-01-14 | 2003-01-14 | 83 | 2003-01-08 | 2003-01-08 | 0d | 102d |  |  |  |  |  |

Notes:
- 68: Josh and Bruce need to prepare DVT test plan / How many units need? 1 lab queen.

| ID | WBS | Task | Type | Duration | Start | Finish | Predecessors | Baseline start | Baseline finish | Baseline duration | Total slack | Free slack | Constraint | Resources | Work | Cost | Baseline cost |
| --- | --- | --- | --- | --- | --- | --- | --- | --- | --- | --- | --- | --- | --- | --- | --- | --- | --- |
| 85 | 3.2.3 | **Mechanical** |  | 240d? | 2002-04-18 | 2003-03-26 |  | 2002-04-18 | 2003-04-17 | 256.5d? | 0.62d |  |  | PM3 [20%] | 1833.52h | 152,815.14 | 161,868.99 |
| 86 | 3.2.3.1 | **Phase 1 Planning** |  | 2d | 2002-04-18 | 2002-04-22 |  | 2002-04-18 | 2002-04-22 | 2d | 0.62d | 0d |  |  |  |  |  |
| 87 | 3.2.3.1.1 | Kickoff Meeting |  | 0.5d | 2002-04-18 | 2002-04-18 |  | 2002-04-18 | 2002-04-18 | 0.5d | 0.62d | 0d | start no earlier than 2002-04-18 |  |  |  |  |
| 88 | 3.2.3.1.2 | Detailed Schedule Build / Review |  | 1d | 2002-04-18 | 2002-04-19 | 87 | 2002-04-18 | 2002-04-19 | 1d | 0.62d | 0d |  |  |  |  |  |
| 89 | 3.2.3.1.3 | Design Change Requirements Review |  | 0.5d | 2002-04-19 | 2002-04-22 | 88 | 2002-04-19 | 2002-04-22 | 0.5d | 0.62d |  |  |  |  |  |  |
| 90 | 3.2.3.2 | **Phase 2A Product Engineering** |  | 59.88d | 2002-04-22 | 2002-07-12 | 86 | 2002-04-22 | 2002-07-12 | 59.88d | 0.62d |  |  |  |  |  |  |
| 91 | 3.2.3.2.1 | Brainstorm Engineering Strategies |  | 0.25d | 2002-04-22 | 2002-04-22 |  | 2002-04-22 | 2002-04-22 | 0.25d | 0.62d | 0d |  |  |  |  |  |
| 92 | 3.2.3.2.2 | CD Sourcing and Research, Trip Prep |  | 6d | 2002-04-22 | 2002-04-30 | 91 | 2002-04-22 | 2002-04-30 | 6d | 0.62d |  |  |  |  |  |  |
| 93 | 3.2.3.2.3 | Asian Production Partner Trip and Download |  | 6d | 2002-05-01 | 2002-05-08 | 92 | 2002-05-01 | 2002-05-08 | 6d | 0d |  | must start on 2002-05-01 |  |  |  |  |
| 94 | 3.2.3.2.4 | Engineering and CAD work - 1st rev production |  | 12d | 2002-05-09 | 2002-05-24 | 93 | 2002-05-09 | 2002-05-24 | 12d | 25.62d | 0d |  |  |  |  |  |
| 95 | 3.2.3.2.5 | Preliminary Files to Tooling Vendors | milestone | 0d | 2002-05-24 | 2002-05-24 | 94 | 2002-05-24 | 2002-05-24 | 0d | 25.62d | 0d |  |  |  |  |  |
| 96 | 3.2.3.2.6 | CM File Review |  | 5.5d | 2002-05-27 | 2002-06-03 | 95 | 2002-05-27 | 2002-06-03 | 5.5d | 25.62d | 0d |  |  |  |  |  |
| 97 | 3.2.3.2.7 | Conference Call with CM (Feedback) |  | 0.5d | 2002-06-03 | 2002-06-03 | 96 | 2002-06-03 | 2002-06-03 | 0.5d | 25.62d | 0d |  |  |  |  |  |
| 98 | 3.2.3.2.8 | Engineering and CAD - 2nd rev (refinements, second level) |  | 10d | 2002-06-04 | 2002-06-17 | 97 | 2002-06-04 | 2002-06-17 | 10d | 25.62d | 9d |  |  |  |  |  |
| 99 | 3.2.3.2.9 | Engineering and CAD - CD faceplate aligment redesign, etc. |  | 5d | 2002-07-01 | 2002-07-05 | 98, 112 | 2002-07-01 | 2002-07-05 | 5d | 16.62d | 0d |  |  |  |  |  |
| 100 | 3.2.3.2.10 | Engineering and CAD - final venting, rack ears, file tweaks / reviews, etc. |  | 5d | 2002-07-08 | 2002-07-12 | 99 | 2002-07-08 | 2002-07-12 | 5d | 250.62d |  |  |  |  |  |  |
| 101 | 3.2.3.3 | **Phase 2B Thermal / Acoustic Baseline Testing** |  | 19d | 2002-05-09 | 2002-06-04 |  | 2002-05-09 | 2002-06-04 | 19d | 252.62d |  |  |  |  |  |  |
| 102 | 3.2.3.3.1 | Test Planning and Prep - Thermal |  | 1.5d | 2002-05-09 | 2002-05-10 | 93 | 2002-05-09 | 2002-05-10 | 1.5d | 255.12d | 0d |  |  |  |  |  |
| 103 | 3.2.3.3.2 | Test Planning and Prep - Acoustic |  | 2d | 2002-05-09 | 2002-05-10 | 93 | 2002-05-09 | 2002-05-10 | 2d | 252.62d | 0d |  |  |  |  |  |
| 104 | 3.2.3.3.3 | Thermal Data Collection |  | 15d | 2002-05-10 | 2002-05-31 | 102 | 2002-05-10 | 2002-05-31 | 15d | 255.12d |  |  |  |  |  |  |
| 105 | 3.2.3.3.4 | Acoustic Data Collection |  | 15d | 2002-05-13 | 2002-05-31 | 103 | 2002-05-13 | 2002-05-31 | 15d | 252.62d | 0d |  |  |  |  |  |
| 106 | 3.2.3.3.5 | Summary Preparation |  | 2d | 2002-06-03 | 2002-06-04 | 105 | 2002-06-03 | 2002-06-04 | 2d | 252.62d |  |  |  |  |  |  |
| 107 | 3.2.3.4 | **Phase 3 Prototyping** |  | 152.12d | 2002-06-03 | 2003-01-08 | 97 | 2002-06-03 | 2003-01-30 | 168.62d? | 19.62d |  |  |  | 1125.52h | 71,395.14 | 77,412.99 |
| 108 | 3.2.3.4.1 | **Prototyping Round 1** |  | 42.5d | 2002-06-03 | 2002-08-01 |  | 2002-06-03 | 2002-08-01 | 42.5d | 6.62d | 0d |  |  |  |  |  |
| 109 | 3.2.3.4.1.1 | Files to Proto Vendors | milestone | 0d | 2002-06-03 | 2002-06-03 |  | 2002-06-03 | 2002-06-03 | 0d | 30.62d | 0d |  |  |  |  |  |
| 110 | 3.2.3.4.1.2 | Quote Generation |  | 3d | 2002-06-04 | 2002-06-06 | 109 | 2002-06-04 | 2002-06-06 | 3d | 30.62d | 0d |  |  |  |  |  |
| 111 | 3.2.3.4.1.3 | Receive and Review Quotes |  | 2d | 2002-06-07 | 2002-06-10 | 110 | 2002-06-07 | 2002-06-10 | 2d | 30.62d | 14d |  |  |  |  |  |
| 112 | 3.2.3.4.1.4 | FINAL CD-ROM SPEC CONFIRMATION ON BTC | milestone | 0d | 2002-07-01 | 2002-07-01 | 111 | 2002-07-01 | 2002-07-01 | 0d | 16.62d | 0d | start no earlier than 2002-07-01 |  |  |  |  |
| 113 | 3.2.3.4.1.5 | Release FullPlay PO Numbers to Prototyper | milestone | 0d | 2002-07-05 | 2002-07-05 | 99, 112 | 2002-07-05 | 2002-07-05 | 0d | 16.62d | 0d |  |  |  |  |  |
| 114 | 3.2.3.4.1.6 | SLA / Sheet Metal Construction |  | 10d | 2002-07-08 | 2002-07-19 | 113 | 2002-07-08 | 2002-07-19 | 10d | 16.62d | 2d |  |  |  |  |  |
| 115 | 3.2.3.4.1.7 | Prototype Assembly Review and CAD Database Refinements |  | 6d | 2002-07-24 | 2002-07-31 | 114 | 2002-07-24 | 2002-07-31 | 6d | 14.62d | 0d | start no earlier than 2002-07-24 |  |  |  |  |
| 116 | 3.2.3.4.1.8 | Updated Files to Tooling Vendors |  | 0.5d | 2002-08-01 | 2002-08-01 | 115 | 2002-08-01 | 2002-08-01 | 0.5d | 14.62d |  |  |  |  |  |  |

| ID | WBS | Task | Type | Duration | Start | Finish | Predecessors | Baseline start | Baseline finish | Baseline duration | Total slack | Free slack | Constraint | Resources | Work | Cost | Baseline cost |
| --- | --- | --- | --- | --- | --- | --- | --- | --- | --- | --- | --- | --- | --- | --- | --- | --- | --- |
| 117 | 3.2.3.4.2 | **Prototyping Round 2** |  | 54.12d | 2002-08-01 | 2002-10-17 | 108 | 2002-08-01 | 2002-10-17 | 54.38d? | 3.62d | 2d |  |  | 911.52h | 46,785.14 | 45,902.99 |
| 118 | 3.2.3.4.2.1 | CAD Tweaks (UL / CE / FCC Construction Review) |  | 4d | 2002-08-01 | 2002-08-07 |  | 2002-08-01 | 2002-08-07 | 4d | 3.62d | 0d |  | ME1 | 32h | 3,680 | 3,680 |
| 119 | 3.2.3.4.2.2 | FP - Electrical (Connector / Cable Changes | milestone | 0d | 2002-08-07 | 2002-08-07 | 118 | 2002-08-07 | 2002-08-07 | 0d | 3.62d | 0d |  |  |  |  |  |
| 120 | 3.2.3.4.2.3 | Updated Files to Prototyping Vendors |  | 1d | 2002-08-07 | 2002-08-08 | 119 | 2002-08-07 | 2002-08-08 | 1d | 3.62d |  |  | ME1 | 8h | 920 | 920 |
| 121 | 3.2.3.4.2.4 | **Plastics (37)** |  | 45.5d | 2002-08-14 | 2002-10-17 | 120 | 2002-08-14 | 2002-10-17 | 45.75d | 18.5d | 0d |  |  | 478h | 29,786 | 29,096 |
| 122 | 3.2.3.4.2.4.1 | Issue CAD drawings |  | 1d | 2002-08-14 | 2002-08-15 |  | 2002-08-14 | 2002-08-15 | 1d | 28d | 0d | start no earlier than 2002-08-14 | ME1 | 8h | 920 | 920 |
| 123 | 3.2.3.4.2.4.2 | Issue FP PO |  | 3d | 2002-08-15 | 2002-08-20 | 122 | 2002-08-15 | 2002-08-20 | 3d | 28d | 0d |  | PM1 | 24h |  |  |
| 124 | 3.2.3.4.2.4.3 | SLA |  | 5d | 2002-08-20 | 2002-08-27 | 123 | 2002-08-20 | 2002-08-27 | 5d | 28d | 0d |  | Moeller | 40h |  |  |
| 125 | 3.2.3.4.2.4.4 | SLA review |  | 0.25d | 2002-08-27 | 2002-08-27 | 124 | 2002-08-27 | 2002-08-27 | 0.25d | 28d | 0d |  | Moeller | 2h |  |  |
| 126 | 3.2.3.4.2.4.5 | 2 silicon molds |  | 2d | 2002-08-27 | 2002-08-29 | 125 | 2002-08-27 | 2002-08-29 | 2d | 28d | 0d |  | Moeller | 16h |  |  |
| 127 | 3.2.3.4.2.4.6 | First Cast review |  | 1d | 2002-08-29 | 2002-08-30 | 126 | 2002-08-29 | 2002-08-30 | 1d | 28d | 0d |  | ME1 | 8h | 920 | 920 |
| 128 | 3.2.3.4.2.4.7 | 1st Cast 20 sets |  | 3d | 2002-08-30 | 2002-09-05 | 127 | 2002-08-30 | 2002-09-05 | 3d | 28d | 0d |  | Moeller | 24h |  |  |
| 129 | 3.2.3.4.2.4.8 | Clean 20 sets |  | 3.5d | 2002-09-05 | 2002-09-10 | 128 | 2002-09-05 | 2002-09-10 | 3.5d | 28d | 0d |  | Moeller | 28h |  |  |
| 130 | 3.2.3.4.2.4.9 | Paint 20 sets |  | 3d | 2002-09-10 | 2002-09-13 | 129 | 2002-09-10 | 2002-09-13 | 3d | 37.25d | 0d |  | Moeller | 24h |  |  |
| 131 | 3.2.3.4.2.4.10 | Review 20 sets |  | 0.25d | 2002-09-13 | 2002-09-16 | 130 | 2002-09-13 | 2002-09-16 | 0.25d | 37.25d | 0d |  | ME1; PM1 | 4h | 230 | 230 |
| 132 | 3.2.3.4.2.4.11 | Silkscreen/pad print review |  | 0.25d | 2002-09-16 | 2002-09-16 | 131 | 2002-09-16 | 2002-09-16 | 0.25d | 37.25d | 0d |  | ME1; PM1 | 4h | 230 | 230 |
| 133 | 3.2.3.4.2.4.12 | Silkscreen/Pad Print 20 sets |  | 4d | 2002-09-16 | 2002-09-20 | 132 | 2002-09-16 | 2002-09-20 | 4d | 37.25d | 0d |  | Moeller | 32h |  |  |
| 134 | 3.2.3.4.2.4.13 | Prep for delivery |  | 0.25d | 2002-09-20 | 2002-09-20 | 133 | 2002-09-20 | 2002-09-20 | 0.25d | 37.25d | 0d |  | Moeller | 2h |  |  |
| 135 | 3.2.3.4.2.4.14 | Ship 1st 20 plastic sets | milestone | 0.25d | 2002-09-20 | 2002-09-20 | 134 | 2002-09-20 | 2002-09-20 | 0.25d | 37.25d |  |  | Moeller | 2h |  |  |
| 136 | 3.2.3.4.2.4.15 | 2nd cast 20 sets |  | 6d | 2002-09-10 | 2002-09-18 | 129 | 2002-09-10 | 2002-09-18 | 6d | 28d | 0d |  | Moeller | 48h |  |  |
| 137 | 3.2.3.4.2.4.16 | Clean 20 sets |  | 4d | 2002-09-18 | 2002-09-24 | 136 | 2002-09-18 | 2002-09-24 | 4d | 28d | 0d |  | Moeller | 32h |  |  |
| 138 | 3.2.3.4.2.4.17 | Paint 20 sets |  | 2d | 2002-09-24 | 2002-09-26 | 137 | 2002-09-24 | 2002-09-26 | 2d | 28d | 0d |  | Moeller | 16h |  |  |
| 139 | 3.2.3.4.2.4.18 | Review 20 sets |  | 0.25d | 2002-09-26 | 2002-09-27 | 138 | 2002-09-26 | 2002-09-27 | 0.25d | 28d | 0d |  | ME1; PM1 | 4h | 230 | 230 |
| 140 | 3.2.3.4.2.4.19 | Silkscreen/ pad print 20 sets |  | 4.5d | 2002-09-27 | 2002-10-03 | 139 | 2002-09-27 | 2002-10-03 | 4.5d | 28d | 0d |  | Moeller | 36h |  |  |
| 141 | 3.2.3.4.2.4.20 | Prep for delivery |  | 0.25d | 2002-10-03 | 2002-10-03 | 140 | 2002-10-03 | 2002-10-03 | 0.25d | 28d | 5.25d |  | Moeller | 2h |  |  |
| 142 | 3.2.3.4.2.4.21 | Ship 2nd 20 plastic sets | milestone | 0.25d | 2002-10-11 | 2002-10-11 | 141 | 2002-10-03 | 2002-10-04 | 0.25d | 22.75d |  | start no earlier than 2002-10-11 | Moeller | 2h |  |  |
| 143 | 3.2.3.4.2.4.22 | review 5 jackplates at Moeller |  | 1d | 2002-09-17 | 2002-09-18 | 164 | 2002-09-17 | 2002-09-18 | 1d | 35d | 0d |  | ME1; PM1 | 16h | 920 | 920 |
| 144 | 3.2.3.4.2.4.23 | Paint 5 jackplates |  | 2d | 2002-09-18 | 2002-09-20 | 143 | 2002-09-18 | 2002-09-20 | 2d | 35d | 0d |  | Moeller | 16h |  |  |
| 145 | 3.2.3.4.2.4.24 | Review Jackplate silkscreen |  | 0.25d | 2002-09-20 | 2002-09-20 | 144 | 2002-09-20 | 2002-09-20 | 0.25d | 35d | 0d |  | ME1; PM1 | 4h | 230 | 230 |
| 146 | 3.2.3.4.2.4.25 | Silkscreen 5 jackplates |  | 2d | 2002-09-20 | 2002-09-24 | 145 | 2002-09-20 | 2002-09-24 | 2d | 35d | 0d |  | Moeller | 16h |  |  |
| 147 | 3.2.3.4.2.4.26 | review 5 chasssis and covers |  | 1d | 2002-10-04 | 2002-10-07 | 166 | 2002-09-23 | 2002-09-23 | 0.25d | 0d |  |  | ME1; PM1 | 16h | 920 | 230 |
| 148 | 3.2.3.4.2.4.27 | Send 1st chassis cover set to Moeller from Fiori |  | 1d | 2002-10-07 | 2002-10-08 | 147 |  |  |  | 24d | 4d |  |  |  |  |  |
| 149 | 3.2.3.4.2.4.28 | paint 5 chassis and covers |  | 2d | 2002-10-14 | 2002-10-16 | 169, 148 | 2002-09-23 | 2002-09-25 | 2d | 20d |  |  | Moeller | 16h |  |  |
| 150 | 3.2.3.4.2.4.29 | Prep 1st 5 sets |  | 0.5d | 2002-09-24 | 2002-09-24 | 146 | 2002-09-25 | 2002-09-25 | 0.5d | 35d | 0d |  | Moeller | 4h |  |  |
| 151 | 3.2.3.4.2.4.30 | Ship 1st 5 metal sets |  | 0.25d | 2002-09-24 | 2002-09-25 | 150 | 2002-09-25 | 2002-09-26 | 0.25d | 35d |  |  | Moeller | 2h |  |  |
| 152 | 3.2.3.4.2.4.31 | review 32 sets at Moeller |  | 0.25d | 2002-10-14 | 2002-10-14 | 169 | 2002-10-09 | 2002-10-09 | 0.25d | 0d |  |  | ME1; PM1 | 4h | 230 | 230 |
| 153 | 3.2.3.4.2.4.32 | Paint 32 sets |  | 2d | 2002-10-14 | 2002-10-16 | 152 | 2002-10-09 | 2002-10-11 | 2d | 0d |  |  | Moeller | 16h |  |  |
| 154 | 3.2.3.4.2.4.33 | Silkscreen jackplates | milestone | 0d | 2002-10-16 | 2002-10-16 | 153 | 2002-10-11 | 2002-10-15 | 2d | 0d |  |  | Moeller |  |  |  |
| 155 | 3.2.3.4.2.4.34 | Prep 37 sets |  | 1d | 2002-10-16 | 2002-10-17 | 154 | 2002-10-15 | 2002-10-17 | 2d | 0d |  |  | Moeller | 8h |  |  |
| 156 | 3.2.3.4.2.4.35 | Ship 2nd metal sets |  | 0.25d | 2002-10-17 | 2002-10-17 | 155 | 2002-10-17 | 2002-10-17 | 0.25d | 0d |  |  | Moeller | 2h |  |  |

Notes:
- 147: review happened at Fiori and only 1 set.

| ID | WBS | Task | Type | Duration | Start | Finish | Predecessors | Baseline start | Baseline finish | Baseline duration | Total slack | Free slack | Constraint | Resources | Work | Cost | Baseline cost |
| --- | --- | --- | --- | --- | --- | --- | --- | --- | --- | --- | --- | --- | --- | --- | --- | --- | --- |
| 157 | 3.2.3.4.2.5 | **Sheet Metal Build (QTY 37)** |  | 42d | 2002-08-14 | 2002-10-14 | 120 | 2002-08-14 | 2002-10-09 | 39.25d? | 0d |  |  | ME1 [7.6%] | 393.52h | 12,399.14 | 12,206.99 |
| 158 | 3.2.3.4.2.5.1 | Issue CAD drawings |  | 1d | 2002-08-14 | 2002-08-15 |  | 2002-08-14 | 2002-08-15 | 1d | 0d |  | start no earlier than 2002-08-14 | ME1 |  |  |  |
| 159 | 3.2.3.4.2.5.2 | Issue FP PO |  | 3d | 2002-08-15 | 2002-08-20 | 158 | 2002-08-15 | 2002-08-20 | 3d | 0d |  |  | PM1 | 24h |  |  |
| 160 | 3.2.3.4.2.5.3 | Programming |  | 2d | 2002-08-20 | 2002-08-22 | 159 | 2002-08-20 | 2002-08-22 | 2d | 0d |  |  | Profab | 16h |  |  |
| 161 | 3.2.3.4.2.5.4 | Tooling |  | 10d | 2002-08-22 | 2002-09-06 | 160 | 2002-08-22 | 2002-09-06 | 10d | 0d |  |  | Profab | 80h |  |  |
| 162 | 3.2.3.4.2.5.5 | Set-up |  | 1d | 2002-09-06 | 2002-09-09 | 161 | 2002-09-06 | 2002-09-09 | 1d | 0d |  |  | Profab | 8h |  |  |
| 163 | 3.2.3.4.2.5.6 | 1st 5 jackplates (built all 37 at once) |  | 5d | 2002-09-09 | 2002-09-16 | 162 | 2002-09-09 | 2002-09-16 | 5d | 35d | 0d |  | Profab | 40h |  |  |
| 164 | 3.2.3.4.2.5.7 | ship 1st 5 jackplates (shipped all 37 at once) |  | 1d | 2002-09-16 | 2002-09-17 | 163 | 2002-09-16 | 2002-09-17 | 1d | 35d | 0d |  | Profab | 8h |  |  |
| 165 | 3.2.3.4.2.5.8 | 1st 5 chassis, covers and racks |  | 18d | 2002-09-09 | 2002-10-03 | 162 | 2002-09-09 | 2002-09-20 | 9d | 0d |  |  | Profab | 144h |  |  |
| 166 | 3.2.3.4.2.5.9 | ship 1st 5 chassis, covers and racks |  | 1d | 2002-10-03 | 2002-10-04 | 165 | 2002-09-20 | 2002-09-23 | 1d | 0d |  |  | Profab | 8h |  |  |
| 167 | 3.2.3.4.2.5.10 | Set-up |  | 1d | 2002-10-07 | 2002-10-08 | 147 | 2002-09-23 | 2002-09-24 | 1d | 0d |  |  | Profab | 8h |  |  |
| 168 | 3.2.3.4.2.5.11 | 2nd 32 sets |  | 3d | 2002-10-08 | 2002-10-11 | 167 | 2002-09-24 | 2002-10-08 | 10d | 0d |  |  | Profab | 24h |  |  |
| 169 | 3.2.3.4.2.5.12 | Ship |  | 1d | 2002-10-11 | 2002-10-14 | 168 | 2002-10-08 | 2002-10-09 | 1d? | 0d |  |  | Profab | 8h |  |  |
| 170 | 3.2.3.4.2.6 | Parts Received | milestone | 0d | 2002-10-17 | 2002-10-17 | 121 | 2002-10-17 | 2002-10-17 | 0d | 18.5d |  |  |  |  |  |  |
| 171 | 3.2.3.4.3 | Limited CAD Updates as Required |  | 5d | 2002-10-23 | 2002-10-30 | 13 | 2002-10-01 | 2002-10-08 | 5d | 152.5d |  |  | ME1 [50%]; P507001 | 20h | 2,300 | 2,300 |
| 172 | 3.2.3.4.4 | **Proto #3** |  | 33.5d | 2002-11-18 | 2003-01-08 | 193 | 2002-12-13 | 2003-01-30 | 33.5d | 0d |  |  |  | 194h | 22,310 | 22,310 |
| 173 | 3.2.3.4.4.1 | CAD Revisions |  | 5d | 2002-11-18 | 2002-11-25 |  | 2002-12-13 | 2002-12-20 | 5d | 0d |  |  | ME1 | 40h | 4,600 | 4,600 |
| 174 | 3.2.3.4.4.2 | Updated Files to Prototyping Vendors / Preliminary to Tooling |  | 1d | 2002-11-25 | 2002-11-26 | 173, 206 | 2002-12-20 | 2002-12-23 | 1d | 0d |  |  | ME1 | 8h | 920 | 920 |
| 175 | 3.2.3.4.4.3 | Release FullPlay PO Numbers to Prototypers | milestone | 0d | 2002-11-26 | 2002-11-26 | 174 | 2002-12-23 | 2002-12-23 | 0d | 0d |  |  |  |  |  |  |
| 176 | 3.2.3.4.4.4 | SLA Build (1 unit) |  | 5d | 2002-11-26 | 2002-12-05 | 175 | 2002-12-23 | 2002-12-31 | 5d | 0d |  |  | ME1 [25%] | 10h | 1,150 | 1,150 |
| 177 | 3.2.3.4.4.5 | Urethane Casting (based on SLA scale master) ( 5 units) |  | 15d | 2002-12-05 | 2002-12-27 | 176 | 2002-12-31 | 2003-01-21 | 15d | 0d |  |  | ME1 [25%] | 30h | 3,450 | 3,450 |
| 178 | 3.2.3.4.4.6 | Sheet Metal Build (QTY 5) |  | 15d | 2002-11-26 | 2002-12-19 | 175 | 2002-12-23 | 2003-01-14 | 15d | 5d |  |  | ME1 [25%] | 30h | 3,450 | 3,450 |
| 179 | 3.2.3.4.4.7 | Parts Received | milestone | 0d | 2002-12-27 | 2002-12-27 | 177, 178 | 2003-01-21 | 2003-01-21 | 0d | 0d |  |  |  |  |  |  |
| 180 | 3.2.3.4.4.8 | Proto #3 Run First Unit Assembly / Review |  | 2d | 2002-12-27 | 2002-12-31 | 179 | 2003-01-21 | 2003-01-23 | 2d | 0d |  |  | ME1; ME2 | 32h | 3,680 | 3,680 |
| 181 | 3.2.3.4.4.9 | Limited CAD Updates as Required |  | 5d | 2002-12-31 | 2003-01-07 | 180 | 2003-01-23 | 2003-01-30 | 5d | 0d |  |  | ME1 [50%] | 20h | 2,300 | 2,300 |
| 182 | 3.2.3.4.4.10 | Proto #3 Assembly Support |  | 5d | 2002-12-31 | 2003-01-07 | 180 | 2003-01-23 | 2003-01-30 | 5d | 106.5d |  |  | ME1 [50%] | 20h | 2,300 | 2,300 |
| 183 | 3.2.3.4.4.11 | Final CAD Release to Tooling Vendors |  | 0.5d | 2003-01-07 | 2003-01-08 | 206, 181 | 2003-01-30 | 2003-01-30 | 0.5d | 0d |  |  | ME1 | 4h | 460 | 460 |

| ID | WBS | Task | Duration | Start | Finish | Predecessors | Baseline start | Baseline finish | Baseline duration | Total slack | Free slack | Constraint | Resources | Work | Cost | Baseline cost |
| --- | --- | --- | --- | --- | --- | --- | --- | --- | --- | --- | --- | --- | --- | --- | --- | --- |
| 184 | 3.2.3.5 | **Tooling and Production Ramp Support (TBD)** | 157d? | 2002-08-13 | 2003-03-26 |  | 2002-08-13 | 2003-04-17 | 173.5d | 51d |  |  |  | 324h | 37,260 | 37,260 |
| 185 | 3.2.3.5.1 | CTF Drawing Creation | 30d | 2002-08-13 | 2002-09-25 |  | 2002-08-13 | 2002-09-25 | 30d | 178d |  | start no earlier than 2002-08-13 | ME1 [10%] | 24h | 2,760 | 2,760 |
| 186 | 3.2.3.5.2 | CAD Release and PO to tooler | 1d? | 2002-11-25 | 2002-11-26 | 174SS |  |  |  | 2.5d | 0d |  |  |  |  |  |
| 187 | 3.2.3.5.3 | Tooling Design Start / Order Raw Mat'ls | 5w | 2002-11-26 | 2003-01-03 | 186 | 2002-12-23 | 2003-01-28 | 5w | 2.5d |  |  | ME1 [25%] | 50h | 5,750 | 5,750 |
| 188 | 3.2.3.5.4 | Tooling Finalization | 3w | 2003-01-08 | 2003-01-29 | 183, 187 | 2003-01-30 | 2003-02-20 | 3w | 0d |  |  | ME1 [25%] | 30h | 3,450 | 3,450 |
| 189 | 3.2.3.5.5 | First Articles | 5d | 2003-01-29 | 2003-02-05 | 188 | 2003-02-20 | 2003-02-27 | 5d | 0d |  |  | ME1 | 40h | 4,600 | 4,600 |
| 190 | 3.2.3.5.6 | Tooling Mods and Texturing | 2w | 2003-02-05 | 2003-02-19 | 189 | 2003-02-27 | 2003-03-13 | 2w | 0d |  |  | ME1 | 80h | 9,200 | 9,200 |
| 191 | 3.2.3.5.7 | Design Support for Manufacturing Ramp | 5w | 2003-02-19 | 2003-03-26 | 190 | 2003-03-13 | 2003-04-17 | 5w | 51d |  |  | ME1 [50%] | 100h | 11,500 | 11,500 |
| 192 | 3.2.4 | **Regulatory, Environmental and Reliability Testing** | 290.5d? | 2002-01-01 | 2003-02-17 |  | 2002-01-01 | 2003-03-19 | 312.75d? | 75.5d |  |  |  | 746h | 59,160 | 83,080 |
| 193 | 3.2.4.1 | **Preliminary** | 228.5d | 2002-01-01 | 2002-11-18 |  | 2002-01-01 | 2002-12-13 | 245d? | 0d |  |  |  | 746h | 58,560 | 69,370 |
| 194 | 3.2.4.1.1 | **Planning and Preparation** | 154.5d | 2002-01-01 | 2002-08-05 |  | 2002-01-01 | 2002-08-05 | 154.5d | 54d | 34.5d |  |  | 44h | 4,510 | 4,510 |
| 195 | 3.2.4.1.1.1 | Initial Quoting and Vendor Communication | 5d | 2002-07-22 | 2002-07-26 |  | 2002-07-22 | 2002-07-26 | 5d | 54.12d | 0d | start no earlier than 2002-07-22 | ME2 [25%] | 10h | 1,150 | 1,150 |
| 196 | 3.2.4.1.1.2 | Quote Review and Partner Selection | 3d | 2002-07-29 | 2002-07-31 | 195 | 2002-07-29 | 2002-07-31 | 3d | 54.12d | 0.12d |  | ME2 [50%] | 12h | 1,380 | 1,380 |
| 197 | 3.2.4.1.1.3 | Preliminary Construction Review | 2.5d | 2002-08-01 | 2002-08-05 | 196 | 2002-08-01 | 2002-08-05 | 2.5d | 54d | 8.5d | start no earlier than 2002-08-01 | ME2 [60%] | 12h | 1,980 | 1,980 |
| 198 | 3.2.4.1.1.4 | Pass/ Fail Descriptions for Testing | 1w | 2002-01-01 | 2002-01-08 |  | 2002-01-01 | 2002-01-08 | 1w | 203.5d |  |  |  |  |  |  |
| 199 | 3.2.4.1.1.5 | Prepare Data Sheets, Schematics, BOM, gerber etc. for UL testing | 1w | 2002-01-01 | 2002-01-08 |  | 2002-01-01 | 2002-01-08 | 1w | 203.5d |  |  | EE1 [25%] | 10h |  |  |
| 200 | 3.2.4.1.2 | **Acquire Testing Devices** | 10d | 2002-09-17 | 2002-10-01 | 49 | 2002-01-01 | 2002-01-02 | 1d? | 32.5d | 16.5d |  | EE1 | 240h | 14,000 | 14,000 |
| 201 | 3.2.4.1.2.1 | Audio Precision measurement equipment | 10d | 2002-09-17 | 2002-10-01 |  | 2002-01-01 | 2002-01-02 | 1d? | 32.5d |  |  | Lead | 80h | 14,000 | 14,000 |
| 202 | 3.2.4.1.2.2 | ESD Gun | 10d | 2002-09-17 | 2002-10-01 |  | 2002-01-01 | 2002-01-02 | 1d? | 32.5d |  |  | Josh | 80h |  |  |
| 203 | 3.2.4.1.3 | **FCC** | 4d | 2002-10-21 | 2002-10-25 | 34 | 2002-10-03 | 2002-10-11 | 6d | 16d |  |  |  | 26h | 3,550 | 3,780 |
| 204 | 3.2.4.1.3.1 | EMI Proto 2 Compliance Testing w/ Rod Munro | 2d | 2002-10-21 | 2002-10-23 | 285 | 2002-10-03 | 2002-10-08 | 3d | 16d | 0d | start no earlier than 2002-10-14 | ME2 [75%]; EE1 [75%]; P507002; P507003 | 18h | 3,090 | 3,090 |
| 205 | 3.2.4.1.3.2 | Summarize test results and feedback into design | 2d | 2002-10-23 | 2002-10-25 | 204 | 2002-10-08 | 2002-10-11 | 3d | 16d |  |  | ME2 [25%]; EE1 [25%] | 8h | 460 | 690 |
| 206 | 3.2.4.1.4 | **Safety** | 39.5d | 2002-09-24 | 2002-11-18 | 194, 34 | 2002-10-03 | 2002-10-29 | 18d? | 0d |  |  |  | 416h | 11,500 | 13,800 |
| 207 | 3.2.4.1.4.1 | Identify Safety Warning Labels and Text Requirements | 1d | 2002-09-24 | 2002-09-25 |  | 2002-10-03 | 2002-10-04 | 1d? | 38.5d |  |  |  |  |  | 920 |
| 208 | 3.2.4.1.4.2 | PO Submission to ITS or UL lab | 1d | 2002-09-24 | 2002-09-25 |  |  |  |  | 38.5d |  |  |  |  |  |  |
| 209 | 3.2.4.1.4.3 | Proto 2 - Test and Report | 4w | 2002-10-21 | 2002-11-18 | 285 | 2002-10-08 | 2002-10-29 | 3w | 0d |  |  | P507002; EE1 [110%]; P507004 | 176h | 11,500 | 12,880 |

| ID | WBS | Task | Type | Duration | Start | Finish | Predecessors | Baseline start | Baseline finish | Baseline duration | Total slack | Free slack | Constraint | Resources | Work | Cost | Baseline cost |
| --- | --- | --- | --- | --- | --- | --- | --- | --- | --- | --- | --- | --- | --- | --- | --- | --- | --- |
| 210 | 3.2.4.1.5 | **FDA** |  | 21.5d | 2002-09-24 | 2002-10-23 | 34 | 2002-09-17 | 2002-11-13 | 41d? | 18d |  |  |  | 12h | 5,000 | 6,380 |
| 211 | 3.2.4.1.5.1 | 21 CFR Rules Review |  | 3w | 2002-09-24 | 2002-10-15 |  | 2002-09-17 | 2002-10-08 | 3w | 24.5d | 0d | start no earlier than 2002-08-08 | PM1 [10%]; ME2 [10%] | 12h |  |  |
| 212 | 3.2.4.1.5.2 | FDA Laser Consultation | milestone | 0d | 2002-10-15 | 2002-10-15 | 211 | 2002-10-08 | 2002-10-29 | 3w | 24.5d | 0d |  | PM1 [10%]; ME2 [10%] |  | 5,000 | 6,380 |
| 213 | 3.2.4.1.5.3 | Send sample to BTC | milestone | 0d | 2002-10-15 | 2002-10-15 | 212 | 2002-10-29 | 2002-10-30 | 1d? | 24.5d | 6.5d |  |  |  |  |  |
| 214 | 3.2.4.1.5.4 | FDA Testing | milestone | 0d | 2002-10-23 | 2002-10-23 | 213, 204 | 2002-10-30 | 2002-11-13 | 2w | 18d |  |  | P507003 |  |  |  |
| 215 | 3.2.4.1.6 | **ESD** |  | 2d | 2002-10-23 | 2002-10-25 | 34 | 2002-10-08 | 2002-10-10 | 2d | 16d |  |  |  | 8h |  |  |
| 216 | 3.2.4.1.6.1 | ESD Proto 2 Testing |  | 2d | 2002-10-23 | 2002-10-25 | 200, 204, 285 | 2002-10-08 | 2002-10-10 | 2d | 16d |  |  | EE1 [50%]; P507004 | 8h |  |  |
| 217 | 3.2.4.1.7 | **Environmental** |  | 0d | 2002-10-21 | 2002-10-21 | 34, 285 | 2002-11-13 | 2002-11-27 | 10d | 20d |  |  |  |  | 15,000 | 21,900 |
| 218 | 3.2.4.1.7.1 | Product - Thermal Mapping | milestone | 0d | 2002-10-21 | 2002-10-21 | 198 | 2002-11-13 | 2002-11-27 | 2w | 20d |  |  | ME2 [12.5%]; P507004; Dynamark |  |  | 1,150 |
| 219 | 3.2.4.1.7.2 | Product - Temperature | milestone | 0d | 2002-10-21 | 2002-10-21 | 198 | 2002-11-13 | 2002-11-27 | 2w | 20d |  |  | ME2 [12.5%]; P507004; Dynamark |  |  | 1,150 |
| 220 | 3.2.4.1.7.3 | Product - Altitude | milestone | 0d | 2002-10-21 | 2002-10-21 | 198 | 2002-11-13 | 2002-11-27 | 2w | 20d |  |  | ME2 [12.5%]; P507004; Dynamark |  |  | 1,150 |
| 221 | 3.2.4.1.7.4 | Product - Humidity | milestone | 0d | 2002-10-21 | 2002-10-21 | 198 | 2002-11-13 | 2002-11-27 | 2w | 20d |  |  | ME2 [12.5%]; P507004; Dynamark |  |  | 1,150 |
| 222 | 3.2.4.1.7.5 | Product - Vibration | milestone | 0d | 2002-10-21 | 2002-10-21 | 198 | 2002-11-13 | 2002-11-27 | 2w | 20d |  |  | ME2 [12.5%]; P507004; Dynamark |  |  | 1,150 |
| 223 | 3.2.4.1.7.6 | Product - Shock / Drop / Impact | milestone | 0d | 2002-10-21 | 2002-10-21 |  | 2002-11-13 | 2002-11-27 | 2w | 20d |  |  | ME2 [12.5%]; P507004; Dynamark |  |  | 1,150 |
| 224 | 3.2.4.1.8 | **Seagate Testing** |  | 10d | 2002-10-29 | 2002-11-12 |  | 2002-11-27 | 2002-12-13 | 10d | 4.5d |  |  |  |  | 5,000 | 5,000 |
| 225 | 3.2.4.1.8.1 | Various tests performed at Seagate labs |  | 2w | 2002-10-29 | 2002-11-12 |  | 2002-11-27 | 2002-12-13 | 2w | 4.5d |  | start no earlier than 2002-10-29 | Seagate |  | 5,000 | 5,000 |
| 226 | 3.2.4.2 | **Testing - Shipping and Packaging Solution (ISTA)** |  | 40d | 2002-09-19 | 2002-11-14 | 267 | 2002-07-29 | 2002-12-10 | 93d | 140d | 0d |  |  |  | 600 | 13,710 |
| 227 | 3.2.4.2.1 | PO, Sample Box Contents, Package Artwork to Tuscarora | milestone | 0d | 2002-09-19 | 2002-09-19 |  | 2002-07-29 | 2002-08-12 | 10d | 140d | 0d | start no earlier than 2002-09-19 |  |  |  | 2,300 |
| 228 | 3.2.4.2.2 | Preliminary Design and Testing |  | 10d | 2002-09-19 | 2002-10-03 | 227 | 2002-08-12 | 2002-08-15 | 3d | 140d | 0d |  |  |  |  | 1,380 |
| 229 | 3.2.4.2.3 | Add graphic design |  | 5d | 2002-10-03 | 2002-10-10 | 228 |  |  |  | 140d | 0d |  |  |  |  |  |
| 230 | 3.2.4.2.4 | Package Design Results Review and Iteration |  | 5d | 2002-10-10 | 2002-10-17 | 229 | 2002-08-15 | 2002-08-20 | 3d | 140d | 0d |  |  |  |  | 1,380 |
| 231 | 3.2.4.2.5 | 50 unit manufacturing run of Shipping Package solution |  | 4w | 2002-10-17 | 2002-11-14 | 230 | 2002-08-20 | 2002-08-27 | 5d | 140d |  |  |  |  |  | 2,300 |
| 232 | 3.2.4.2.6 | Formal ISTA Testing / Certification |  | 5d | 2002-09-19 | 2002-09-26 | 227 | 2002-12-03 | 2002-12-10 | 5d | 175d |  |  | Tuscarora |  | 600 | 5,200 |
| 233 | 3.2.4.3 | **Final Regulatory** |  | 20d? | 2003-01-20 | 2003-02-17 | 238, 193, 241, 293 | 2003-02-19 | 2003-03-19 | 20d? | 16.5d |  |  |  |  |  |  |
| 234 | 3.2.4.3.1 | Build Testing Models from production materials |  | 1d? | 2003-02-05 | 2003-02-06 | 189 | 2003-02-27 | 2003-02-28 | 1d? | 24d |  |  |  |  |  |  |
| 235 | 3.2.4.3.2 | Final FCC Certification |  | 2w | 2003-01-20 | 2003-02-03 |  | 2003-02-19 | 2003-03-05 | 2w | 26.5d |  |  |  |  |  |  |
| 236 | 3.2.4.3.3 | Final FDA 21 CFR laser certification |  | 2w | 2003-01-20 | 2003-02-03 |  | 2003-02-19 | 2003-03-05 | 2w | 16.5d | 0d |  |  |  |  |  |
| 237 | 3.2.4.3.4 | Final UL, cUL Certification |  | 2w | 2003-02-03 | 2003-02-17 | 236 | 2003-03-05 | 2003-03-19 | 2w | 16.5d |  |  |  |  |  |  |

Notes:
- 212: $5000 fee an estimate for consulting and possible testing, reporting and certification

| ID | WBS | Task | Duration | Start | Finish | Predecessors | Baseline start | Baseline finish | Baseline duration | Total slack | Free slack | Constraint | Resources | Work | Cost | Baseline cost |
| --- | --- | --- | --- | --- | --- | --- | --- | --- | --- | --- | --- | --- | --- | --- | --- | --- |
| 238 | 3.2.4.4 | **Power Supply Certification** | 21d? | 2002-08-16 | 2002-09-17 |  | 2002-08-16 | 2002-09-17 | 21d? | 103d | 86.5d |  |  |  |  |  |
| 239 | 3.2.4.4.1 | Factory Approval and Vendor Qualification | 1d? | 2002-08-16 | 2002-08-19 |  | 2002-08-16 | 2002-08-19 | 1d? | 103d | 0d | start no earlier than 2002-08-16 |  |  |  |  |
| 240 | 3.2.4.4.2 | UL, cUL registrations | 4w | 2002-08-19 | 2002-09-17 | 239 | 2002-08-19 | 2002-09-17 | 4w | 103d |  |  |  |  |  |  |
| 241 | 3.2.5 | **Documentation and Art** | 174.5d? | 2002-05-15 | 2003-01-20 |  | 2002-05-15 | 2003-02-05 | 186.75d? | 16.5d | 0d |  |  | 277.47h | 3,190 | 3,135 |
| 242 | 3.2.5.1 | **Product Requirements** | 20d | 2002-08-16 | 2002-09-16 |  | 2002-08-16 | 2002-09-16 | 20d | 43d |  |  |  |  |  |  |
| 243 | 3.2.5.1.1 | DJ-C40 Product Requirements Document | 4w | 2002-08-16 | 2002-09-16 | 29 | 2002-08-16 | 2002-09-16 | 4w | 43d | 0d |  |  |  |  |  |
| 244 | 3.2.5.2 | **DJ-C40** | 107.5d? | 2002-08-16 | 2003-01-20 |  | 2002-08-16 | 2003-02-05 | 119.75d? | 16.5d | 0d |  |  | 168.47h | 2,145 | 2,145 |
| 245 | 3.2.5.2.1 | **User Guide** | 38d? | 2002-08-16 | 2002-10-10 | 29 | 2002-08-16 | 2002-10-10 | 38d? | 81d | 0d |  |  | 143.17h | 1,650 | 1,650 |
| 246 | 3.2.5.2.1.1 | Final DJ-C40 product graphics to graphic design | 0.06d? | 2002-09-03 | 2002-09-03 |  | 2002-09-03 | 2002-09-03 | 0.06d? | 82.94d | 0d | start no earlier than 2002-09-03 | PM1 | 0.5h |  |  |
| 247 | 3.2.5.2.1.2 | Update all graphics in User Guide with new / final design | 10d | 2002-09-03 | 2002-09-17 | 246 | 2002-09-03 | 2002-09-17 | 10d | 82.94d | 1.94d |  | GA1 [75%]; PM2 [20%] | 62.67h | 1,650 | 1,650 |
| 248 | 3.2.5.2.1.3 | **Update all Content** | 20d? | 2002-08-16 | 2002-09-16 |  | 2002-08-16 | 2002-09-16 | 20d? | 99d |  |  | PM2 [40%] | 80h |  |  |
| 249 | 3.2.5.2.1.3.1 | Regulatory message, Warnings, Disclaimers, Acknowlegements | 4w | 2002-08-16 | 2002-09-16 | 197 | 2002-08-16 | 2002-09-16 | 4w | 99d | 18d |  | PM1 [10%] | 16h |  |  |
| 250 | 3.2.5.2.1.3.2 | User guide | 1d? | 2002-08-16 | 2002-08-19 |  | 2002-08-16 | 2002-08-19 | 1d? | 118d |  |  |  |  |  |  |
| 251 | 3.2.5.2.1.3.3 | FML | 1d? | 2002-08-16 | 2002-08-19 |  | 2002-08-16 | 2002-08-19 | 1d? | 118d |  |  |  |  |  |  |
| 252 | 3.2.5.2.1.3.4 | Remote Control | 1d? | 2002-08-16 | 2002-08-19 |  | 2002-08-16 | 2002-08-19 | 1d? | 118d |  |  |  |  |  |  |
| 253 | 3.2.5.2.1.4 | Hire Tech Writer | 3w | 2002-08-28 | 2002-09-19 |  | 2002-08-28 | 2002-09-19 | 3w | 81d | 0d | start no earlier than 2002-08-28 |  |  |  |  |
| 254 | 3.2.5.2.1.5 | RC1 formatted User Guide | 3w | 2002-09-19 | 2002-10-10 | 247, 253 | 2002-09-19 | 2002-10-10 | 3w | 81d |  |  |  |  |  |  |
| 255 | 3.2.5.2.2 | **Quick Start Guide** | 3.19d? | 2002-09-03 | 2002-09-06 |  | 2002-09-03 | 2002-09-06 | 3.19d? | 109.81d |  |  |  | 25.3h | 495 | 495 |
| 256 | 3.2.5.2.2.1 | Final DJ-C40 product graphics to graphic design | 0.06d? | 2002-09-03 | 2002-09-03 |  | 2002-09-03 | 2002-09-03 | 0.06d? | 109.81d | 0d | start no earlier than 2002-09-03 | PM1 | 0.5h |  |  |
| 257 | 3.2.5.2.2.2 | Update existing graphics with final design | 3d | 2002-09-03 | 2002-09-06 | 256 | 2002-09-03 | 2002-09-06 | 3d | 109.81d | 0d |  | GA1 [75%]; PM2 [20%] | 22.8h | 495 | 495 |
| 258 | 3.2.5.2.2.3 | Release candidate ready for review | 0.12d | 2002-09-06 | 2002-09-06 | 257 | 2002-09-06 | 2002-09-06 | 0.12d | 109.81d |  |  | PM1; PM2 | 2h |  |  |
| 259 | 3.2.5.2.3 | Release Candidate 1 | 1w | 2002-10-10 | 2002-10-17 | 249, 245 | 2002-10-10 | 2002-10-17 | 1w | 81d |  |  |  |  |  |  |
| 260 | 3.2.5.2.4 | Final User Guide | 1w | 2003-01-13 | 2003-01-20 | 45 | 2003-01-29 | 2003-02-05 | 1w | 16.5d |  |  |  |  |  |  |
| 261 | 3.2.5.3 | **Shipping CD Art and Text** | 30d? | 2002-08-20 | 2002-10-02 |  | 2002-08-20 | 2002-10-02 | 30d? | 92d | 0d |  |  | 57.4h | 385 | 385 |
| 262 | 3.2.5.3.1 | Complete CD art spec | 1w | 2002-08-20 | 2002-08-27 |  | 2002-08-20 | 2002-08-27 | 1w | 92d | 0d | start no earlier than 2002-08-20 | PM1 | 40h |  |  |
| 263 | 3.2.5.3.2 | First Draft of cd graphics | 2.5d | 2002-08-27 | 2002-08-29 | 262 | 2002-08-27 | 2002-08-29 | 2.5d | 92d | 0d |  | GA1 [50%]; PM1 [5%] | 9h | 220 | 220 |
| 264 | 3.2.5.3.3 | Second Draft of cd graphics | 1.5d | 2002-09-06 | 2002-09-10 | 9 | 2002-09-06 | 2002-09-10 | 1.5d | 92d | 0d |  | GA1 [50%] | 6h | 165 | 165 |
| 265 | 3.2.5.3.4 | Final approval | 1d? | 2002-09-10 | 2002-09-11 | 264 | 2002-09-10 | 2002-09-11 | 1d? | 92d | 0d |  |  |  |  |  |
| 266 | 3.2.5.3.5 | Order 50 Sample cds | 3w | 2002-09-11 | 2002-10-02 | 265 | 2002-09-11 | 2002-10-02 | 3w | 92d |  |  | PM1 [2%] | 2.4h |  |  |

| ID | WBS | Task | Type | Duration | Start | Finish | Predecessors | Baseline start | Baseline finish | Baseline duration | Total slack | Free slack | Constraint | Resources | Work | Cost | Baseline cost |
| --- | --- | --- | --- | --- | --- | --- | --- | --- | --- | --- | --- | --- | --- | --- | --- | --- | --- |
| 267 | 3.2.5.4 | **Package Art** |  | 97.5d? | 2002-05-15 | 2002-09-30 |  | 2002-05-15 | 2002-09-12 | 85d? | 93.5d |  |  |  | 51.6h | 660 | 385 |
| 268 | 3.2.5.4.1 | Packaging Spec |  | 4w | 2002-05-15 | 2002-06-12 |  | 2002-05-15 | 2002-06-12 | 4w | 171d |  | start no earlier than 2002-05-15 | PM1 [10%] | 16h |  |  |
| 269 | 3.2.5.4.2 | 1st Draft of packaging art |  | 5d | 2002-09-16 | 2002-09-23 |  | 2002-08-27 | 2002-08-29 | 2.5d? | 93.5d | 0d | start no earlier than 2002-09-16 | GA1 [50%]; PM1 [20%] | 28h | 550 | 275 |
| 270 | 3.2.5.4.3 | 2nd Draft of packaging graphics |  | 1d | 2002-09-25 | 2002-09-26 | 10 | 2002-09-06 | 2002-09-09 | 1d? | 93.5d | 0d |  | GA1 [50%]; PM1 [20%] | 5.6h | 110 | 110 |
| 271 | 3.2.5.4.4 | Final Approval |  | 2.5d? | 2002-09-26 | 2002-09-30 | 270 | 2002-09-09 | 2002-09-12 | 2.5d? | 93.5d |  |  | PM1 [10%] | 2h |  |  |
| 272 | 3.2.6 | **Remote Control** |  | 67d | 2002-08-12 | 2002-11-13 |  | 2002-08-12 | 2002-08-30 | 15d | 36.12d | 0d |  |  | 65h | 660 | 220 |
| 273 | 3.2.6.1 | Remote Specification |  | 2w | 2002-08-12 | 2002-08-23 |  | 2002-08-12 | 2002-08-23 | 2w | 36.12d | 0d | finish no earlier than 2002-08-23 | PM1 [50%]; PM2 [18.8%] | 25h |  |  |
| 274 | 3.2.6.2 | 1st Draft of remote graphics |  | 1d | 2002-08-26 | 2002-08-26 | 273 | 2002-08-26 | 2002-08-26 | 1d | 36.12d | 0d |  | GA1 [50%]; PM2 [25%] | 6h | 110 | 110 |
| 275 | 3.2.6.3 | 2nd Draft of remote graphics |  | 5d | 2002-08-28 | 2002-09-04 | 11 | 2002-08-28 | 2002-08-28 | 1d | 36.12d | 0d |  | GA1 [50%]; PM2 [25%] | 30h | 550 | 110 |
| 276 | 3.2.6.4 | Final Release of remote graphics |  | 2d | 2002-09-05 | 2002-09-06 | 275 | 2002-08-29 | 2002-08-30 | 2d | 36.12d | 0d |  | PM1 [25%] | 4h |  |  |
| 277 | 3.2.6.5 | Release PO to UEI |  | 18d | 2002-09-09 | 2002-10-02 | 276 |  |  |  | 36.12d | 0d |  |  |  |  |  |
| 278 | 3.2.6.6 | First samples (50) |  | 6w | 2002-10-03 | 2002-11-13 | 277 |  |  |  | 36.12d | 0d |  |  |  |  |  |
| 279 | 3.2.7 | **Manufacturability** |  | 258.5d? | 2002-01-01 | 2003-01-02 |  | 2002-01-01 | 2003-02-19 | 292.75d? | 109.5d |  |  |  | 232h | 4,140 | 4,140 |
| 280 | 3.2.7.1 | **Box Assembly Plan** |  | 200d? | 2002-01-01 | 2002-10-09 |  | 2002-01-01 | 2002-10-10 | 201d? | 25d | 0d |  | MFE [10%] | 168h |  |  |
| 281 | 3.2.7.1.1 | Firmware Update and Flash Programming |  | 1d? | 2002-01-01 | 2002-01-02 |  | 2002-01-01 | 2002-01-02 | 1d? | 224d |  |  |  |  |  |  |
| 282 | 3.2.7.1.2 | Functionality test |  | 1d? | 2002-01-01 | 2002-01-02 |  | 2002-01-01 | 2002-01-02 | 1d? | 224d |  |  |  |  |  |  |
| 283 | 3.2.7.1.3 | Develop Assembly plan for PCA |  | 1w | 2002-10-02 | 2002-10-09 |  | 2002-10-03 | 2002-10-10 | 1w | 25d |  | start no earlier than 2002-10-02 | MFE [20%] | 8h |  |  |
| 284 | 3.2.7.2 | **Early Assembly** |  | 5d | 2002-10-17 | 2002-10-24 | 49, 156 | 2002-09-26 | 2002-10-03 | 5d | 0d |  |  |  | 8h |  |  |
| 285 | 3.2.7.2.1 | Assemble Unit P503001 - P503005 |  | 2d | 2002-10-17 | 2002-10-21 |  | 2002-09-26 | 2002-09-27 | 1d | 0d |  |  |  |  |  |  |
| 286 | 3.2.7.2.2 | Assemble P503002 - P803005 | milestone | 0d | 2002-10-17 | 2002-10-17 |  | 2002-09-27 | 2002-10-02 | 3d | 161.5d |  |  |  |  |  |  |
| 287 | 3.2.7.2.3 | Revise Assembly Plan |  | 1w | 2002-10-17 | 2002-10-24 |  | 2002-09-26 | 2002-10-03 | 1w | 156.5d |  |  | MFE [20%] | 8h |  |  |
| 288 | 3.2.7.3 | **Proto 2 Assembly** |  | 6d | 2002-10-21 | 2002-10-29 | 61, 117, 280, 285 | 2002-10-17 | 2002-10-25 | 6d | 16.5d | 0d |  |  | 56h | 4,140 | 4,140 |
| 289 | 3.2.7.3.1 | Proto #2 Run First Unit Assembly / Review |  | 1d | 2002-10-21 | 2002-10-22 |  | 2002-10-17 | 2002-10-18 | 1d | 16.5d | 0d |  | ME1; ME2 | 16h | 1,840 | 1,840 |
| 290 | 3.2.7.3.2 | Proto #2 Assembly Support |  | 5d | 2002-10-22 | 2002-10-29 | 289 | 2002-10-18 | 2002-10-25 | 5d | 16.5d | 0d |  | ME1 [50%] | 20h | 2,300 | 2,300 |
| 291 | 3.2.7.3.3 | Unit Assembly at PCA |  | 5d | 2002-10-22 | 2002-10-29 | 289 | 2002-10-18 | 2002-10-25 | 5d | 16.5d |  |  |  |  |  |  |
| 292 | 3.2.7.3.4 | Revise Assembly Doc and advise Mech design proto 3 |  | 1w | 2002-10-22 | 2002-10-29 | 289 | 2002-10-17 | 2002-10-24 | 1w | 16.5d |  |  | MFE [50%] | 20h |  |  |

Notes:
- 268: UPC could be printed on box / model can be printed on boax / serial number must be a label.

| ID | WBS | Task | Type | Duration | Start | Finish | Predecessors | Baseline start | Baseline finish | Baseline duration | Total slack | Free slack | Constraint | Cost | Baseline cost |
| --- | --- | --- | --- | --- | --- | --- | --- | --- | --- | --- | --- | --- | --- | --- | --- |
| 293 | 3.2.7.4 | **Proto 3 Assembly** |  | 258.5d | 2002-01-01 | 2003-01-02 |  | 2002-01-01 | 2003-02-19 | 292.75d | 28.5d | 12d |  |  |  |
| 294 | 3.2.7.4.1 | Build 5 units |  | 2d | 2002-12-31 | 2003-01-02 | 69, 180 | 2003-02-17 | 2003-02-19 | 2d | 28.5d |  |  |  |  |
| 295 | 3.2.7.4.2 | Revise Final Assembly Plan |  | 3d | 2002-01-01 | 2002-01-04 |  | 2002-01-01 | 2002-01-04 | 3d | 284d |  |  |  |  |
| 296 | 3.2.7.5 | DFTVT |  | 4w | 2002-10-29 | 2002-11-26 | 290 | 2002-10-25 | 2002-11-22 | 4w | 133.5d |  |  |  |  |
| 297 | 3.2.7.6 | Box Test Plan |  | 2w | 2002-10-09 | 2002-10-23 | 280 | 2002-10-10 | 2002-10-24 | 2w | 138d | 0d |  |  |  |
| 298 | 3.2.7.7 | DFTVT |  | 4w | 2002-10-23 | 2002-11-20 | 297 | 2002-10-24 | 2002-11-21 | 4w | 138d |  |  |  |  |
| 299 | 3.2.8 | **Fox Link PSU** |  | 72d | 2002-08-29 | 2002-12-12 |  |  |  |  | 124d |  |  |  |  |
| 300 | 3.2.8.1 | PSU Design |  | 22d | 2002-08-29 | 2002-10-01 |  |  |  |  | 124d | 0d | start no earlier than 2002-08-29 |  |  |
| 301 | 3.2.8.2 | Design Approval | milestone | 0d | 2002-10-01 | 2002-10-01 | 300 |  |  |  | 174d |  |  |  |  |
| 302 | 3.2.8.3 | Issue PO for 50 samples | milestone | 0d | 2002-10-01 | 2002-10-01 | 300 |  |  |  | 124d | 0d |  |  |  |
| 303 | 3.2.8.4 | build 50 samples |  | 3w | 2002-10-01 | 2002-10-22 | 302 |  |  |  | 124d | 0d |  |  |  |
| 304 | 3.2.8.5 | Sample EVT |  | 1w | 2002-10-22 | 2002-10-29 | 303 |  |  |  | 124d | 0d |  |  |  |
| 305 | 3.2.8.6 | UL60950 |  | 6w | 2002-10-29 | 2002-12-12 | 304 |  |  |  | 124d |  |  |  |  |
| 306 | 3.3 | **Production** |  | 369d? | 2002-01-01 | 2003-06-06 |  | 2002-01-01 | 2003-06-30 | 385.5d? | 0d |  |  | 2,100 | 2,100 |
| 307 | 3.3.1 | **Purchase** |  | 30d | 2002-11-14 | 2002-12-30 |  | 2002-11-18 | 2003-03-13 | 16w | 36.12d |  |  |  |  |
| 308 | 3.3.1.1 | Remote Control |  | 6w | 2002-11-14 | 2002-12-30 | 272 |  |  |  | 36.12d |  |  |  |  |
| 309 | 3.3.2 | Pilot Run |  | 3w | 2003-02-19 | 2003-03-12 | 190, 308 | 2003-03-13 | 2003-04-03 | 3w | 0d |  |  |  |  |
| 310 | 3.3.3 | Mass Production (1000 units) |  | 5w | 2003-03-12 | 2003-04-16 | 233, 309 | 2003-04-03 | 2003-05-08 | 5w | 0d |  |  |  |  |
| 311 | 3.3.4 | Ship to US by Air |  | 1d? | 2003-04-16 | 2003-04-17 | 310 | 2003-05-08 | 2003-05-09 | 1d? | 0d |  |  |  |  |
| 312 | 3.3.5 | Ship to US by Sea |  | 26d | 2003-04-17 | 2003-05-23 | 311 | 2003-05-09 | 2003-06-16 | 26d | 0d |  |  | 2,100 | 2,100 |
| 313 | 3.3.6 | Prime Disty Channels |  | 10d | 2003-05-23 | 2003-06-06 | 312 | 2003-06-16 | 2003-06-30 | 10d | 0d |  |  |  |  |
| 315 | 3.3.7 | Travel |  | 1d? | 2002-01-01 | 2002-01-02 |  | 2002-01-01 | 2002-01-02 | 1d? | 368d |  |  |  |  |
| 318 | 3.4 | **United Box Schedules** |  | 318d? | 2002-01-01 | 2003-03-27 |  | 2002-06-28 | 2003-04-18 | 206.5d? | 51d |  |  |  |  |
| 319 | 3.4.1 | **DFM** |  | 1d? | 2003-03-26 | 2003-03-27 |  | 2003-04-17 | 2003-04-18 | 1d? | 51d |  |  |  |  |
| 320 | 3.4.1.1 | PCB DFM |  | 1d? | 2003-03-26 | 2003-03-27 | 24 | 2003-04-17 | 2003-04-18 | 1d? | 51d |  | start no earlier than 2002-09-16 |  |  |
| 321 | 3.4.1.2 | PCB DFT |  | 1d? | 2003-03-26 | 2003-03-27 | 24 | 2003-04-17 | 2003-04-18 | 1d? | 51d |  |  |  |  |
| 322 | 3.4.1.3 | Box DFA |  | 1d? | 2003-03-26 | 2003-03-27 | 24 | 2003-04-17 | 2003-04-18 | 1d? | 51d |  |  |  |  |
| 323 | 3.4.1.4 | Box DFT |  | 1d? | 2003-03-26 | 2003-03-27 | 24 | 2003-04-17 | 2003-04-18 | 1d? | 51d |  |  |  |  |

| ID | WBS | Task | Type | Duration | Start | Finish | Predecessors | Baseline start | Baseline finish | Baseline duration | Total slack | Free slack | Constraint |
| --- | --- | --- | --- | --- | --- | --- | --- | --- | --- | --- | --- | --- | --- |
| 324 | 3.4.2 | **DVT** |  | 263d? | 2002-01-01 | 2003-01-09 |  | 2002-06-28 | 2003-02-21 | 166.75d? | 106d |  |  |
| 325 | 3.4.2.1 | **Mechanical** |  | 79.88d? | 2002-07-05 | 2002-10-25 |  | 2002-07-05 | 2002-10-25 | 79.88d? | 156.12d |  |  |
| 326 | 3.4.2.1.1 | Prototype Sample (V7) | milestone | 0d | 2002-08-23 | 2002-08-23 |  | 2002-08-23 | 2002-08-23 | 0d | 201d |  | start no earlier than 2002-08-23 |
| 327 | 3.4.2.1.2 | Mech Parts Tooling |  | 34.88d? | 2002-08-30 | 2002-10-18 |  | 2002-08-30 | 2002-10-18 | 34.88d? | 161.12d |  | finish no earlier than 2002-10-18 |
| 328 | 3.4.2.1.3 | Tools Approval |  | 5.88d? | 2002-10-04 | 2002-10-11 |  | 2002-10-04 | 2002-10-11 | 5.88d? | 166.12d |  | finish no earlier than 2002-10-11 |
| 329 | 3.4.2.1.4 | DVT Samples, n=50, tooled parts |  | 5.88d? | 2002-10-18 | 2002-10-25 |  | 2002-10-18 | 2002-10-25 | 5.88d? | 156.12d |  | finish no earlier than 2002-10-25 |
| 330 | 3.4.2.1.5 | Quality Inspection & Test Plan |  | 5.88d? | 2002-07-05 | 2002-07-12 |  | 2002-07-05 | 2002-07-12 | 5.88d? | 230.12d |  | finish no earlier than 2002-07-12 |
| 331 | 3.4.2.2 | **Electrical** |  | 36d | 2002-09-06 | 2002-10-28 |  | 2002-09-06 | 2002-10-28 | 36d | 156d |  |  |
| 332 | 3.4.2.2.1 | DVT Schematics & Gerber (v4) |  | 1d | 2002-09-06 | 2002-09-09 |  | 2002-09-06 | 2002-09-09 | 1d | 191d |  | start no earlier than 2002-09-06 |
| 333 | 3.4.2.2.2 | DVT BOM & AVL (v4) |  | 1d | 2002-09-06 | 2002-09-09 |  | 2002-09-06 | 2002-09-09 | 1d | 191d |  | start no earlier than 2002-09-06 |
| 334 | 3.4.2.2.3 | DVT PCBA FP Sahara (4) |  | 1d | 2002-09-06 | 2002-09-09 |  | 2002-09-06 | 2002-09-09 | 1d | 186d | 0d | start no earlier than 2002-09-06 |
| 335 | 3.4.2.2.4 | DVT Compliance Test Report |  | 1w | 2002-09-09 | 2002-09-16 | 334 | 2002-09-09 | 2002-09-16 | 1w | 186d |  |  |
| 336 | 3.4.2.2.5 | DVT PCBA UB Pilot (50) |  | 1d | 2002-10-18 | 2002-10-21 |  | 2002-10-18 | 2002-10-21 | 1d | 156d | 0d | start no earlier than 2002-10-18 |
| 337 | 3.4.2.2.6 | DVT Compliance Test Report |  | 1w | 2002-10-21 | 2002-10-28 | 336 | 2002-10-21 | 2002-10-28 | 1w | 156d |  |  |
| 338 | 3.4.2.3 | **Industrializatin** |  | 84d | 2002-06-28 | 2002-10-25 |  | 2002-06-28 | 2002-10-25 | 84d | 157d |  |  |
| 339 | 3.4.2.3.1 | Production Process Plan - 1st pass |  | 1w | 2002-06-28 | 2002-07-05 |  | 2002-06-28 | 2002-07-05 | 1w | 196d | 5d | start no earlier than 2002-06-28 |
| 340 | 3.4.2.3.2 | Production Process Plan - TriHonor |  | 2w | 2002-07-12 | 2002-07-26 | 339 | 2002-07-12 | 2002-07-26 | 2w | 191d | 25d | start no earlier than 2002-07-12 |
| 341 | 3.4.2.3.3 | Production Process Plan - Final Plan |  | 1w | 2002-08-30 | 2002-09-09 | 340 | 2002-08-30 | 2002-09-09 | 1w | 166d | 0d | start no earlier than 2002-08-30 |
| 342 | 3.4.2.3.4 | Production Process Setup |  | 5w | 2002-09-09 | 2002-10-14 | 341 | 2002-09-09 | 2002-10-14 | 5w | 166d |  |  |
| 343 | 3.4.2.3.5 | Production Test Plan -1st cut |  | 1w | 2002-06-28 | 2002-07-05 |  | 2002-06-28 | 2002-07-05 | 1w | 176d | 10d | start no earlier than 2002-06-28 |
| 344 | 3.4.2.3.6 | Production Test Plan -development |  | 6w | 2002-07-19 | 2002-08-30 | 343 | 2002-07-19 | 2002-08-30 | 6w | 166d | 0d | start no earlier than 2002-07-19 |
| 345 | 3.4.2.3.7 | Production Test Plan -Final Review |  | 1w | 2002-08-30 | 2002-09-09 | 344 | 2002-08-30 | 2002-09-09 | 1w | 166d | 0d |  |
| 346 | 3.4.2.3.8 | Production Tester Setup |  | 5w | 2002-09-09 | 2002-10-14 | 345 | 2002-09-09 | 2002-10-14 | 5w | 166d |  |  |
| 347 | 3.4.2.3.9 | PCBA Test Plan - 1st Cut |  | 1w | 2002-07-05 | 2002-07-12 |  | 2002-07-05 | 2002-07-12 | 1w | 206d | 5d | start no earlier than 2002-07-05 |
| 348 | 3.4.2.3.10 | PCBA Test Plan - FP plan |  | 1w | 2002-07-19 | 2002-07-26 | 347 | 2002-07-19 | 2002-07-26 | 1w | 201d | 5d | start no earlier than 2002-07-19 |
| 349 | 3.4.2.3.11 | PCBA Test Plan - final plan |  | 1w | 2002-08-02 | 2002-08-09 | 348 | 2002-08-02 | 2002-08-09 | 1w | 196d | 24d | start no earlier than 2002-08-02 |
| 350 | 3.4.2.3.12 | ICT Fixture & Program |  | 3w | 2002-09-13 | 2002-10-04 | 349 | 2002-09-13 | 2002-10-04 | 3w | 172d |  | start no earlier than 2002-09-13 |
| 351 | 3.4.2.3.13 | Fucntional Tester |  | 3w | 2002-09-13 | 2002-10-04 |  | 2002-09-13 | 2002-10-04 | 3w | 171d | 0d | start no earlier than 2002-09-13 |
| 352 | 3.4.2.3.14 | Commision PCBA Testers |  | 1d | 2002-10-04 | 2002-10-07 | 351 | 2002-10-04 | 2002-10-07 | 1d | 171d |  |  |
| 353 | 3.4.2.3.15 | QC/QA Plan - 1st cut |  | 1w | 2002-07-05 | 2002-07-12 |  | 2002-07-05 | 2002-07-12 | 1w | 226d | 35d | start no earlier than 2002-07-05 |
| 354 | 3.4.2.3.16 | QC/QA Plan - final plan |  | 1w | 2002-08-30 | 2002-09-09 | 353 | 2002-08-30 | 2002-09-09 | 1w | 191d |  | start no earlier than 2002-08-30 |
| 355 | 3.4.2.3.17 | Vendor RFQ A |  | 1w | 2002-06-28 | 2002-07-05 |  | 2002-06-28 | 2002-07-05 | 1w | 231d | 44d | start no earlier than 2002-06-28 |
| 356 | 3.4.2.3.18 | Vendor RFQ B |  | 1w | 2002-09-06 | 2002-09-13 | 355 | 2002-09-06 | 2002-09-13 | 1w | 187d |  | start no earlier than 2002-09-06 |
| 357 | 3.4.2.3.19 | Safety Regualtion Test & Cert. |  | 12w | 2002-07-12 | 2002-10-07 |  | 2002-07-12 | 2002-10-07 | 12w | 171d |  | start no earlier than 2002-07-12 |
| 358 | 3.4.2.3.20 | DVT Reliability Test |  | 1w | 2002-10-18 | 2002-10-25 |  | 2002-10-18 | 2002-10-25 | 1w | 157d |  | start no earlier than 2002-10-18 |

| ID | WBS | Task | Duration | Start | Finish | Predecessors | Baseline start | Baseline finish | Baseline duration | Total slack | Free slack | Constraint |
| --- | --- | --- | --- | --- | --- | --- | --- | --- | --- | --- | --- | --- |
| 359 | 3.4.2.4 | **CR** | 263d? | 2002-01-01 | 2003-01-09 |  | 2002-06-28 | 2003-02-21 | 166.75d? | 106d |  |  |
| 360 | 3.4.2.4.1 | Final Drawing Release Form | 1d | 2003-01-08 | 2003-01-09 | 183 | 2003-01-30 | 2003-01-31 | 1d | 106d |  | start no earlier than 2002-06-28 |
| 361 | 3.4.2.4.2 | Final Tool Release Form | 1d? | 2002-06-28 | 2002-07-01 |  | 2002-06-28 | 2002-07-01 | 1d? | 240d |  | start no earlier than 2002-06-28 |
| 362 | 3.4.2.4.3 | Final Schematic & Gerber Release | 1d? | 2003-01-01 | 2003-01-02 | 74 | 2003-02-20 | 2003-02-21 | 1d? | 111d |  | start no earlier than 2002-06-28 |
| 363 | 3.4.2.4.4 | Final PCBA BOM Release | 1d? | 2003-01-01 | 2003-01-02 | 74 | 2003-02-20 | 2003-02-21 | 1d? | 111d |  |  |
| 364 | 3.4.2.4.5 | Final Firmware Release | 1d? | 2002-01-01 | 2002-01-02 |  | 2003-01-01 | 2003-01-02 | 1d? | 368d |  |  |
| 365 | 3.4.2.4.6 | Production Process Flow & Instruction | 63.88d? | 2002-07-08 | 2002-10-04 |  | 2002-07-08 | 2002-10-04 | 63.88d? | 171.12d |  | finish no earlier than 2002-10-04 |
| 366 | 3.4.2.4.7 | Production Test Flow & Instruction | 63.88d? | 2002-07-08 | 2002-10-04 |  | 2002-07-08 | 2002-10-04 | 63.88d? | 171.12d |  | finish no earlier than 2002-10-04 |
| 367 | 3.4.2.4.8 | QC/QA Flow & Instruction | 1d? | 2002-10-24 | 2002-10-25 |  | 2002-10-24 | 2002-10-25 | 1d? | 157d |  | start no earlier than 2002-10-24 |
| 368 | 3.4.3 | **PVT** | 107.88d? | 2002-09-16 | 2003-02-17 |  | 2002-09-03 | 2002-12-04 | 65d? | 78.12d |  |  |
| 369 | 3.4.3.1 | **Mechanical** | 1d? | 2002-09-16 | 2002-09-17 |  | 2002-09-16 | 2002-09-17 | 1d? | 185d |  |  |
| 370 | 3.4.3.1.1 | PVT Samples | 1d? | 2002-09-16 | 2002-09-17 |  | 2002-09-16 | 2002-09-17 | 1d? | 185d |  | start no earlier than 2002-09-16 |
| 371 | 3.4.3.2 | **Electrical** | 1d? | 2002-09-16 | 2002-09-17 |  | 2002-09-16 | 2002-09-17 | 1d? | 185d |  |  |
| 372 | 3.4.3.2.1 | PVT Samples (Pilot Run) | 1d? | 2002-09-16 | 2002-09-17 |  | 2002-09-16 | 2002-09-17 | 1d? | 185d |  | start no earlier than 2002-09-16 |
| 373 | 3.4.3.2.2 | PVT Comliance | 1d? | 2002-09-16 | 2002-09-17 |  | 2002-09-16 | 2002-09-17 | 1d? | 185d |  | start no earlier than 2002-09-16 |
| 374 | 3.4.3.3 | **Industrialization** | 1d? | 2002-09-16 | 2002-09-17 |  | 2002-09-16 | 2002-09-17 | 1d? | 185d |  |  |
| 375 | 3.4.3.3.1 | Process & Test Setup | 1d? | 2002-09-16 | 2002-09-17 |  | 2002-09-16 | 2002-09-17 | 1d? | 185d |  | start no earlier than 2002-09-16 |
| 376 | 3.4.3.3.2 | Production/Yield Commissioning | 1d? | 2002-09-16 | 2002-09-17 |  | 2002-09-16 | 2002-09-17 | 1d? | 185d |  | start no earlier than 2002-09-16 |
| 377 | 3.4.3.4 | **Purchase** | 107.88d? | 2002-09-16 | 2003-02-17 |  | 2002-09-03 | 2002-12-04 | 65d? | 78.12d |  |  |
| 378 | 3.4.3.4.1 | Shipping CD | 1d? | 2002-09-16 | 2002-09-17 |  | 2002-09-16 | 2002-09-17 | 1d? | 185d |  | start no earlier than 2002-09-16 |
| 379 | 3.4.3.4.2 | **Remote Control** | 65d | 2002-11-14 | 2003-02-17 | 272 | 2002-09-03 | 2002-12-04 | 65d | 78.12d |  |  |
| 380 | 3.4.3.4.2.1 | Place order | 2d | 2002-11-14 | 2002-11-15 |  | 2002-09-03 | 2002-09-04 | 2d | 78.12d | 0d |  |
| 381 | 3.4.3.4.2.2 | Art Review | 2w | 2002-11-18 | 2002-12-03 | 380 | 2002-09-05 | 2002-09-18 | 2w | 78.12d | 0d |  |
| 382 | 3.4.3.4.2.3 | First Samples (5) | 5w | 2002-12-04 | 2003-01-08 | 381 | 2002-09-19 | 2002-10-23 | 5w | 78.12d | 0d |  |
| 383 | 3.4.3.4.2.4 | FA Review | 3d | 2003-01-09 | 2003-01-13 | 382 | 2002-10-24 | 2002-10-28 | 3d | 78.12d | 0d |  |
| 384 | 3.4.3.4.2.5 | First 50 | 2w | 2003-01-14 | 2003-01-27 | 383 | 2002-10-29 | 2002-11-11 | 2w | 78.12d | 0d |  |
| 385 | 3.4.3.4.2.6 | Shipment of 50 | 3d | 2003-01-28 | 2003-01-30 | 384 | 2002-11-12 | 2002-11-14 | 3d | 90.12d |  |  |
| 386 | 3.4.3.4.2.7 | Full shipment of 5000 | 2w | 2003-01-28 | 2003-02-10 | 384 | 2002-11-12 | 2002-11-25 | 2w | 78.12d | 0d |  |
| 387 | 3.4.3.4.2.8 | Shipping of 5000 | 1w | 2003-02-11 | 2003-02-17 | 386 | 2002-11-26 | 2002-12-04 | 1w | 78.12d |  |  |
| 388 | 3.4.3.4.3 | LLT Components Buy (1k) > 8 wks | 1d? | 2002-09-16 | 2002-09-17 |  | 2002-09-16 | 2002-09-17 | 1d? | 185d |  | start no earlier than 2002-09-16 |
| 389 | 3.4.3.4.4 | LLT Components (LCD) Buy (1k) | 1d? | 2002-09-16 | 2002-09-17 |  | 2002-09-16 | 2002-09-17 | 1d? | 185d |  | start no earlier than 2002-09-16 |
| 390 | 3.4.3.4.5 | PO for MP 1000 units (Electrical) | 1d? | 2002-09-16 | 2002-09-17 |  | 2002-09-16 | 2002-09-17 | 1d? | 185d |  | start no earlier than 2002-09-16 |
| 391 | 3.4.3.4.6 | PO for MP 1000 units (System) | 1d? | 2002-09-16 | 2002-09-17 |  | 2002-09-16 | 2002-09-17 | 1d? | 185d |  | start no earlier than 2002-09-16 |

| ID | WBS | Task | Duration | Start | Finish | Baseline start | Baseline finish | Baseline duration | Total slack | Constraint |
| --- | --- | --- | --- | --- | --- | --- | --- | --- | --- | --- |
| 392 | 3.4.4 | **MP Start** | 1d? | 2002-09-16 | 2002-09-17 | 2002-09-16 | 2002-09-17 | 1d? | 185d |  |
| 393 | 3.4.4.1 | Maxx Production Start | 1d? | 2002-09-16 | 2002-09-17 | 2002-09-16 | 2002-09-17 | 1d? | 185d | start no earlier than 2002-09-16 |
