# FP UB Sahara Production Release v2 GOAL

Schedule from MS Project, 2002-05-06 to 2002-10-01.
Fullplay Media

## Calendars

- Standard: Mon-Fri 08:00-12:00, 13:00-17:00; Sat-Sun off.

## Schedule

| ID | Task | Type | Duration | Start | Finish | Predecessors | Total slack | Free slack | Constraint |
| --- | --- | --- | --- | --- | --- | --- | --- | --- | --- |
| 1 | DJ-35 MAIN-02-A parts kit |  | 1d | 2002-05-20 | 2002-05-20 |  | 3d | 0d | start no earlier than 2002-05-20 |
| 2 | DJ-35 4x MAIN PCA |  | 5ed | 2002-05-20 | 2002-05-25 | 1 | 10.88d | 4.88d |  |
| 3 | DJ-35 4x MAIN review |  | 5d | 2002-05-27 | 2002-05-31 | 2 | 2d | 0d |  |
| 4 | DJ-35 parts kit |  | 1d | 2002-05-31 | 2002-05-31 |  | 2d | 0d | start no earlier than 2002-05-31 |
| 5 | DJ-35 remaining PCA |  | 7d | 2002-06-03 | 2002-06-11 | 4, 3 | 2d | 0d |  |
| 6 | DJ-35 Box (case, HDD, CDD, LCD) | milestone | 0d | 2002-06-07 | 2002-06-07 |  | 5d | 3d | start no earlier than 2002-06-07 |
| 7 | DJ-35 HW Evt and Build |  | 5d | 2002-06-12 | 2002-06-18 | 5, 6 | 2d | 0d |  |
| 8 | Friendly External BETA |  | 5d | 2002-06-19 | 2002-06-25 | 7 | 2d | 0d |  |
| 9 | External BETA |  | 4w | 2002-06-26 | 2002-07-23 | 8 | 20d | 7d |  |
| 10 | Create HW EVT test |  | 4w | 2002-06-14 | 2002-07-11 |  | 0d |  | as late as possible |
| 11 | Final bootloader Flash Image |  | 4w | 2002-08-09 | 2002-09-05 |  | 0d |  | as late as possible |
| 12 | Final Burn-In CD Image |  | 4w | 2002-08-09 | 2002-09-05 |  | 0d |  | as late as possible |
| 13 | Duplicate Flash |  | 4w | 2002-08-14 | 2002-09-10 |  | 0d |  | as late as possible |
| 14 | Duplicate CDs |  | 4w | 2002-08-14 | 2002-09-10 |  | 0d |  | as late as possible |
| 15 | PCBA Func. Test all 3 PCBs |  | 5w | 2002-06-24 | 2002-07-26 |  | 27d | 0d | start no earlier than 2002-06-24 |
| 16 | FP Release GYR BOM for Purchasing |  | 10d | 2002-05-06 | 2002-05-17 |  | 8d | 0d |  |
| 17 | UB Req. Mech BOM Changes |  | 5d | 2002-05-20 | 2002-05-24 | 16 | 8d | 0d |  |
| 18 | UB Req. Sourcing BOM Changes |  | 5d | 2002-05-20 | 2002-05-24 | 16 | 8d | 0d |  |
| 19 | UB Req. ASY BOM Changes |  | 5d | 2002-05-20 | 2002-05-24 | 16 | 8d | 0d |  |
| 20 | FP add UB BOM changes |  | 4d | 2002-05-27 | 2002-05-30 | 17, 18, 19, 39 | 8d | 0d |  |
| 21 | FP ROUTE PCB-03-X9 |  | 5d | 2002-06-11 | 2002-06-17 | 20 | 1d | 0d | start no earlier than 2002-06-11 |
| 22 | UB review gerber for ICT |  | 5d | 2002-06-18 | 2002-06-24 | 21, 40 | 1d | 0d |  |
| 23 | FP final gerber edit-03-A |  | 2d | 2002-06-25 | 2002-06-26 | 22, 41 | 1d | 0d |  |
| 24 | FP RTFAB-03-A |  | 5d | 2002-06-27 | 2002-07-03 | 23, 42, 8 | 1d |  |  |
| 25 | FP RTASY-03-A |  | 5d | 2002-07-05 | 2002-07-11 | 24, 8, 26 | 0d |  |  |
| 26 | FP Order -03 parts |  | 4w | 2002-06-07 | 2002-07-04 |  | 0d |  | as late as possible |
| 27 | FP HW EVT, EMI |  | 3w | 2002-07-12 | 2002-08-01 | 10, 25 | 0d |  |  |
| 28 | FP/Fiori Create Test Fixture |  | 6w | 2002-06-10 | 2002-07-19 |  | 32d | 5d | start no earlier than 2002-06-10 |
| 29 | UB Review test fixture |  | 5d | 2002-07-29 | 2002-08-02 | 28, 25, 43, 15 | 27d |  |  |
| 30 | FP xfer BOM to UB | milestone | 0d | 2002-08-01 | 2002-08-01 | 27, 28, 44, 47, 9 | 43d |  |  |
| 31 | FP ROUTE -04-A |  | 3d | 2002-08-02 | 2002-08-06 | 27 | 0d |  |  |
| 32 | FP RTFAB -04-A |  | 4d | 2002-08-07 | 2002-08-12 | 31 | 0d |  |  |
| 33 | FP RTASY -04-A |  | 6d | 2002-08-13 | 2002-08-20 | 32 | 0d |  |  |
| 34 | FP HW EVT -04-A |  | 3d | 2002-09-06 | 2002-09-10 | 33, 11, 12 | 0d |  |  |
| 35 | UB build ICT phase 1 |  | 1w | 2002-08-13 | 2002-08-19 | 32 | 1d |  |  |
| 36 | UB build ICT phase 2 |  | 3w | 2002-08-21 | 2002-09-10 | 35, 9, 33 | 0d |  |  |
| 37 | Pilot run PCA ASY |  | 1w | 2002-09-11 | 2002-09-17 | 46, 38, 29, 36, 59, 33, 13, 14, 34 | 0d |  | as late as possible |
| 38 | UB Order BOM parts |  | 10w | 2002-05-31 | 2002-08-08 | 20 | 23d |  |  |
| 39 | GOAL UB confirm part changes | milestone | 0d | 2002-05-13 | 2002-05-13 |  | 18d | 10d | start no earlier than 2002-05-13 |
| 40 | GOAL FP prelim gerber for ICT | milestone | 0d | 2002-05-24 | 2002-05-24 |  | 18d | 17d | start no earlier than 2002-05-24 |
| 41 | GOAL UB feedback on ICT | milestone | 0d | 2002-05-31 | 2002-05-31 |  | 18d | 17d | start no earlier than 2002-05-31 |
| 42 | GOAL FP PCB RTFAB | milestone | 0d | 2002-06-07 | 2002-06-07 |  | 15d | 14d | start no earlier than 2002-06-07 |
| 43 | GOAL FP send ASY +3 PCB set | milestone | 0d | 2002-06-19 | 2002-06-19 |  | 55d | 28d | start no earlier than 2002-06-19 |
| 44 | GOAL FP relase final post EMI BOM | milestone | 0d | 2002-07-01 | 2002-07-01 |  | 67d | 0d | start no earlier than 2002-07-01 |
| 45 | GOAL UB review, pull trigger | milestone | 0d | 2002-07-01 | 2002-07-01 | 44 | 67d |  |  |
| 46 | GOAL UB start PCA Pilot Run | milestone | 0d | 2002-07-22 | 2002-07-22 |  | 37d |  | start no earlier than 2002-07-22 |
| 47 | GOAL FP submit regulatory paperwork | milestone | 0d | 2002-07-01 | 2002-07-01 |  | 67d | 24d | start no earlier than 2002-07-01 |
| 48 | GOAL receive final reg. approval | milestone | 0d | 2002-08-02 | 2002-08-02 |  | 28d | 20d | start no earlier than 2002-08-02 |
| 49 | prelim plastic spec |  | 12d | 2002-05-08 | 2002-05-23 |  | 2d | 0d | finish no earlier than 2002-05-23 |
| 50 | TriHonor feedback |  | 5d | 2002-05-24 | 2002-05-30 | 49 | 2d |  |  |
| 51 | Fiori final rev |  | 4w | 2002-06-04 | 2002-07-01 | 50 | 0d |  | finish no earlier than 2002-07-01 |
| 52 | Review CD-ROM samples and spec |  | 5d | 2002-05-20 | 2002-05-24 |  | 21d | 0d | start no earlier than 2002-05-20 |
| 53 | Approve and purchase CD-ROM | milestone | 0d | 2002-05-24 | 2002-05-24 | 52 | 21d | 0d |  |
| 54 | FP change plastic for CD-ROM |  | 5d | 2002-05-27 | 2002-05-31 | 53 | 21d |  |  |
| 55 | plastic tool lead |  | 60ed | 2002-07-01 | 2002-08-30 | 54, 51 | 1.88d | 0d |  |
| 56 | first shot approval |  | 3ed | 2002-08-30 | 2002-09-02 | 55 | 1.88d | 0d |  |
| 57 | order plastic production |  | 15ed | 2002-09-02 | 2002-09-17 | 56 | 1.88d |  |  |
| 58 | Pilot run box asy |  | 2w | 2002-09-18 | 2002-10-01 | 57, 37 | 0d |  |  |
| 59 | Regulatory approvals | milestone | 0d | 2002-08-29 | 2002-08-29 | 60, 61, 62, 63, 64, 48 | 8d |  | start no earlier than 2002-06-24 |
| 60 | FP UL approval |  | 4w | 2002-06-24 | 2002-07-19 |  | 37d | 29d | start no earlier than 2002-06-24 |
| 61 | FP CUL approval |  | 4w | 2002-06-24 | 2002-07-19 |  | 37d | 29d | start no earlier than 2002-06-24 |
| 62 | FP FCC approval |  | 4w | 2002-08-02 | 2002-08-29 | 27 | 8d | 0d |  |
| 63 | FP CE approval |  | 4w | 2002-06-24 | 2002-07-19 |  | 37d | 29d | start no earlier than 2002-06-24 |
| 64 | FP C-TICK approval |  | 4w | 2002-06-24 | 2002-07-19 |  | 37d | 29d | start no earlier than 2002-06-24 |
