# FP UB Sahara Production Release v2 GOAL

Schedule from MS Project, 2002-05-06 to 2002-09-18.
Fullplay Media

## Calendars

- Standard: Mon-Fri 08:00-12:00, 13:00-17:00; Sat-Sun off.

## Schedule

| ID | WBS | Task | Type | Duration | Start | Finish | Predecessors | Total slack | Free slack | Constraint |
| --- | --- | --- | --- | --- | --- | --- | --- | --- | --- | --- |
| 1 | 1 | DJ-35 MAIN-02-A parts kit |  | 1d | 2002-05-20 | 2002-05-20 |  | 14d | 0d | start no earlier than 2002-05-20 |
| 2 | 2 | DJ-35 4x MAIN PCA |  | 5ed | 2002-05-20 | 2002-05-25 | 1 | 58.88d | 4.88d |  |
| 3 | 3 | DJ-35 4x MAIN review |  | 5d | 2002-05-27 | 2002-05-31 | 2 | 1d | 0d |  |
| 4 | 4 | DJ-35 parts kit |  | 1d | 2002-05-28 | 2002-05-28 |  | 17d | 3d | start no earlier than 2002-05-28 |
| 5 | 5 | DJ-35 remaining PCA |  | 1w | 2002-06-03 | 2002-06-07 | 4, 3 | 1d | 0d |  |
| 6 | 6 | DJ-35 Box (case, HDD, CDD, LCD) | milestone | 0d | 2002-06-07 | 2002-06-07 |  | 20d | 1d | start no earlier than 2002-06-07 |
| 7 | 7 | DJ-35 HW Evt and Build |  | 5d | 2002-06-10 | 2002-06-14 | 5, 6 | 1d | 0d |  |
| 8 | 8 | Friendly External BETA |  | 5d | 2002-06-17 | 2002-06-21 | 7 | 1d | 0d |  |
| 9 | 9 | External BETA |  | 4w | 2002-06-24 | 2002-07-19 | 8 | 9d | 0d |  |
| 10 | 10 | Create HW EVT test |  | 4w | 2002-06-12 | 2002-07-09 |  | 0d |  | as late as possible |
| 11 | 11 | Final bootloader Flash Image |  | 4w | 2002-07-08 | 2002-08-02 |  | 0d |  | as late as possible |
| 12 | 12 | Final Burn-In CD Image |  | 4w | 2002-07-08 | 2002-08-02 |  | 0d |  | as late as possible |
| 13 | 13 | Duplicate Flash |  | 4w | 2002-08-01 | 2002-08-28 |  | 0d |  | as late as possible |
| 14 | 14 | Duplicate CDs |  | 4w | 2002-08-01 | 2002-08-28 |  | 0d |  | as late as possible |
| 15 | 15 | PCBA Func. Test all 3 PCBs |  | 5w | 2002-06-24 | 2002-07-26 |  | 14d | 0d | start no earlier than 2002-06-24 |
| 16 | 16 | FP Release GYR BOM for Purchasing |  | 10d | 2002-05-06 | 2002-05-17 |  | 8d | 0d |  |
| 17 | 17 | UB Req. Mech BOM Changes |  | 5d | 2002-05-20 | 2002-05-24 | 16 | 8d | 0d |  |
| 18 | 18 | UB Req. Sourcing BOM Changes |  | 5d | 2002-05-20 | 2002-05-24 | 16 | 8d | 0d |  |
| 19 | 19 | UB Req. ASY BOM Changes |  | 5d | 2002-05-20 | 2002-05-24 | 16 | 8d | 0d |  |
| 20 | 20 | FP add UB BOM changes |  | 4d | 2002-05-27 | 2002-05-30 | 17, 18, 19, 38 | 8d | 0d |  |
| 21 | 21 | FP ROUTE PCB-03-X9 |  | 2d | 2002-05-31 | 2002-06-03 | 20 | 8d | 0d |  |
| 22 | 22 | UB review gerber for ICT |  | 5d | 2002-06-04 | 2002-06-10 | 21, 39 | 8d | 0d |  |
| 23 | 23 | FP final gerber edit-03-A |  | 2d | 2002-06-11 | 2002-06-12 | 22, 40 | 8d | 7d |  |
| 24 | 24 | FP RTFAB-03-A |  | 5d | 2002-06-24 | 2002-06-28 | 23, 41, 8 | 1d | 0d |  |
| 25 | 25 | FP RTASY-03-A |  | 5d | 2002-07-01 | 2002-07-05 | 24, 8 | 9d |  |  |
| 26 | 26 | FP HW EVT, EMI |  | 2w | 2002-07-10 | 2002-07-23 | 25, 10 | 0d |  |  |
| 27 | 27 | FP/Fiori Create Test Fixture |  | 6w | 2002-06-10 | 2002-07-19 |  | 19d | 0d | start no earlier than 2002-06-10 |
| 28 | 28 | UB Review test fixture |  | 5d | 2002-07-29 | 2002-08-02 | 27, 25, 42, 15 | 14d |  |  |
| 29 | 29 | FP xfer BOM to UB | milestone | 0d | 2002-07-23 | 2002-07-23 | 26, 27, 43, 46, 9 | 41d |  |  |
| 30 | 30 | FP ROUTE -04-A |  | 3d | 2002-07-24 | 2002-07-26 | 26 | 0d |  |  |
| 31 | 31 | FP RTFAB -04-A |  | 3d | 2002-07-29 | 2002-07-31 | 30 | 0d |  |  |
| 32 | 32 | FP RTASY -04-A |  | 4ed | 2002-07-31 | 2002-08-04 | 31 | 1.88d |  |  |
| 33 | 33 | FP HW EVT -04-A |  | 3d | 2002-08-05 | 2002-08-07 | 32, 11, 12 | 0d |  |  |
| 34 | 34 | UB build ICT phase 1 |  | 1w | 2002-08-01 | 2002-08-07 | 31 | 0d |  |  |
| 35 | 35 | UB build ICT phase 2 |  | 3w | 2002-08-08 | 2002-08-28 | 34, 9, 33 | 0d |  |  |
| 36 | 36 | Pilot run PCA ASY |  | 1w | 2002-08-29 | 2002-09-04 | 45, 37, 34, 28, 35, 61, 32, 13, 14 | 0d |  | as late as possible |
| 37 | 37 | UB Order BOM parts |  | 10w | 2002-05-31 | 2002-08-08 | 20 | 10d |  |  |
| 38 | 38 | GOAL UB confirm part changes | milestone | 0d | 2002-05-13 | 2002-05-13 |  | 18d | 10d | start no earlier than 2002-05-13 |
| 39 | 39 | GOAL FP prelim gerber for ICT | milestone | 0d | 2002-05-24 | 2002-05-24 |  | 15d | 7d | start no earlier than 2002-05-24 |
| 40 | 40 | GOAL UB feedback on ICT | milestone | 0d | 2002-05-31 | 2002-05-31 |  | 15d | 7d | start no earlier than 2002-05-31 |
| 41 | 41 | GOAL FP PCB RTFAB | milestone | 0d | 2002-06-07 | 2002-06-07 |  | 12d | 11d | start no earlier than 2002-06-07 |
| 42 | 42 | GOAL FP send ASY +3 PCB set | milestone | 0d | 2002-06-19 | 2002-06-19 |  | 42d | 28d | start no earlier than 2002-06-19 |
| 43 | 43 | GOAL FP relase final post EMI BOM | milestone | 0d | 2002-07-01 | 2002-07-01 |  | 54d | 0d | start no earlier than 2002-07-01 |
| 44 | 44 | GOAL UB review, pull trigger | milestone | 0d | 2002-07-01 | 2002-07-01 | 43 | 54d |  |  |
| 45 | 45 | GOAL UB start PCA Pilot Run | milestone | 0d | 2002-07-22 | 2002-07-22 |  | 24d |  | start no earlier than 2002-07-22 |
| 46 | 46 | GOAL FP submit regulatory paperwork | milestone | 0d | 2002-07-01 | 2002-07-01 |  | 54d | 15d | start no earlier than 2002-07-01 |
| 47 | 47 | GOAL receive final reg. approval | milestone | 0d | 2002-08-02 | 2002-08-02 |  | 15d | 9d | start no earlier than 2002-08-02 |
| 48 | 48 | Bob PWR acceptance | milestone | 0d | 2002-06-10 | 2002-06-10 |  | 33d | 0d | start no earlier than 2002-06-10 |
| 49 | 49 | HDD acceptance | milestone | 0d | 2002-06-10 | 2002-06-10 |  | 38d | 10d | start no earlier than 2002-06-10 |
| 50 | 50 | CDD acceptance | milestone | 0d | 2002-06-10 | 2002-06-10 |  | 38d | 10d | start no earlier than 2002-06-10 |
| 51 | 51 | prelim plastic spec |  | 12d | 2002-05-08 | 2002-05-23 |  | 4d | 0d | finish no earlier than 2002-05-23 |
| 52 | 52 | TriHonor feedback |  | 5d | 2002-05-24 | 2002-05-30 | 51 | 4d | 0d |  |
| 53 | 53 | Fiori final rev |  | 4w | 2002-05-31 | 2002-06-27 | 52 | 4d | 0d | finish no earlier than 2002-06-24 |
| 54 | 54 | Review CD-ROM samples and spec |  | 5d | 2002-05-20 | 2002-05-24 |  | 23d | 0d | start no earlier than 2002-05-20 |
| 55 | 55 | Approve and purchase CD-ROM | milestone | 0d | 2002-05-24 | 2002-05-24 | 54 | 23d | 0d |  |
| 56 | 56 | FP change plastic for CD-ROM |  | 5d | 2002-05-27 | 2002-05-31 | 55 | 23d | 19d |  |
| 57 | 57 | plastic tool lead |  | 45ed | 2002-06-27 | 2002-08-11 | 56, 53 | 19.88d | 0d |  |
| 58 | 58 | first shot approval |  | 3ed | 2002-08-11 | 2002-08-14 | 57 | 19.88d | 0d |  |
| 59 | 59 | order plastic production |  | 15ed | 2002-08-14 | 2002-08-29 | 58 | 19.88d |  |  |
| 60 | 60 | Pilot run box asy |  | 2w | 2002-09-05 | 2002-09-18 | 59, 36 | 0d |  |  |
| 61 | 61 | Regulatory approvals | milestone | 0d | 2002-08-20 | 2002-08-20 | 64, 65, 47, 62 | 6d |  | start no earlier than 2002-06-24 |

| ID | WBS | Task | Type | Duration | Start | Finish | Predecessors | Total slack | Free slack | Constraint |
| --- | --- | --- | --- | --- | --- | --- | --- | --- | --- | --- |
| 62 | 62 | **Agency Certifications** |  | 52d | 2002-06-10 | 2002-08-20 |  | 6d | 0d |  |
| 63 | 62.1 | FP UL approval |  | 4w | 2002-06-24 | 2002-07-19 | 66FF, 49, 50 | 28d |  | start no earlier than 2002-06-24 |
| 64 | 62.2 | FP CUL approval |  | 4w | 2002-06-24 | 2002-07-19 | 48, 49, 50 | 28d | 22d | start no earlier than 2002-06-24 |
| 65 | 62.3 | FP FCC approval |  | 4w | 2002-07-24 | 2002-08-20 | 26, 48, 49, 50 | 6d | 0d |  |
| 66 | 62.4 | Bob. PWR UL and FCC |  | 5w | 2002-06-10 | 2002-07-12 | 48 | 33d | 5d |  |
| 67 | 63 | **User Guide** |  | 39d | 2002-06-06 | 2002-07-31 |  | 36d |  |  |
| 68 | 63.1 | Pre-beta release review | milestone | 0d | 2002-06-06 | 2002-06-06 |  | 75d |  | start no earlier than 2002-06-06 |
| 69 | 63.2 | friendly release | milestone | 0d | 2002-06-17 | 2002-06-17 |  | 68d |  | start no earlier than 2002-06-17 |
| 70 | 63.3 | external beta release | milestone | 0d | 2002-06-20 | 2002-06-20 |  | 65d |  | start no earlier than 2002-06-20 |
| 71 | 63.4 | mid-beta review | milestone | 0d | 2002-07-11 | 2002-07-11 |  | 50d |  | start no earlier than 2002-07-11 |
| 72 | 63.5 | post beta review | milestone | 0d | 2002-07-24 | 2002-07-24 |  | 41d |  | start no earlier than 2002-07-24 |
| 73 | 63.6 | Final Release Review | milestone | 0d | 2002-07-31 | 2002-07-31 |  | 36d | 0d | start no earlier than 2002-07-31 |
| 74 | 63.7 | Release to Printer | milestone | 0d | 2002-07-31 | 2002-07-31 | 73 | 36d |  |  |
