# FP UB Sahara Production Release v2 SAFE

Schedule from MS Project, 2002-05-06 to 2002-10-01.
Fullplay Media

## Calendars

- Standard: Mon-Fri 08:00-12:00, 13:00-17:00; Sat-Sun off.

## Schedule

| ID | Task | Type | Duration | Start | Finish | Predecessors | Total slack | Free slack | Constraint |
| --- | --- | --- | --- | --- | --- | --- | --- | --- | --- |
| 1 | DJ-35 MAIN-02-A parts kit |  | 1d | 2002-05-20 | 2002-05-20 |  | 14d | 0d | start no earlier than 2002-05-20 |
| 2 | DJ-35 4x MAIN PCA |  | 5ed | 2002-05-20 | 2002-05-25 | 1 | 58.88d | 4.88d |  |
| 3 | DJ-35 4x MAIN review |  | 5d | 2002-05-27 | 2002-05-31 | 2 | 14d | 0d |  |
| 4 | DJ-35 parts kit |  | 1d | 2002-05-28 | 2002-05-28 |  | 17d | 3d | start no earlier than 2002-05-28 |
| 5 | DJ-35 remaining PCA |  | 1w | 2002-06-03 | 2002-06-07 | 4, 3 | 1d | 0d |  |
| 6 | DJ-35 Box (case, HDD, CDD, LCD) | milestone | 0d | 2002-06-07 | 2002-06-07 |  | 20d | 1d | start no earlier than 2002-06-07 |
| 7 | DJ-35 HW Evt and Build |  | 5d | 2002-06-10 | 2002-06-14 | 5, 6 | 1d | 0d |  |
| 8 | Friendly External BETA |  | 5d | 2002-06-17 | 2002-06-21 | 7 | 1d | 0d |  |
| 9 | External BETA |  | 4w | 2002-06-24 | 2002-07-19 | 8 | 9d | 0d |  |
| 10 | Create HW EVT test |  | 4w | 2002-06-10 | 2002-07-05 |  | 5d | 0d | start no earlier than 2002-06-10 |
| 11 | Final bootloader Flash Image |  | 4w | 2002-06-10 | 2002-07-05 |  | 24d | 17d | start no earlier than 2002-06-10 |
| 12 | Final Burn-In CD Image |  | 4w | 2002-06-10 | 2002-07-05 |  | 24d | 17d | start no earlier than 2002-06-10 |
| 13 | Duplicate Flash |  | 4w | 2002-08-14 | 2002-09-10 |  | 0d |  | as late as possible |
| 14 | Duplicate CDs |  | 4w | 2002-08-14 | 2002-09-10 |  | 0d |  | as late as possible |
| 15 | PCBA Func. Test all 3 PCBs |  | 5w | 2002-06-24 | 2002-07-26 |  | 14d | 0d | start no earlier than 2002-06-24 |
| 16 | FP Release BOM |  | 10d | 2002-05-06 | 2002-05-17 |  | 21d | 0d |  |
| 17 | UB Req. Mech BOM Changes |  | 5d | 2002-05-20 | 2002-05-24 | 16 | 8d | 0d |  |
| 18 | UB Req. Sourcing BOM Changes |  | 5d | 2002-05-20 | 2002-05-24 | 16 | 8d | 0d |  |
| 19 | UB Req. ASY BOM Changes |  | 5d | 2002-05-20 | 2002-05-24 | 16 | 8d | 0d |  |
| 20 | FP add UB BOM changes |  | 4d | 2002-05-27 | 2002-05-30 | 17, 18, 19, 37 | 8d | 0d |  |
| 21 | FP ROUTE PCB-03-X9 |  | 2d | 2002-05-31 | 2002-06-03 | 20 | 8d | 0d |  |
| 22 | UB review gerber for ICT |  | 5d | 2002-06-04 | 2002-06-10 | 21, 38 | 8d | 0d |  |
| 23 | FP final gerber edit-03-A |  | 2d | 2002-06-11 | 2002-06-12 | 22, 39 | 8d | 7d |  |
| 24 | FP RTFAB-03-A |  | 5d | 2002-06-24 | 2002-06-28 | 23, 40, 8 | 1d | 0d |  |
| 25 | FP RTASY-03-A |  | 5d | 2002-07-01 | 2002-07-05 | 24 | 9d |  |  |
| 26 | FP HW EVT, EMI |  | 2w | 2002-07-08 | 2002-07-19 | 25, 10 | 5d | 0d |  |
| 27 | FP/Fiori Create Test Fixture |  | 6w | 2002-06-10 | 2002-07-19 |  | 19d | 0d | start no earlier than 2002-06-10 |
| 28 | UB Review test fixture |  | 5d | 2002-07-29 | 2002-08-02 | 27, 25, 41, 15 | 14d |  |  |
| 29 | FP xfer BOM to UB | milestone | 0d | 2002-07-19 | 2002-07-19 | 26, 27, 42, 45, 9 | 52d |  |  |
| 30 | FP ROUTE -04-A |  | 3d | 2002-07-22 | 2002-07-24 | 26 | 5d | 0d |  |
| 31 | FP RTFAB -04-A |  | 2d | 2002-07-25 | 2002-07-26 | 30 | 5d | 0d |  |
| 32 | FP RTASY -04-A |  | 4ed | 2002-07-26 | 2002-07-30 | 31 | 28.88d | 1.88d |  |
| 33 | FP HW EVT -04-A |  | 3d | 2002-07-31 | 2002-08-02 | 32, 11, 12 | 7d | 0d |  |
| 34 | UB build ICT |  | 4w | 2002-07-25 | 2002-08-21 | 9, 30 | 14d |  |  |
| 35 | Pilot run PCA ASY |  | 1w | 2002-09-11 | 2002-09-17 | 44, 36, 28, 34, 57, 32, 13, 14 | 0d |  | as late as possible |
| 36 | UB Order BOM parts |  | 10w | 2002-05-31 | 2002-08-08 | 20 | 23d |  |  |
| 37 | GOAL UB confirm part changes | milestone | 0d | 2002-05-13 | 2002-05-13 |  | 22d | 10d | start no earlier than 2002-05-13 |
| 38 | GOAL FP prelim gerber for ICT | milestone | 0d | 2002-05-24 | 2002-05-24 |  | 19d | 7d | start no earlier than 2002-05-24 |
| 39 | GOAL UB feedback on ICT | milestone | 0d | 2002-05-31 | 2002-05-31 |  | 19d | 7d | start no earlier than 2002-05-31 |
| 40 | GOAL FP PCB RTFAB | milestone | 0d | 2002-06-07 | 2002-06-07 |  | 16d | 11d | start no earlier than 2002-06-07 |
| 41 | GOAL FP send ASY +3 PCB set | milestone | 0d | 2002-06-19 | 2002-06-19 |  | 55d | 28d | start no earlier than 2002-06-19 |
| 42 | GOAL FP relase final post EMI BOM | milestone | 0d | 2002-07-01 | 2002-07-01 |  | 67d | 0d | start no earlier than 2002-07-01 |
| 43 | GOAL UB review, pull trigger | milestone | 0d | 2002-07-01 | 2002-07-01 | 42 | 67d |  |  |
| 44 | GOAL UB start PCA Pilot Run | milestone | 0d | 2002-07-22 | 2002-07-22 |  | 37d |  | start no earlier than 2002-07-22 |
| 45 | GOAL FP submit regulatory paperwork | milestone | 0d | 2002-07-01 | 2002-07-01 |  | 67d | 15d | start no earlier than 2002-07-01 |
| 46 | GOAL receive final reg. approval | milestone | 0d | 2002-08-02 | 2002-08-02 |  | 28d | 11d | start no earlier than 2002-08-02 |
| 47 | prelim plastic spec |  | 12d | 2002-05-08 | 2002-05-23 |  | 2d | 0d | finish no earlier than 2002-05-23 |
| 48 | TriHonor feedback |  | 5d | 2002-05-24 | 2002-05-30 | 47 | 2d |  |  |
| 49 | Fiori final rev |  | 4w | 2002-06-04 | 2002-07-01 | 48 | 0d |  | finish no earlier than 2002-07-01 |
| 50 | Review CD-ROM samples and spec |  | 5d | 2002-05-20 | 2002-05-24 |  | 21d | 0d | start no earlier than 2002-05-20 |
| 51 | Approve and purchase CD-ROM | milestone | 0d | 2002-05-24 | 2002-05-24 | 50 | 21d | 0d |  |
| 52 | FP change plastic for CD-ROM |  | 5d | 2002-05-27 | 2002-05-31 | 51 | 21d |  |  |
| 53 | plastic tool lead |  | 60ed | 2002-07-01 | 2002-08-30 | 52, 49 | 1.88d | 0d |  |
| 54 | first shot approval |  | 3ed | 2002-08-30 | 2002-09-02 | 53 | 1.88d | 0d |  |
| 55 | order plastic production |  | 15ed | 2002-09-02 | 2002-09-17 | 54 | 1.88d |  |  |
| 56 | Pilot run box asy |  | 2w | 2002-09-18 | 2002-10-01 | 55, 35 | 0d |  |  |
| 57 | Regulatory approvals | milestone | 0d | 2002-08-16 | 2002-08-16 | 58, 59, 60, 61, 62, 46 | 17d |  | start no earlier than 2002-06-24 |
| 58 | FP UL approval |  | 4w | 2002-06-24 | 2002-07-19 |  | 37d | 20d | start no earlier than 2002-06-24 |
| 59 | FP CUL approval |  | 4w | 2002-06-24 | 2002-07-19 |  | 37d | 20d | start no earlier than 2002-06-24 |
| 60 | FP FCC approval |  | 4w | 2002-07-22 | 2002-08-16 | 26 | 17d | 0d |  |
| 61 | FP CE approval |  | 4w | 2002-06-24 | 2002-07-19 |  | 37d | 20d | start no earlier than 2002-06-24 |
| 62 | FP C-TICK approval |  | 4w | 2002-06-24 | 2002-07-19 |  | 37d | 20d | start no earlier than 2002-06-24 |
