# E-Coach Program Schedule

Schedule from MS Project, 2002-03-25 to 2002-12-12, A marks actual dates.

## Calendars

- Standard: Mon-Fri 08:00-12:00, 13:00-17:00; Sat-Sun off.

## Resources

| Resource |
| --- |
| ME2 |
| ME1 |
| PM |
| Client |
| ME 3 |

## Schedule

| ID | WBS | Task | Type | Duration | Start | Finish | Predecessors | Complete | Remaining | Baseline start | Baseline finish | Baseline duration | Total slack | Free slack | Resources | Work | Actual work | Baseline cost |
| --- | --- | --- | --- | --- | --- | --- | --- | --- | --- | --- | --- | --- | --- | --- | --- | --- | --- | --- |
| 1 | 1 | **DJ35 and Sahara Combined** |  | 188.5d | 2002-03-25 A | 2002-12-12 |  | 39% | 115.2d | 2002-03-25 | 2002-09-19 | 129d | 0d |  |  | 795h | 643h | 135,330 |
| 2 | 1.1 | **DJ35 Prototyping Effort** |  | 57d | 2002-03-25 A | 2002-06-11 |  | 89% | 6d | 2000-01-10 | 2001-08-27 | 415.5d | 127d |  |  | 257h | 237h | 587,236 |
| 3 | 1.1.1 | updated 06-24 | milestone | 0d | 2002-03-25 | 2002-03-25 |  |  |  | 2002-03-25 | 2002-03-25 | 0d? | 184d |  |  |  |  |  |
| 4 | 1.1.2 | **Phase 1: Planning** |  | 3d | 2002-03-25 A | 2002-03-27 A |  | 100% |  | 2000-10-13 | 2001-01-05 | 52.5d |  |  |  | 38h | 38h | 81,420 |
| 5 | 1.1.2.1 | Kickoff Meeting |  | 0.5d | 2002-03-25 A | 2002-03-25 A |  | 100% |  | 2002-03-25 | 2002-03-25 | 0.5d |  |  | ME1; ME2; PM | 12h | 12h | 1,560 |
| 6 | 1.1.2.2 | Current Assembly Review |  | 1.5d | 2002-03-25 A | 2002-03-26 A | 5 | 100% |  | 2002-01-28 | 2002-01-28 | 1d |  |  | ME1 [50%]; ME2 [50%] | 10h | 10h | 1,560 |
| 7 | 1.1.2.3 | Detailed Schedule Build |  | 1d | 2002-03-27 A | 2002-03-27 A | 6 | 100% |  | 2000-10-13 | 2000-10-18 | 3d |  |  | ME1 [50%]; PM [50%] | 8h | 8h | 5,520 |
| 8 | 1.1.2.4 | Requirements Document Build |  | 1d | 2002-03-27 A | 2002-03-27 A | 6 | 100% |  | 2000-10-18 | 2000-10-19 | 1d |  |  | ME2 [50%]; PM [50%] | 8h | 8h | 1,840 |
| 9 | 1.1.3 | **Phase 2: Product Engineering** |  | 15d | 2002-03-28 A | 2002-04-17 A | 4 | 100% |  | 2000-10-30 | 2001-04-13 | 111d |  |  |  | 143h | 143h | 229,770 |
| 10 | 1.1.3.1 | Conceptual Assembly Design / Engineering |  | 4.75d | 2002-03-28 A | 2002-04-03 A |  | 100% |  | 2002-03-05 | 2002-03-18 | 10d |  |  | ME1; ME2 [50%] | 57h | 57h | 11,000 |
| 11 | 1.1.3.2 | Internal Design Review |  | 0.25d | 2002-04-03 A | 2002-04-03 A | 10 | 100% |  | 2002-04-03 | 2002-04-03 | 0.25d |  |  | ME1; ME2; PM | 6h | 6h | 780 |
| 12 | 1.1.3.3 | Detailed Design and Part Modeling |  | 9.5d | 2002-04-04 A | 2002-04-17 A | 11 | 100% |  | 2002-03-12 | 2002-05-28 | 56d |  |  | ME1 | 76h | 76h | 51,920 |
| 13 | 1.1.3.4 | Send out files for Quote and Client Review |  | 0.5d | 2002-04-17 A | 2002-04-17 A | 12 | 100% |  | 2002-04-17 | 2002-04-17 | 0.5d |  |  | ME1 | 4h | 4h | 520 |
| 14 | 1.1.4 | **Phase 3: Prototyping** |  | 33d | 2002-04-17 A | 2002-06-03 | 9 | 99% | 0d | 2001-01-10 | 2001-02-28 | 34.5d | 127d | 0d |  | 56h | 56h | 5,750 |
| 15 | 1.1.4.1 | PO Placement (FP) and Database Release | milestone | 0d | 2002-04-17 A | 2002-04-17 A |  | 100% |  | 2002-04-17 | 2002-04-17 | 0d? |  |  |  |  |  |  |
| 16 | 1.1.4.2 | SLA Construction |  | 10d | 2002-04-18 A | 2002-05-01 A | 15 | 100% |  | 2002-04-18 | 2002-05-01 | 10d |  |  | ME1 [10%] | 8h | 8h | 1,040 |
| 17 | 1.1.4.3 | Urethane Sample |  | 6d | 2002-05-02 A | 2002-05-09 A | 16 | 100% |  | 2002-04-09 | 2002-04-29 | 3w |  |  | ME1 [25%] | 12h | 12h | 3,300 |
| 18 | 1.1.4.4 | In-person Urethane and Sheet Metal Review |  | 1d | 2002-05-10 A | 2002-05-10 A | 17 | 100% |  |  |  |  |  |  | ME2; PM; Client | 24h | 24h |  |
| 19 | 1.1.4.5 | 35 unit Prototype Run |  | 15d | 2002-05-13 A | 2002-06-03 A | 18 | 100% |  | 2002-05-09 | 2002-05-30 | 15d |  |  | ME1 [10%] | 12h | 12h | 1,560 |
| 20 | 1.1.4.6 | DJ35 Mechanical Parts to FullPlay | milestone | 0d | 2002-06-03 | 2002-06-03 | 19 |  |  |  |  |  | 127d |  |  |  |  |  |
| 21 | 1.1.5 | **Phase 4: Assembly Support (Mech Design)** |  | 6d | 2002-06-04 | 2002-06-11 | 14 |  |  | 2001-02-13 | 2001-02-14 | 1d | 127d |  |  | 20h |  | 1,840 |
| 22 | 1.1.5.1 | Assembly Support |  | 6d | 2002-06-04 | 2002-06-11 |  |  |  | 2002-05-21 | 2002-05-22 | 2d | 127d |  | ME1 [50%] | 20h |  | 1,760 |
| 24 | 1.2 | **Sahara Production Engineering Effort** |  | 170.5d | 2002-04-18 A | 2002-12-12 |  | 28% | 123.02d | 2002-04-18 | 2002-09-19 | 111d | 0d |  |  | 538h | 406h | 105,300 |
| 25 | 1.2.1 | **Phase 1 Planning** |  | 2d | 2002-04-18 A | 2002-04-19 A | 9 | 100% |  | 2002-04-18 | 2002-04-22 | 3d |  |  |  | 16h | 16h | 3,640 |
| 26 | 1.2.1.1 | Kickoff Meeting |  | 0.5d | 2002-04-18 A | 2002-04-18 A |  | 100% |  | 2002-04-18 | 2002-04-18 | 0.5d |  |  | ME 3 [50%]; PM [50%] | 4h | 4h | 1,040 |
| 27 | 1.2.1.2 | Detailed Schedule Build / Review |  | 1d | 2002-04-18 A | 2002-04-19 A | 26 | 100% |  | 2002-04-18 | 2002-04-22 | 2d |  |  | PM | 8h | 8h | 2,080 |
| 28 | 1.2.1.3 | Design Change Requirements Review |  | 0.5d | 2002-04-19 A | 2002-04-19 A | 27 | 100% |  | 2002-04-22 | 2002-04-22 | 0.5d |  |  | PM | 4h | 4h | 520 |

| ID | WBS | Task | Type | Duration | Start | Finish | Predecessors | Complete | Remaining | Baseline start | Baseline finish | Baseline duration | Total slack | Free slack | Constraint | Resources | Work | Actual work | Baseline cost |
| --- | --- | --- | --- | --- | --- | --- | --- | --- | --- | --- | --- | --- | --- | --- | --- | --- | --- | --- | --- |
| 29 | 1.2.2 | **Phase 2A Product Engineering** |  | 60d | 2002-04-22 A | 2002-07-12 | 25 | 60% | 23.88d | 2002-04-23 | 2002-05-23 | 22.5d | 108d |  |  |  | 302h | 222h | 37,440 |
| 30 | 1.2.2.1 | Brainstorm Engineering Strategies |  | 0.25d | 2002-04-22 A | 2002-04-22 A |  | 100% |  | 2002-04-23 | 2002-04-23 | 0.5d |  |  |  | ME1; ME2; PM | 6h | 6h | 1,560 |
| 31 | 1.2.2.2 | CD Sourcing and Research, Trip Prep |  | 6d | 2002-04-22 A | 2002-04-30 A | 30 | 100% |  |  |  |  |  |  |  | ME2 | 48h | 48h |  |
| 32 | 1.2.2.3 | Asian Production Partner Trip and Download |  | 6d | 2002-05-01 A | 2002-05-08 A | 31 | 100% |  |  |  |  |  |  | must start on 2002-05-01 | ME2 [50%]; ME1 | 24h | 24h |  |
| 33 | 1.2.2.4 | Engineering and CAD work - 1st rev production |  | 12d | 2002-05-09 A | 2002-05-24 A | 32 | 100% |  | 2002-04-23 | 2002-04-30 | 5d |  |  |  | ME1; ME2 [50%] | 144h | 144h | 10,400 |
| 34 | 1.2.2.5 | Preliminary Files to Tooling Vendors | milestone | 0d | 2002-05-24 A | 2002-05-24 A | 33 | 100% |  | 2002-05-23 | 2002-05-23 | 0d? |  |  |  |  |  |  |  |
| 35 | 1.2.2.6 | CM File Review |  | 5.5d | 2002-05-27 A | 2002-06-03 A | 34 | 100% |  |  |  |  |  |  |  |  |  |  |  |
| 36 | 1.2.2.7 | Conference Call with CM (Feedback) |  | 0.5d | 2002-06-03 A | 2002-06-03 A | 35 | 100% |  |  |  |  |  |  |  |  |  |  |  |
| 37 | 1.2.2.8 | Engineering and CAD - 2nd rev (refinements, second level) |  | 10d | 2002-06-04 | 2002-06-17 | 36 |  |  |  |  |  | 113d | 0d |  | ME2 [50%] | 40h |  |  |
| 38 | 1.2.2.9 | Engineering and CAD - CD faceplate aligment redesign, etc. |  | 5d | 2002-07-01 | 2002-07-05 | 37, 51 |  |  |  |  |  | 0d |  |  | ME2 [50%] | 20h |  |  |
| 39 | 1.2.2.10 | Engineering and CAD - final venting, rack ears, file tweaks / reviews, etc. |  | 5d | 2002-07-08 | 2002-07-12 | 38 |  |  |  |  |  | 108d |  |  | ME2 [50%] | 20h |  |  |
| 40 | 1.2.3 | **Phase 2B Thermal / Acoustic Baseline Testing** |  | 19d | 2002-05-09 A | 2002-06-04 A | 9 | 100% |  | 2002-04-18 | 2002-05-21 | 23.5d |  |  |  |  | 164h | 164h | 24,960 |
| 41 | 1.2.3.1 | Test Planning and Prep - Thermal |  | 1.5d | 2002-05-09 A | 2002-05-10 A | 32 | 100% |  | 2002-04-18 | 2002-04-23 | 4d |  |  |  | ME 3 | 12h | 12h | 4,160 |
| 42 | 1.2.3.2 | Test Planning and Prep - Acoustic |  | 2d | 2002-05-09 A | 2002-05-10 A | 32 | 100% |  | 2002-05-02 | 2002-05-07 | 4d |  |  |  | ME 3 | 16h | 16h | 4,160 |
| 43 | 1.2.3.3 | Thermal Data Collection |  | 15d | 2002-05-10 A | 2002-05-31 A | 41 | 100% |  |  |  |  |  |  |  | ME 3 | 120h | 120h |  |
| 44 | 1.2.3.4 | Acoustic Data Collection |  | 15d | 2002-05-13 A | 2002-05-31 A | 42 | 100% |  |  |  |  |  |  |  |  |  |  |  |
| 45 | 1.2.3.5 | Summary Preparation |  | 2d | 2002-06-03 A | 2002-06-04 A | 44 | 100% |  | 2002-05-16 | 2002-05-20 | 3d |  |  |  | ME 3 | 16h | 16h | 3,120 |
| 46 | 1.2.4 | **Phase 3 Prototyping** |  | 55d | 2002-06-03 A | 2002-08-19 | 36 | 8% | 50.49d | 2002-05-15 | 2002-07-04 | 36.5d | 0d |  |  |  | 56h | 4h | 24,960 |
| 47 | 1.2.4.1 | **Prototyping Round 1** |  | 34.5d | 2002-06-03 A | 2002-07-22 |  | 32% | 23.37d | 2002-05-15 | 2002-06-13 | 21.5d | 0d |  |  |  | 8h | 4h | 14,560 |
| 48 | 1.2.4.1.1 | Files to Proto Vendors | milestone | 0d | 2002-06-03 A | 2002-06-03 A |  | 100% |  | 2002-05-15 | 2002-05-15 | 0d? |  |  |  |  |  |  |  |
| 49 | 1.2.4.1.2 | Quote Generation |  | 3d | 2002-06-04 A | 2002-06-06 A | 48 | 100% |  | 2002-05-15 | 2002-05-20 | 3d |  |  |  |  |  |  | 1,560 |
| 50 | 1.2.4.1.3 | Receive and Review Quotes |  | 2d | 2002-06-07 A | 2002-06-10 A | 49 | 100% |  | 2002-05-20 | 2002-05-21 | 1d |  |  |  | ME2 [25%] | 4h | 4h | 520 |
| 51 | 1.2.4.1.4 | FINAL CD-ROM SPEC CONFIRMATION ON BTC | milestone | 0d | 2002-07-01 | 2002-07-01 | 50 |  |  |  |  |  | 0d |  | start no earlier than 2002-07-01 |  |  |  |  |
| 52 | 1.2.4.1.5 | Release FullPlay PO Numbers to Prototyper | milestone | 0d | 2002-07-05 | 2002-07-05 | 51, 38 |  |  | 2002-05-21 | 2002-05-21 | 0d? | 0d |  |  |  |  |  |  |
| 53 | 1.2.4.1.6 | SLA / Sheet Metal Construction |  | 5d | 2002-07-08 | 2002-07-12 | 52 |  |  | 2002-05-21 | 2002-06-05 | 10d | 0d |  |  | ME2 [10%] | 4h |  | 2,600 |
| 54 | 1.2.4.1.7 | Prototype Assembly Review and CAD Database Refinements |  | 5d | 2002-07-15 | 2002-07-19 | 53 |  |  |  |  |  | 0d |  |  |  |  |  |  |
| 55 | 1.2.4.1.8 | Updated Files to Tooling Vendors |  | 0.5d | 2002-07-22 | 2002-07-22 | 54 |  |  | 2002-06-13 | 2002-06-13 | 0d? | 0d |  |  |  |  |  |  |

| ID | WBS | Task | Type | Duration | Start | Finish | Predecessors | Baseline start | Baseline finish | Baseline duration | Total slack | Resources | Work | Baseline cost |
| --- | --- | --- | --- | --- | --- | --- | --- | --- | --- | --- | --- | --- | --- | --- |
| 56 | 1.2.4.2 | **Prototyping Round 2** |  | 20.5d | 2002-07-22 | 2002-08-19 | 47 | 2002-06-13 | 2002-07-04 | 15d | 0d |  | 48h | 10,400 |
| 57 | 1.2.4.2.1 | Updated Files to Prototyping Vendors | milestone | 0d | 2002-07-22 | 2002-07-22 |  | 2002-06-13 | 2002-06-13 | 0d? | 0d |  |  |  |
| 58 | 1.2.4.2.2 | Release FullPlay PO Numbers to Prototypers | milestone | 0d | 2002-07-22 | 2002-07-22 | 57 | 2002-06-13 | 2002-06-13 | 0d? | 0d |  |  |  |
| 59 | 1.2.4.2.3 | SLA Build |  | 5d | 2002-07-22 | 2002-07-29 | 58 | 2002-06-14 | 2002-06-27 | 10d | 0d | ME2 [10%] | 4h | 2,600 |
| 60 | 1.2.4.2.4 | Urethane Casting (based on SLA scale master) |  | 10d | 2002-07-29 | 2002-08-12 | 59 |  |  |  | 0d |  |  |  |
| 61 | 1.2.4.2.5 | Sheet Metal Build (QTY 6) |  | 15d | 2002-07-22 | 2002-08-12 | 58 |  |  |  | 0d |  |  |  |
| 62 | 1.2.4.2.6 | Machined ABS (OPTIONAL) |  | 10d | 2002-07-22 | 2002-08-05 | 58 |  |  |  | 5d |  |  |  |
| 63 | 1.2.4.2.7 | Parts Received | milestone | 0d | 2002-08-12 | 2002-08-12 | 60, 61, 62 |  |  |  | 0d |  |  |  |
| 64 | 1.2.4.2.8 | Prototype Assemblies Review |  | 0.5d | 2002-08-12 | 2002-08-12 | 63 | 2002-07-01 | 2002-07-01 | 0.5d | 0d | ME1; PM | 8h | 1,560 |
| 65 | 1.2.4.2.9 | Limited CAD Updates as Required |  | 4.5d | 2002-08-13 | 2002-08-19 | 64 | 2002-07-02 | 2002-07-04 | 3d | 0d | ME2 | 36h | 3,120 |
| 66 | 1.2.4.2.10 | Final CAD Release to Tooling Vendors |  | 0.5d | 2002-08-19 | 2002-08-19 | 65 | 2002-07-04 | 2002-07-04 | 0d? | 0d |  |  |  |
| 67 | 1.2.5 | **Phase 4 Tooling and Production Ramp Support (TBD)** |  | 103d | 2002-07-22 | 2002-12-12 |  | 2002-07-05 | 2002-09-19 | 55d | 0d |  |  | 14,300 |
| 68 | 1.2.5.1 | CTF Drawing Creation |  | 30d | 2002-07-22 | 2002-09-02 | 47 |  |  |  | 72.5d |  |  |  |
| 69 | 1.2.5.2 | (?) Design Support for Tooling Design and Build |  | 8.5w | 2002-08-20 | 2002-10-17 | 56 | 2002-07-05 | 2002-08-15 | 6w | 0d |  |  | 7,800 |
| 70 | 1.2.5.3 | (?) First Articles |  | 5d | 2002-10-17 | 2002-10-24 | 69 |  |  |  | 0d |  |  |  |
| 71 | 1.2.5.4 | (?) Tooling Mods and Texturing |  | 2w | 2002-10-24 | 2002-11-07 | 70 |  |  |  | 0d |  |  |  |
| 72 | 1.2.5.5 | (?) 500 Unit Run Completed | milestone | 0d | 2002-11-07 | 2002-11-07 | 71 |  |  |  | 0d |  |  |  |
| 73 | 1.2.5.6 | (?) Design Support for Manufacturing Ramp |  | 5w | 2002-11-07 | 2002-12-12 | 72 | 2002-08-16 | 2002-09-19 | 5w | 0d |  |  | 6,500 |
