# Engineering

Schedule from MS Project, 2002-12-02 to 2003-07-01.

## Calendars

- Standard: Mon-Fri 08:00-12:00, 13:00-17:00; Sat-Sun off. Exceptions (off unless hours are given): 2002-12-24 to 2002-12-25, 2003-01-01.

## Resources

| Resource |
| --- |
| Designer |
| Project Engineer |
| Discipline Engineer |
| Cost Engineer |
| Drafter |
| Scheduler |
| Project Sponsor |
| Josh |
| Chris |
| Flextronics |
| Paradigm |
| Teman |

## Schedule

| ID | WBS | Task | Type | Duration | Start | Finish | Predecessors | Total slack | Free slack | Constraint | Resources | Work |
| --- | --- | --- | --- | --- | --- | --- | --- | --- | --- | --- | --- | --- |
| 1 | 1 | **Rev 1 IMS Engineering** |  | 91d | 2002-12-02 | 2003-04-10 |  | 0d |  |  |  | 992h |
| 2 | 1.1 | **Ref. board software work** |  | 20d | 2003-01-31 | 2003-02-27 |  | 88d |  |  |  | 72h |
| 3 | 1.1.1 | Acquire eval board | milestone | 0d | 2003-01-31 | 2003-01-31 |  | 88d | 0d | start no earlier than 2003-01-31 |  |  |
| 4 | 1.1.2 | Acquire CE 4.1 tools | milestone | 0d | 2003-02-27 | 2003-02-27 | 3FS+4w | 88d |  |  |  |  |
| 5 | 1.1.3 | CE 4.1 Windows 2k/XP boot service |  | 3d | 2003-01-31 | 2003-02-04 | 3 | 104d | 0d |  | Teman | 24h |
| 6 | 1.1.4 | CE 4.1 build system transition |  | 6d | 2003-02-05 | 2003-02-12 | 5 | 104d |  |  | Teman | 48h |
| 7 | 1.2 | Finalize product requirements |  | 5d | 2002-12-02 | 2002-12-06 |  | 0d |  |  |  |  |
| 8 | 1.3 | Research hardware components |  | 10d | 2002-12-09 | 2002-12-20 | 7 | 0d |  | start no earlier than 2002-12-08 |  |  |
| 9 | 1.4 | Initial design review |  | 1d | 2002-12-30 | 2002-12-30 | 8FS+3d | 130d |  | start no earlier than 2002-12-23 |  |  |
| 10 | 1.5 | Create Schematics |  | 7d | 2002-12-23 | 2003-01-03 | 8 | 0d |  |  |  |  |
| 11 | 1.6 | Final design review |  | 1d | 2003-01-06 | 2003-01-06 | 10 | 0d |  |  |  |  |
| 12 | 1.7 | Enter BOM/parts in system |  | 2d | 2003-01-07 | 2003-01-08 | 11 | 124d |  |  |  |  |
| 13 | 1.8 | PCB Layout |  | 4w | 2003-01-07 | 2003-02-03 | 11 | 0d |  |  | Paradigm | 160h |
| 14 | 1.9 | PCB Fab |  | 5d | 2003-02-04 | 2003-02-10 | 13 | 0d |  |  |  |  |
| 15 | 1.10 | PCB Assembly |  | 5d | 2003-02-11 | 2003-02-17 | 14, 16 | 0d |  |  |  |  |
| 16 | 1.11 | Parts Procurement |  | 47d | 2002-12-02 | 2003-02-07 |  | 1d |  |  | Chris | 376h |
| 17 | 1.12 | Board bringup |  | 3d | 2003-02-18 | 2003-02-20 | 15 | 0d |  |  | Chris | 24h |
| 18 | 1.13 | **Firmware** |  | 34d | 2003-02-21 | 2003-04-09 | 17 | 0d |  |  |  | 272h |
| 19 | 1.13.1 | CE boot loader, w/ existing features |  | 5d | 2003-02-21 | 2003-02-27 |  | 0d |  |  | Teman | 40h |
| 20 | 1.13.2 | Board-specific IOCTLs (LEDs, video modes, etc) |  | 3d | 2003-02-28 | 2003-03-04 | 19 | 0d |  |  | Teman | 24h |
| 21 | 1.13.3 | Network driver |  | 5d | 2003-03-05 | 2003-03-11 | 20 | 0d |  |  | Teman | 40h |
| 22 | 1.13.4 | Peripheral support |  | 5d | 2003-03-12 | 2003-03-18 | 21 | 0d |  |  | Teman | 40h |
| 23 | 1.13.5 | HW/SW integration |  | 12d | 2003-03-19 | 2003-04-03 | 22 | 0d |  |  | Teman | 96h |
| 24 | 1.13.6 | Factory test |  | 4d | 2003-04-04 | 2003-04-09 | 23 | 59d |  |  | Teman | 32h |
| 25 | 1.14 | Hardware design verification/test |  | 10d | 2003-03-21 | 2003-04-03 | 23FF | 63d |  |  |  |  |
| 26 | 1.15 | Manufacturing DFT/DFM review |  | 11d | 2003-02-21 | 2003-03-07 | 17 | 82d |  |  | Flextronics | 88h |
| 27 | 1.16 | FCC EMI prescan |  | 5d | 2003-04-04 | 2003-04-10 | 23 | 58d |  |  |  |  |

| ID | WBS | Task | Type | Duration | Start | Finish | Predecessors | Total slack | Free slack |
| --- | --- | --- | --- | --- | --- | --- | --- | --- | --- |
| 29 | 2 | **Rev 2 IMS Engineering** |  | 36d | 2003-04-04 | 2003-05-23 |  | 0d |  |
| 30 | 2.1 | Schematics updated |  | 3d | 2003-04-04 | 2003-04-08 | 23 | 0d |  |
| 31 | 2.2 | PCB Layout |  | 10d | 2003-04-09 | 2003-04-22 | 30 | 0d |  |
| 32 | 2.3 | PCB Fab |  | 5d | 2003-04-23 | 2003-04-29 | 31 | 0d |  |
| 33 | 2.4 | PCB Assembly |  | 5d | 2003-04-30 | 2003-05-06 | 32 | 0d |  |
| 34 | 2.5 | Board bringup |  | 3d | 2003-05-07 | 2003-05-09 | 33 | 0d |  |
| 35 | 2.6 | Hardware test/verification |  | 5d | 2003-05-12 | 2003-05-16 | 34 | 0d |  |
| 36 | 2.7 | FCC test |  | 5d | 2003-05-19 | 2003-05-23 | 35 | 0d |  |
| 37 | 2.8 | UL testing |  | 10d | 2003-05-12 | 2003-05-23 | 36FF | 0d |  |
| 39 | 3 | **Rev 3 IMS Engineering** |  | 27d | 2003-05-26 | 2003-07-01 |  | 0d |  |
| 40 | 3.1 | Integrate regulatory changes |  | 1d | 2003-05-26 | 2003-05-26 | 36, 37 | 0d |  |
| 41 | 3.2 | Update schematics |  | 1d | 2003-05-27 | 2003-05-27 | 40 | 0d |  |
| 42 | 3.3 | PCB Layout |  | 5d | 2003-05-28 | 2003-06-03 | 41 | 0d |  |
| 43 | 3.4 | PCB Fab |  | 5d | 2003-06-04 | 2003-06-10 | 42 | 0d |  |
| 44 | 3.5 | PCB Assembly |  | 5d | 2003-06-11 | 2003-06-17 | 43 | 0d |  |
| 45 | 3.6 | UL/FCC Regulatory rescan |  | 10d | 2003-06-18 | 2003-07-01 | 44 | 0d |  |
| 46 | 3.7 | Hardware bringup/test |  | 2d | 2003-06-18 | 2003-06-19 | 44 | 8d | 0d |
| 48 | 4 | Product Manufacturing release | milestone | 0d | 2003-06-19 | 2003-06-19 | 46 | 8d |  |
| 50 | 5 | Need Firmware/Software tasks | milestone | 0d | 2002-12-02 | 2002-12-02 |  | 149d |  |
| 51 | 6 | Need Manufacturing milestones | milestone | 0d | 2002-12-02 | 2002-12-02 |  | 149d |  |
| 52 | 7 | European/international testing? | milestone | 0d | 2002-12-02 | 2002-12-02 |  | 149d |  |
| 53 | 8 | Need build plans (qty) | milestone | 0d | 2002-12-02 | 2002-12-02 |  | 149d |  |
