# IMS_Master_v1

Schedule from MS Project, 2002-08-13 to 2003-01-02.
iObjects

## Calendars

- Standard: Mon-Fri 08:00-12:00, 13:00-17:00; Sat-Sun off. Exceptions (off unless hours are given): 2002-12-24 to 2002-12-25, 2002-12-31 to 2003-01-01.

## Schedule

| ID | WBS | Task | Duration | Start | Finish | Predecessors | Total slack | Free slack | Constraint |
| --- | --- | --- | --- | --- | --- | --- | --- | --- | --- |
| 2 | 1 | **IMS 1.5 (MMD)** | 99d? | 2002-08-13 | 2003-01-02 |  | 0d |  |  |
| 3 | 1.1 | **Hardware Schedule** | 99d? | 2002-08-13 | 2003-01-02 |  | 0d |  |  |
| 4 | 1.1.1 | Preperations | 26d | 2002-08-13 | 2002-09-17 |  | 73d |  |  |
| 5 | 1.1.2 | Design | 16d | 2002-09-23 | 2002-10-14 |  | 5d | 0d | start no earlier than 2002-09-23 |
| 6 | 1.1.3 | V1 Build | 40d | 2002-10-03 | 2002-11-27 | 5FS-8d | 5d | 0d |  |
| 7 | 1.1.4 | **V2 Build** | 26d? | 2002-11-22 | 2003-01-02 | 6FS-4d | 0d |  |  |
| 8 | 1.1.4.1 | V2 PCB Layout | 8d | 2002-11-22 | 2002-12-03 |  | 5d | 0d |  |
| 9 | 1.1.4.2 | Membrane Keypad Info from 3M | 1d | 2002-11-22 | 2002-11-22 |  | 25d |  |  |
| 10 | 1.1.4.3 | V2 PCB Fab and ship | 3d | 2002-12-04 | 2002-12-06 | 8 | 5d | 0d |  |
| 11 | 1.1.4.4 | Ship V2 components to QSM | 1d | 2002-12-09 | 2002-12-09 | 10 | 5d | 0d |  |
| 12 | 1.1.4.5 | SMT and ship 15 sets | 7d | 2002-12-10 | 2002-12-18 | 11 | 5d | 0d |  |
| 13 | 1.1.4.6 | V2 Test Software Available | 1d | 2002-12-05 | 2002-12-05 |  | 16d |  | start no earlier than 2002-12-05 |
| 14 | 1.1.4.7 | Through hole assembly and test 5 units | 1d | 2002-12-18 | 2002-12-18 | 12FS-1d | 5.5d | 0d |  |
| 15 | 1.1.4.8 | Through hole asy and test 10 units | 2d | 2002-12-19 | 2002-12-20 | 12 | 5d |  |  |
| 16 | 1.1.4.9 | Ship 2 bare tested PCB to Fullplay | 1d | 2002-12-19 | 2002-12-19 | 14 | 6d |  |  |
| 17 | 1.1.4.10 | Obtain Membrane Keypads for V2 Models | 1d? | 2002-12-20 | 2002-12-20 |  | 0d |  | start no earlier than 2002-12-20 |
| 18 | 1.1.4.11 | Obtain Plastic | 1d? | 2002-11-22 | 2002-11-22 |  | 25d |  |  |
| 19 | 1.1.4.12 | Assemble + Ship V2 EMI Models | 5d | 2002-12-23 | 2003-01-02 | 17 | 0d |  |  |
| 20 | 1.1.5 | **FCC testing** | 3.5d | 2002-12-23 | 2002-12-30 |  | 0.5d | 0d |  |
| 21 | 1.1.5.1 | **FCC round 1** | 0.5d | 2002-12-23 | 2002-12-23 |  | 3.5d |  |  |
| 22 | 1.1.5.1.1 | EMI Test V2 Models | 0.5d | 2002-12-23 | 2002-12-23 | 14, 17 | 3.5d |  |  |
| 23 | 1.1.5.1.2 | ESD Testing V2 Models | 0.5d | 2002-12-23 | 2002-12-23 | 14, 17 | 3.5d |  |  |
| 24 | 1.1.5.2 | **FCC round 2** | 0.5d | 2002-12-30 | 2002-12-30 |  | 0.5d |  |  |
| 25 | 1.1.5.2.1 | EMI Test V2 Models | 0.5d | 2002-12-30 | 2002-12-30 |  | 0.5d |  | start no earlier than 2002-12-30 |
| 26 | 1.1.5.2.2 | ESD Testing V2 Models | 0.5d | 2002-12-30 | 2002-12-30 |  | 0.5d |  | start no earlier than 2002-12-30 |
| 27 | 1.1.6 | PCB Release | 1d? | 2002-12-30 | 2003-01-02 | 20 | 0.5d |  |  |

| ID | WBS | Task | Type | Duration | Start | Finish | Predecessors | Total slack | Free slack | Constraint |
| --- | --- | --- | --- | --- | --- | --- | --- | --- | --- | --- |
| 30 | 1.2 | **Software Schedule** |  | 83d | 2002-08-13 | 2002-12-05 |  | 16d |  |  |
| 31 | 1.2.1 | **MMD Application software** |  | 64d | 2002-08-13 | 2002-11-08 |  | 35d |  |  |
| 32 | 1.2.1.1 | High Resolution Fullplay UI |  | 17d | 2002-09-30 | 2002-10-22 |  | 47d | 0d | start no earlier than 2002-09-30 |
| 33 | 1.2.1.2 | Demonstrate new Fullplay UI in emulator |  | 1d | 2002-10-23 | 2002-10-23 | 32 | 47d |  |  |
| 34 | 1.2.1.3 | Feature work and new code for MLG |  | 64d | 2002-08-13 | 2002-11-08 |  | 35d | 0d |  |
| 35 | 1.2.1.4 | Demonstrate new MLG UI | milestone | 0d | 2002-11-08 | 2002-11-08 | 34 | 35d |  |  |
| 36 | 1.2.1.5 | Feature testing of MMD application |  | 30d | 2002-08-13 | 2002-09-23 |  | 39d | 0d |  |
| 37 | 1.2.1.6 | Feature debuggin / fixing |  | 30d | 2002-09-24 | 2002-11-04 | 36 | 39d |  |  |
| 38 | 1.2.2 | **MMD Server Software / Config** |  | 83d | 2002-08-13 | 2002-12-05 |  | 16d |  |  |
| 39 | 1.2.2.1 | **Feature work and new code** |  | 50d | 2002-08-13 | 2002-10-21 |  | 49d |  |  |
| 40 | 1.2.2.1.1 | ASPX Application for MMD |  | 50d | 2002-08-13 | 2002-10-21 |  | 49d |  |  |
| 41 | 1.2.2.1.2 | Content Streaming |  | 3d | 2002-08-13 | 2002-08-15 |  | 96d |  |  |
| 42 | 1.2.2.2 | Feature testing of MMD Server Software |  | 83d | 2002-08-13 | 2002-12-05 |  | 16d |  |  |
| 43 | 1.2.2.3 | Feature debugging / fixing |  | 5d | 2002-08-13 | 2002-08-19 |  | 94d |  |  |
| 44 | 1.2.3 | **Central Server Software / Config** |  | 81d | 2002-08-13 | 2002-12-03 |  | 18d |  |  |
| 45 | 1.2.3.1 | Feature work and new code |  | 52d | 2002-09-23 | 2002-12-03 |  | 18d |  | start no earlier than 2002-09-23 |
| 46 | 1.2.3.2 | Development tools for MMD UI |  | 1d | 2002-08-13 | 2002-08-13 |  | 98d |  |  |
| 47 | 1.2.3.3 | Feature testing of MMD Server Software |  | 57d | 2002-08-13 | 2002-10-30 |  | 42d |  |  |
| 48 | 1.2.3.4 | Feature debugging / fixing |  | 8d | 2002-08-13 | 2002-08-22 |  | 91d |  |  |
| 50 | 2 | **IMS 2.0** |  | 1d? | 2002-08-13 | 2002-08-13 |  | 98d |  |  |
| 51 | 2.1 | Hardware Schedule |  | 1d? | 2002-08-13 | 2002-08-13 |  | 98d |  |  |
