# MMD_Global_Schedule

Schedule from MS Project, 2002-08-20 to 2002-12-19.
fullplay media

## Calendars

- Standard: Mon-Fri 08:00-12:00, 13:00-17:00; Sat-Sun off.

## Resources

| Resource |
| --- |
| BBY |

## Schedule

| ID | WBS | Task | Type | Duration | Start | Finish | Predecessors | Total slack | Free slack | Constraint |
| --- | --- | --- | --- | --- | --- | --- | --- | --- | --- | --- |
| 2 | 1 | **Server Application Work** |  | 79d | 2002-08-20 | 2002-12-06 |  | 9d |  |  |
| 3 | 1.1 | Rework DB Schema for MMD |  | 10d | 2002-08-20 | 2002-09-02 |  | 70d | 0d | finish no earlier than 2002-09-02 |
| 4 | 1.2 | Communicate new Schema to MLG | milestone | 0d | 2002-09-03 | 2002-09-03 |  | 78d |  | start no earlier than 2002-09-03 |
| 5 | 1.3 | Port LVS App to work with MMD DB |  | 8d | 2002-09-03 | 2002-09-12 | 3 | 70d |  |  |
| 6 | 1.4 | Begin obtaining screenshots from MLG | milestone | 0d | 2002-09-23 | 2002-09-23 |  | 9d | 0d | start no earlier than 2002-09-23 |
| 7 | 1.5 | **Create new MLG Application** |  | 55d | 2002-09-23 | 2002-12-06 |  | 9d |  |  |
| 8 | 1.5.1 | Map screen elements to UI primitives |  | 4d | 2002-09-23 | 2002-09-26 | 6 | 60d |  | start no earlier than 2002-08-26 |
| 9 | 1.5.2 | Define new primitives for MLG design |  | 7d | 2002-09-23 | 2002-10-01 | 6 | 9d | 0d |  |
| 10 | 1.5.3 | **Create new feature pages and logic** |  | 36d | 2002-10-02 | 2002-11-20 | 9 | 9d | 0d |  |
| 11 | 1.5.3.1 | Replay 'Hard Sell' Home Page |  | 3d | 2002-10-02 | 2002-10-04 |  | 9d | 0d |  |
| 12 | 1.5.3.2 | Regular sell and login screen |  | 3d | 2002-10-07 | 2002-10-09 | 11 | 9d | 0d |  |
| 13 | 1.5.3.3 | code and test individual UI pages |  | 3d | 2002-10-10 | 2002-10-14 | 12 | 9d | 0d |  |
| 14 | 1.5.3.4 | Modular advertising hooks |  | 5d | 2002-10-15 | 2002-10-21 | 13 | 9d | 0d |  |
| 15 | 1.5.3.5 | Replay-specific user pages |  | 3d | 2002-10-22 | 2002-10-24 | 14 | 9d | 0d |  |
| 16 | 1.5.3.6 | Album / Movie pages with art images |  | 3d | 2002-10-25 | 2002-10-29 | 15 | 9d | 0d |  |
| 17 | 1.5.3.7 | Item review / editorial pages |  | 3d | 2002-10-30 | 2002-11-01 | 16 | 9d | 0d |  |
| 18 | 1.5.3.8 | Hit list (Store, regional, brand) recommended music |  | 3d | 2002-11-04 | 2002-11-06 | 17 | 9d | 0d |  |
| 19 | 1.5.3.9 | Gift guide pages |  | 5d | 2002-11-07 | 2002-11-13 | 18 | 9d | 0d |  |
| 20 | 1.5.3.10 | Server support for gift, art, hit list, reccomendation |  | 30d | 2002-10-02 | 2002-11-12 |  | 15d |  |  |
| 21 | 1.5.3.11 | Get UI feedback from MLG |  | 5d | 2002-11-14 | 2002-11-20 | 19 | 9d |  |  |
| 22 | 1.5.4 | **Attach new features to database** |  | 12d | 2002-11-21 | 2002-12-06 |  | 9d |  |  |
| 23 | 1.5.4.1 | Test application with MMD DB |  | 4d | 2002-11-21 | 2002-11-26 | 10 | 9d | 0d |  |
| 24 | 1.5.4.2 | Create new DB elements or procedures |  | 7d | 2002-11-27 | 2002-12-05 | 23 | 9d | 0d |  |
| 25 | 1.5.4.3 | Test application with sample content |  | 1d | 2002-12-06 | 2002-12-06 | 24 | 9d |  |  |

| ID | WBS | Task | Type | Duration | Start | Finish | Predecessors | Total slack | Free slack | Constraint | Resources | Work |
| --- | --- | --- | --- | --- | --- | --- | --- | --- | --- | --- | --- | --- |
| 26 | 1.6 | **Admin Dashboard Applications** |  | 27d | 2002-08-30 | 2002-10-07 |  | 53d |  |  |  |  |
| 27 | 1.6.1 | MLG-specific diagnostic / conveyance application |  | 5d | 2002-08-30 | 2002-09-05 |  | 53d | 0d | start no earlier than 2002-08-30 |  |  |
| 28 | 1.6.2 | Build modular Dashboard application for MLG |  | 10d | 2002-09-06 | 2002-09-19 | 27 | 53d | 0d |  |  |  |
| 29 | 1.6.3 | integrate to MLG system management tools |  | 5d | 2002-09-20 | 2002-09-26 | 28 | 53d | 0d |  |  |  |
| 30 | 1.6.4 | **Marketing and advertising control** |  | 7d | 2002-09-27 | 2002-10-07 | 29 | 53d |  |  |  |  |
| 31 | 1.6.4.1 | Create database hooks for MLG to create apps |  | 7d | 2002-09-27 | 2002-10-07 |  | 53d |  |  |  |  |
| 32 | 1.6.4.2 | Connect MLG tools / apps with database |  | 2d | 2002-09-27 | 2002-09-30 |  | 58d |  |  |  |  |
| 33 | 2 | **System Integration Work** |  | 46d | 2002-09-06 | 2002-11-08 |  | 29d |  |  |  | 120h |
| 34 | 2.1 | **Specify and diagram MLG / Fullplay ecosystem** |  | 5d | 2002-09-06 | 2002-09-12 |  | 70d |  |  |  |  |
| 35 | 2.1.1 | Create technical diagram of components |  | 1d | 2002-09-06 | 2002-09-06 |  | 70d | 0d | start no earlier than 2002-09-06 |  |  |
| 36 | 2.1.2 | Specify all links and nodes to depth |  | 4d | 2002-09-09 | 2002-09-12 | 35 | 70d |  |  |  |  |
| 37 | 2.2 | MLG reviews schema and provides feedback | milestone | 0d | 2002-10-01 | 2002-10-01 | 4 | 58d |  | start no earlier than 2002-10-01 | BBY |  |
| 38 | 2.3 | Initial export of product metadata from MLG server | milestone | 0d | 2002-10-14 | 2002-10-14 |  | 29d | 0d | start no earlier than 2002-10-14 |  |  |
| 39 | 2.4 | Final data translator / exporter built |  | 15d | 2002-10-14 | 2002-11-01 | 38 | 29d | 0d |  | BBY | 120h |
| 40 | 2.5 | Fullplay and MLG finalize data translation spec |  | 5d | 2002-11-04 | 2002-11-08 | 39 | 29d |  |  |  |  |
| 41 | 2.6 | **POS Integration** |  | 32d | 2002-09-23 | 2002-11-05 |  | 32d |  |  |  |  |
| 42 | 2.6.1 | MLG delivers POS HTTP API | milestone | 0d | 2002-09-23 | 2002-09-23 |  | 52d | 0d | start no earlier than 2002-09-23 |  |  |
| 43 | 2.6.2 | FP integrates MLG API to server |  | 5d | 2002-09-23 | 2002-09-27 | 42 | 52d | 0d |  |  |  |
| 44 | 2.6.3 | FP integrates UI mapping to price API |  | 2d | 2002-09-30 | 2002-10-01 | 43 | 52d | 20d |  |  |  |
| 45 | 2.6.4 | FP tests POS and itegrates inteface |  | 5d | 2002-10-30 | 2002-11-05 | 16, 44, 42 | 32d |  |  |  |  |
| 46 | 2.7 | **Replay / EC Integration** |  | 10d | 2002-10-21 | 2002-11-01 |  | 34d |  |  |  |  |
| 47 | 2.7.1 | MLG to provide Replay / EC interface | milestone | 0d | 2002-10-21 | 2002-10-21 |  | 34d | 0d | start no earlier than 2002-10-21 |  |  |
| 48 | 2.7.2 | FP to attach application to Replay db |  | 4d | 2002-10-21 | 2002-10-24 | 47 | 34d | 0d |  |  |  |
| 49 | 2.7.3 | Test Replay features in MLG application |  | 4d | 2002-10-25 | 2002-10-30 | 48 | 34d | 0d |  |  |  |
| 50 | 2.7.4 | Identify / assess Replay scenarios |  | 2d | 2002-10-31 | 2002-11-01 | 49 | 34d |  |  |  |  |

| ID | WBS | Task | Type | Duration | Start | Finish | Predecessors | Total slack | Free slack | Constraint |
| --- | --- | --- | --- | --- | --- | --- | --- | --- | --- | --- |
| 52 | 3 | **Content Reconcilication** |  | 5d | 2002-09-16 | 2002-09-20 |  | 64d |  |  |
| 53 | 3.1 | Verify product information integrity |  | 5d | 2002-09-16 | 2002-09-20 |  | 64d |  | start no earlier than 2002-09-16 |
| 54 | 3.2 | Verify content sample integrity |  | 3d | 2002-09-16 | 2002-09-18 |  | 66d |  | start no earlier than 2002-09-16 |
| 55 | 3.3 | Reconcile data with AMG / Muze source |  | 5d | 2002-09-16 | 2002-09-20 |  | 64d |  | start no earlier than 2002-09-16 |
| 57 | 4 | **Test Fullplay subsystem + applications** |  | 10d | 2002-11-20 | 2002-12-04 |  | 11d |  |  |
| 58 | 4.1 | Test servers / POS / Replay against emulator | milestone | 0d | 2002-11-20 | 2002-11-20 | 10 | 21d |  |  |
| 59 | 4.2 | Connect MMD server to POS |  | 2d | 2002-12-03 | 2002-12-04 | 63 | 11d |  |  |
| 60 | 4.3 | Connect MMD server to Replay |  | 2d | 2002-12-03 | 2002-12-04 | 63 | 11d |  |  |
| 61 | 4.4 | Test LVS with MMD Server + MLG app |  | 5d | 2002-11-21 | 2002-11-27 | 10 | 11d | 0d | start no earlier than 2002-08-20 |
| 62 | 4.5 | Test top MLG user scenarios |  | 3d | 2002-11-28 | 2002-12-02 | 61 | 11d | 0d |  |
| 63 | 4.6 | Assemble virtual MLG environment and test | milestone | 0d | 2002-12-02 | 2002-12-02 | 62 | 11d | 0d |  |
| 65 | 5 | **New hardware development** |  | 85d | 2002-08-23 | 2002-12-19 |  | 0d |  |  |
| 66 | 5.1 | Select new display and touchscreen |  | 3d | 2002-08-23 | 2002-08-27 |  | 0d |  | start no earlier than 2002-08-23 |
| 67 | 5.2 | Wire new display to LVS board for testing |  | 4d | 2002-08-28 | 2002-09-02 | 66 | 78d |  |  |
| 68 | 5.3 | Select new logic components |  | 8d | 2002-08-28 | 2002-09-06 | 66 | 0d |  |  |
| 69 | 5.4 | Revise logic board design |  | 8d | 2002-09-09 | 2002-09-18 | 68 | 0d |  |  |
| 70 | 5.5 | Build new logic boards |  | 12d | 2002-09-19 | 2002-10-04 | 69 | 54d |  |  |
| 71 | 5.6 | Revise industrial design |  | 6d | 2002-09-19 | 2002-09-26 | 69 | 0d |  |  |
| 72 | 5.7 | Share new MMD ID with MLG | milestone | 0d | 2002-10-04 | 2002-10-04 |  | 55d |  | start no earlier than 2002-10-04 |
| 73 | 5.8 | Build MMD first prototype |  | 30d | 2002-09-27 | 2002-11-07 | 71 | 0d |  |  |
| 74 | 5.9 | Build MMD second prototype |  | 30d | 2002-11-08 | 2002-12-19 | 73 | 0d |  |  |
| 75 | 5.10 | **Bracket design** |  | 23d | 2002-08-26 | 2002-09-25 |  | 61d |  |  |
| 76 | 5.10.1 | Get quotes on head end of modular design |  | 5d | 2002-08-26 | 2002-08-30 |  | 79d |  | start no earlier than 2002-08-26 |
| 77 | 5.10.2 | MLG provides dimensions for fixtures | milestone | 0d | 2002-09-10 | 2002-09-10 |  | 68d | 0d | start no earlier than 2002-09-10 |
| 78 | 5.10.3 | Get quotes on fixture end of modular design |  | 5d | 2002-09-10 | 2002-09-16 | 77 | 68d |  |  |
| 79 | 5.10.4 | Build prototype head-end bracket |  | 3d | 2002-09-16 | 2002-09-18 |  | 66d |  | start no earlier than 2002-09-16 |
| 80 | 5.10.5 | Build prototype fixture bracket |  | 3d | 2002-09-23 | 2002-09-25 |  | 61d | 0d | start no earlier than 2002-09-23 |
| 81 | 5.10.6 | Test complete brackets against fixtures | milestone | 0d | 2002-09-25 | 2002-09-25 | 80 | 61d |  |  |
