# MMD_Software_Schedule

Schedule from MS Project, 2002-08-13 to 2002-12-05.
fullplay media

## Calendars

- Standard: Mon-Fri 08:00-12:00, 13:00-17:00; Sat-Sun off.

## Resources

| Resource |
| --- |
| Chuck |
| Matt |
| Matt; Daniel |
| Daniel |
| Eric |
| Er |
| Teman |
| Mona |
| daniel; Chuck |
| Matt; Chuck |
| Matt; Eric |
| Daniel; Matt; Chuck |
| Chuck; daniel |

## Schedule

| ID | WBS | Task | Type | Duration | Start | Finish | Predecessors | Total slack | Free slack | Constraint | Resources | Work |
| --- | --- | --- | --- | --- | --- | --- | --- | --- | --- | --- | --- | --- |
| 1 | 1 | Fullplay MMD Software Development | milestone | 0d | 2002-08-13 | 2002-08-13 |  | 83d |  |  |  |  |
| 2 | 2 | Company Confidential | milestone | 0d | 2002-08-13 | 2002-08-13 |  | 83d |  |  |  |  |
| 4 | 3 | **MMD Application software** |  | 64d | 2002-08-13 | 2002-11-08 |  | 19d |  |  |  | 736h |
| 5 | 3.1 | **High resolution Fullplay UI** |  | 17d | 2002-09-30 | 2002-10-22 |  | 32d | 0d |  |  | 96h |
| 6 | 3.1.1 | Fetch product information data |  | 3d | 2002-09-30 | 2002-10-02 |  | 35d | 0d | start no earlier than 2002-09-30 | daniel; Chuck | 24h |
| 7 | 3.1.2 | Fetch recommended product data |  | 1d | 2002-10-03 | 2002-10-03 | 6 | 35d | 0d | start no earlier than 2002-08-28 | Daniel | 8h |
| 8 | 3.1.3 | Fake Affinity Features and pages |  | 2d | 2002-10-04 | 2002-10-07 | 7 | 36d | 0d |  |  |  |
| 9 | 3.1.4 | Configure location/idle loop/staff picks |  | 1d | 2002-10-08 | 2002-10-08 | 8 | 36d | 0d |  | Daniel | 8h |
| 10 | 3.1.5 | Generate generic home page |  | 2d | 2002-10-14 | 2002-10-15 | 9 | 36d | 4d |  | Daniel | 16h |
| 11 | 3.1.6 | Generate end cap or promotion home page |  | 1d | 2002-10-22 | 2002-10-22 | 10 | 32d |  | start no earlier than 2002-10-22 | Daniel | 8h |
| 12 | 3.1.7 | Generate user-specific affinity page |  | 2d | 2002-10-04 | 2002-10-07 | 7 | 35d | 0d |  | daniel; Chuck | 16h |
| 13 | 3.1.8 | Offers and promotion pages |  | 2d | 2002-10-16 | 2002-10-17 | 12 | 35d |  |  | Daniel | 16h |
| 14 | 3.2 | Demonstrate new Fullplay UI in emulator | milestone | 0d | 2002-10-22 | 2002-10-22 | 5 | 32d |  |  |  |  |
| 16 | 3.3 | **Feature work and new code for MLG** |  | 64d | 2002-08-13 | 2002-11-08 |  | 19d | 0d |  |  | 280h |
| 17 | 3.3.1 | Scan product and display information |  | 2d | 2002-09-10 | 2002-09-11 |  | 61d |  | start no earlier than 2002-09-10 | Chuck | 16h |
| 18 | 3.3.2 | Recommended product page |  | 2d | 2002-09-17 | 2002-09-18 |  | 56d |  | start no earlier than 2002-09-17 | Chuck | 16h |
| 19 | 3.3.3 | Affinity login via barcode / user no. |  | 2d | 2002-11-07 | 2002-11-08 | 28 | 19d |  | start no earlier than 2002-10-08 | Chuck | 16h |
| 20 | 3.3.4 | Administrator login / page |  | 2d | 2002-10-09 | 2002-10-10 | 28 | 34d | 0d | start no earlier than 2002-09-27 | Chuck | 16h |
| 21 | 3.3.5 | Configure location/idle loop/staff picks |  | 2d | 2002-11-05 | 2002-11-06 |  | 21d |  | start no earlier than 2002-10-16 | Chuck | 16h |
| 22 | 3.3.6 | Generic home page |  | 3d | 2002-10-21 | 2002-10-23 | 28 | 31d |  | start no earlier than 2002-10-20 | Chuck; daniel | 24h |
| 23 | 3.3.7 | Affinity login page |  | 3d | 2002-10-31 | 2002-11-04 |  | 23d |  | start no earlier than 2002-10-31 | Chuck; daniel | 24h |
| 24 | 3.3.8 | End cap / promotion device config |  | 2d | 2002-10-11 | 2002-10-14 | 20 | 34d | 0d |  | Chuck | 16h |
| 25 | 3.3.9 | User-specific affinity page |  | 2d | 2002-10-15 | 2002-10-16 | 24 | 34d | 0d |  | Chuck | 16h |
| 26 | 3.3.10 | Offers and promotion pages |  | 2d | 2002-10-17 | 2002-10-18 | 25 | 34d |  |  | Chuck | 16h |
| 27 | 3.3.11 | Modify XML parser in CE and emulator |  | 3d | 2002-09-25 | 2002-09-27 |  | 49d |  | start no earlier than 2002-09-25 | Chuck | 24h |
| 28 | 3.3.12 | XML primitives work for touch interface |  | 7d | 2002-09-30 | 2002-10-08 |  | 19d | 0d | start no earlier than 2002-09-28 | Chuck | 56h |
| 29 | 3.3.13 | Components for input |  | 3d | 2002-08-13 | 2002-08-15 |  | 80d |  |  | Chuck | 24h |
| 30 | 3.4 | Demonstrate new MLG UI | milestone | 0d | 2002-11-08 | 2002-11-08 | 16, 45 | 19d |  |  |  |  |

| ID | WBS | Task | Duration | Start | Finish | Predecessors | Total slack | Free slack | Constraint | Resources | Work |
| --- | --- | --- | --- | --- | --- | --- | --- | --- | --- | --- | --- |
| 32 | 3.5 | **Feature testing of MMD Application** | 30d | 2002-08-13 | 2002-09-23 |  | 23d | 0d |  |  | 240h |
| 33 | 3.5.1 | Unit Testing of individual features | 5d | 2002-09-03 | 2002-09-09 |  | 33d |  |  | Mona | 40h |
| 34 | 3.5.2 | Test Case development | 5d | 2002-09-10 | 2002-09-16 |  | 28d |  |  | Mona | 40h |
| 35 | 3.5.3 | Scenario and usability testing | 5d | 2002-09-17 | 2002-09-23 |  | 23d |  |  | Mona | 40h |
| 36 | 3.5.4 | Full test pass of test cases | 15d | 2002-08-13 | 2002-09-02 |  | 38d |  |  | Mona | 120h |
| 37 | 3.5.5 | Bug Bash on test system | 2d | 2002-08-13 | 2002-08-14 |  | 51d |  |  |  |  |
| 38 | 3.6 | **Feature debugging / fixing** | 30d | 2002-09-24 | 2002-11-04 |  | 23d |  |  |  | 120h |
| 39 | 3.6.1 | Code rework of all features | 15d | 2002-09-24 | 2002-11-04 | 32 | 23d |  |  | Chuck | 120h |
| 41 | 4 | **MMD Server Software / Config** | 83d | 2002-08-13 | 2002-12-05 |  | 0d |  |  |  | 1024h |
| 42 | 4.1 | **Feature work and new code** | 50d | 2002-08-13 | 2002-10-21 |  | 2d |  |  |  | 816h |
| 43 | 4.1.1 | Boot service for MMD | 1d | 2002-08-13 | 2002-08-13 |  | 82d |  |  | Teman | 8h |
| 44 | 4.1.2 | MMD Server Configuration | 1d | 2002-08-13 | 2002-08-13 |  | 82d |  |  | Matt | 8h |
| 45 | 4.1.3 | **ASPX Application for MMD** | 50d | 2002-08-13 | 2002-10-21 |  | 33d | 14d |  |  | 232h |
| 46 | 4.1.3.1 | Fetch product information data | 2d | 2002-09-18 | 2002-09-19 |  | 55d |  | start no earlier than 2002-09-18 | Daniel | 16h |
| 47 | 4.1.3.2 | Fetch recommended product data | 2d | 2002-10-18 | 2002-10-21 |  | 33d |  | start no earlier than 2002-10-01 | Daniel | 16h |
| 48 | 4.1.3.3 | Pass barcode to CRM and fetch data via XML | 1d | 2002-10-14 | 2002-10-14 | 63 | 38d |  | start no earlier than 2002-10-07 | Matt; Daniel | 8h |
| 49 | 4.1.3.4 | Authenticate user with PIN code | 2d | 2002-10-14 | 2002-10-15 | 63 | 37d |  |  | daniel; Chuck | 16h |
| 50 | 4.1.3.5 | Allow administrator login via barcode | 2d | 2002-08-27 | 2002-08-28 |  | 71d |  |  | Daniel | 16h |
| 51 | 4.1.3.6 | Configure location/idle loop/staff picks | 4d | 2002-08-16 | 2002-08-21 | 55 | 76d |  |  | Daniel | 32h |
| 52 | 4.1.3.7 | Generate generic home page | 3d | 2002-09-20 | 2002-09-24 |  | 52d |  | start no earlier than 2002-09-20 | Daniel | 24h |
| 53 | 4.1.3.8 | Generate affinity login page | 2d | 2002-10-16 | 2002-10-17 | 63 | 35d |  |  | daniel; Chuck | 16h |
| 54 | 4.1.3.9 | Generate end cap or promotion home page | 5d | 2002-09-25 | 2002-10-04 |  | 44d |  | start no earlier than 2002-09-23 | Daniel | 40h |
| 55 | 4.1.3.10 | Generate user-specific affinity page | 3d | 2002-08-13 | 2002-08-15 |  | 76d | 0d |  | Daniel | 24h |
| 56 | 4.1.3.11 | Offers and promotion pages | 3d | 2002-08-22 | 2002-08-26 |  | 73d |  |  | Daniel | 24h |

| ID | WBS | Task | Type | Duration | Start | Finish | Predecessors | Total slack | Free slack | Constraint | Resources | Work |
| --- | --- | --- | --- | --- | --- | --- | --- | --- | --- | --- | --- | --- |
| 57 | 4.1.4 | **Content Streaming** |  | 3d | 2002-08-29 | 2002-09-02 |  | 68d |  |  |  | 24h |
| 58 | 4.1.4.1 | Play back audio tracks upon select |  | 1d | 2002-08-29 | 2002-08-29 |  | 70d |  |  | Daniel | 8h |
| 59 | 4.1.4.2 | Play movie / game clip upon select |  | 1d | 2002-08-30 | 2002-08-30 |  | 69d |  |  | Daniel | 8h |
| 60 | 4.1.4.3 | Play idle loop of images and video |  | 1d | 2002-09-02 | 2002-09-02 |  | 68d |  |  | Daniel | 8h |
| 61 | 4.1.5 | Administrator Web Applications |  | 7d | 2002-09-20 | 2002-09-30 |  | 48d |  |  | Matt; Daniel | 56h |
| 62 | 4.1.6 | POS Interface via HTTP XML |  | 3d | 2002-10-01 | 2002-10-10 |  | 40d |  | start no earlier than 2002-10-01 | Daniel | 24h |
| 63 | 4.1.7 | CRM Interface via HTTP XML |  | 3d | 2002-10-07 | 2002-10-11 |  | 35d | 0d | start no earlier than 2002-10-07 | Daniel | 24h |
| 64 | 4.1.8 | SQL Database - product info |  | 28d | 2002-08-13 | 2002-09-19 |  | 2d | 0d |  | Matt; Daniel | 224h |
| 65 | 4.1.9 | SQL Database – device/user data |  | 5d | 2002-08-13 | 2002-08-19 |  | 78d |  |  | Matt; Chuck | 40h |
| 66 | 4.1.10 | Update service for data upload |  | 10d | 2002-09-20 | 2002-10-03 | 64 | 2d | 0d |  | Eric | 80h |
| 67 | 4.1.11 | Update service client for updates |  | 12d | 2002-10-04 | 2002-10-21 | 66 | 6d | 0d |  | Eric | 96h |
| 68 | 4.2 | **Feature testing of MMD Server Software** |  | 83d | 2002-08-13 | 2002-12-05 |  | 0d |  |  |  | 208h |
| 69 | 4.2.1 | Develop Test Suite |  | 5d | 2002-08-13 | 2002-08-19 |  | 78d |  |  |  |  |
| 70 | 4.2.2 | Unit Testing of individual components |  | 5d | 2002-11-22 | 2002-11-28 |  | 5d |  |  | Mona | 40h |
| 71 | 4.2.3 | Test Case development |  | 6d | 2002-11-14 | 2002-11-21 |  | 10d |  |  | Mona | 48h |
| 72 | 4.2.4 | Scenario and usability testing |  | 5d | 2002-11-29 | 2002-12-05 |  | 0d |  |  | Mona | 40h |
| 73 | 4.2.5 | Full test pass of test cases |  | 10d | 2002-10-31 | 2002-11-13 |  | 16d |  |  | Mona | 80h |
| 74 | 4.2.6 | Bug Bash on test system |  | 2d | 2002-08-13 | 2002-08-14 |  | 81d |  |  |  |  |
| 75 | 4.3 | **Feature debugging / fixing** |  | 5d | 2002-08-13 | 2002-08-19 |  | 78d |  |  |  |  |
| 76 | 4.3.1 | Code rework of all features |  | 5d | 2002-08-13 | 2002-08-19 |  | 78d |  |  |  |  |
| 79 | 5 | **Central Server Software / Config** |  | 81d | 2002-08-13 | 2002-12-03 |  | 2d |  |  |  | 784h |
| 80 | 5.1 | **Feature work and new code** |  | 52d | 2002-09-23 | 2002-12-03 |  | 2d |  |  |  | 496h |
| 81 | 5.1.1 | Data filter for product information |  | 10d | 2002-10-22 | 2002-11-04 | 67 | 11d | 0d | start no earlier than 2002-10-01 | Eric | 80h |
| 82 | 5.1.2 | Content processor for media clips |  | 2d | 2002-11-05 | 2002-11-06 | 81 | 11d | 0d |  | Eric | 16h |
| 83 | 5.1.3 | Metadata Delta calculator / Package creator |  | 3d | 2002-11-07 | 2002-11-11 | 82 | 11d | 0d |  | Eric | 24h |
| 84 | 5.1.4 | Content Delta calculator |  | 2d | 2002-11-12 | 2002-11-13 | 83 | 16d |  |  | Eric | 16h |
| 85 | 5.1.5 | Update Service Package generator |  | 10d | 2002-11-14 | 2002-11-27 | 67 | 6d |  |  | Eric | 80h |
| 86 | 5.1.6 | Update Service scheduler |  | 3d | 2002-11-12 | 2002-11-14 | 83 | 11d | 0d |  | Matt; Eric | 24h |
| 87 | 5.1.7 | Update Service manager application |  | 4d | 2002-11-15 | 2002-11-20 | 86 | 11d |  |  | Matt; Eric | 32h |
| 88 | 5.1.8 | Log package processor / filter |  | 4d | 2002-11-28 | 2002-12-03 | 66 | 2d |  |  | Eric | 32h |
| 89 | 5.1.9 | Product recommendation application |  | 4d | 2002-09-23 | 2002-09-26 |  | 35d | 0d | start no earlier than 2002-09-23 | Matt | 32h |
| 90 | 5.1.10 | Retail Marketing Application |  | 3d | 2002-09-27 | 2002-10-01 | 89 | 35d | 0d |  | Matt | 24h |
| 91 | 5.1.11 | Shopper Activity Application |  | 5d | 2002-10-09 | 2002-10-17 | 92 | 35d | 0d |  | Matt; Daniel | 40h |
| 92 | 5.1.12 | MMD Monitoring application |  | 5d | 2002-10-02 | 2002-10-08 | 90 | 35d | 0d |  | Matt; Daniel | 40h |
| 93 | 5.1.13 | Event notification service |  | 5d | 2002-10-02 | 2002-10-08 | 89 | 42d | 7d |  | Matt | 40h |
| 94 | 5.1.14 | Application security for tools |  | 2d | 2002-10-01 | 2002-10-16 |  | 36d |  |  | Matt; Daniel | 16h |
| 95 | 5.1.15 | Demonstrate Server Applications | milestone | 0d | 2002-10-17 | 2002-10-17 | 90, 91, 92, 93 | 35d |  |  |  |  |

| ID | WBS | Task | Duration | Start | Finish | Predecessors | Total slack | Free slack | Resources | Work |
| --- | --- | --- | --- | --- | --- | --- | --- | --- | --- | --- |
| 96 | 5.2 | **Development tools for MMD UI** | 1d | 2002-09-03 | 2002-09-03 |  | 67d |  |  | 8h |
| 97 | 5.2.1 | Dev tools for UI layout verification | 1d | 2002-09-03 | 2002-09-03 |  | 67d |  | Daniel | 8h |
| 98 | 5.3 | **Feature testing of MMD Server Software** | 57d | 2002-08-13 | 2002-10-30 |  | 18d | 0d |  | 216h |
| 99 | 5.3.1 | Unit Testing of individual components | 6d | 2002-10-08 | 2002-10-15 |  | 29d |  | Mona | 48h |
| 100 | 5.3.2 | Test Case development | 6d | 2002-10-16 | 2002-10-23 |  | 23d |  | Mona | 48h |
| 101 | 5.3.3 | Scenario and usability testing | 5d | 2002-10-24 | 2002-10-30 |  | 18d |  | Mona | 40h |
| 102 | 5.3.4 | Full test pass of test cases | 10d | 2002-09-24 | 2002-10-07 |  | 35d |  | Mona | 80h |
| 103 | 5.3.5 | Bug Bash on test system | 2d | 2002-08-13 | 2002-08-14 |  | 73d |  |  |  |
| 104 | 5.4 | **Feature debugging / fixing** | 8d | 2002-10-31 | 2002-11-11 |  | 18d |  |  | 64h |
| 105 | 5.4.1 | Code rework of all features | 8d | 2002-10-31 | 2002-11-11 | 98 | 18d |  | Daniel; Matt; Chuck | 64h |
