# E-Coach Program Schedule

Schedule from MS Project, 2002-04-18 to 2003-01-21, costs in $.

## Calendars

- Standard: Mon-Fri 08:00-12:00, 13:00-17:00; Sat-Sun off.

## Resources

| Resource | Rate |
| --- | --- |
| ME2 |  |
| ME1 | 115 |
| PM | 115 |
| Client |  |
| ME 3 | 115 |

## Schedule

| ID | WBS | Task | Type | Duration | Start | Finish | Predecessors | Baseline start | Baseline finish | Baseline duration | Total slack | Free slack | Constraint | Resources | Work | Cost | Baseline cost |
| --- | --- | --- | --- | --- | --- | --- | --- | --- | --- | --- | --- | --- | --- | --- | --- | --- | --- |
| 1 | 1 | **Sahara Push to Production** |  | 198.5d | 2002-04-18 | 2003-01-21 |  | 2002-03-25 | 2002-09-19 | 129d | 0d |  |  |  | 1268h | 145,820 | 135,330 |
| 3 | 1.1 | **Sahara Production Engineering Effort** |  | 198.5d | 2002-04-18 | 2003-01-21 |  | 2002-04-18 | 2002-09-19 | 111d | 0d |  | start no earlier than 2002-04-18 | PM [20%] | 1268h | 145,820 | 105,300 |
| 4 | 1.1.1 | **Phase 1 Planning** |  | 2d | 2002-04-18 | 2002-04-19 |  | 2002-04-18 | 2002-04-22 | 3d | 0.75d | 0d |  |  |  |  | 3,640 |
| 5 | 1.1.1.1 | Kickoff Meeting |  | 0.5d | 2002-04-18 | 2002-04-18 |  | 2002-04-18 | 2002-04-18 | 0.5d | 0.75d | 0d |  |  |  |  | 1,040 |
| 6 | 1.1.1.2 | Detailed Schedule Build / Review |  | 1d | 2002-04-18 | 2002-04-19 | 5 | 2002-04-18 | 2002-04-22 | 2d | 0.75d | 0d |  |  |  |  | 2,080 |
| 7 | 1.1.1.3 | Design Change Requirements Review |  | 0.5d | 2002-04-19 | 2002-04-19 | 6 | 2002-04-22 | 2002-04-22 | 0.5d | 0.75d |  |  |  |  |  | 520 |
| 8 | 1.1.2 | **Phase 2A Product Engineering** |  | 60d | 2002-04-22 | 2002-07-12 | 4 | 2002-04-23 | 2002-05-23 | 22.5d | 0.75d |  |  |  |  |  | 37,440 |
| 9 | 1.1.2.1 | Brainstorm Engineering Strategies |  | 0.25d | 2002-04-22 | 2002-04-22 |  | 2002-04-23 | 2002-04-23 | 0.5d | 0.75d | 0d |  |  |  |  | 1,560 |
| 10 | 1.1.2.2 | CD Sourcing and Research, Trip Prep |  | 6d | 2002-04-22 | 2002-04-30 | 9 |  |  |  | 0.75d |  |  |  |  |  |  |
| 11 | 1.1.2.3 | Asian Production Partner Trip and Download |  | 6d | 2002-05-01 | 2002-05-08 | 10 |  |  |  | 0d |  | must start on 2002-05-01 |  |  |  |  |
| 12 | 1.1.2.4 | Engineering and CAD work - 1st rev production |  | 12d | 2002-05-09 | 2002-05-24 | 11 | 2002-04-23 | 2002-04-30 | 5d | 34d | 0d |  |  |  |  | 10,400 |
| 13 | 1.1.2.5 | Preliminary Files to Tooling Vendors | milestone | 0d | 2002-05-24 | 2002-05-24 | 12 | 2002-05-23 | 2002-05-23 | 0d? | 34d | 0d |  |  |  |  |  |
| 14 | 1.1.2.6 | CM File Review |  | 5.5d | 2002-05-27 | 2002-06-03 | 13 |  |  |  | 34d | 0d |  |  |  |  |  |
| 15 | 1.1.2.7 | Conference Call with CM (Feedback) |  | 0.5d | 2002-06-03 | 2002-06-03 | 14 |  |  |  | 34d | 0d |  |  |  |  |  |
| 16 | 1.1.2.8 | Engineering and CAD - 2nd rev (refinements, second level) |  | 10d | 2002-06-04 | 2002-06-17 | 15 |  |  |  | 159d | 9d |  |  |  |  |  |
| 17 | 1.1.2.9 | Engineering and CAD - CD faceplate aligment redesign, etc. |  | 5d | 2002-07-01 | 2002-07-05 | 16, 30 |  |  |  | 150d | 0d |  |  |  |  |  |
| 18 | 1.1.2.10 | Engineering and CAD - final venting, rack ears, file tweaks / reviews, etc. |  | 5d | 2002-07-08 | 2002-07-12 | 17 |  |  |  | 161.5d |  |  |  |  |  |  |
| 19 | 1.1.3 | **Phase 2B Thermal / Acoustic Baseline Testing** |  | 19d | 2002-05-09 | 2002-06-04 |  | 2002-04-18 | 2002-05-21 | 23.5d | 189.5d |  |  |  |  |  | 24,960 |
| 20 | 1.1.3.1 | Test Planning and Prep - Thermal |  | 1.5d | 2002-05-09 | 2002-05-10 | 11 | 2002-04-18 | 2002-04-23 | 4d | 192d | 0d |  |  |  |  | 4,160 |
| 21 | 1.1.3.2 | Test Planning and Prep - Acoustic |  | 2d | 2002-05-09 | 2002-05-10 | 11 | 2002-05-02 | 2002-05-07 | 4d | 189.5d | 0d |  |  |  |  | 4,160 |
| 22 | 1.1.3.3 | Thermal Data Collection |  | 15d | 2002-05-10 | 2002-05-31 | 20 |  |  |  | 192d |  |  |  |  |  |  |
| 23 | 1.1.3.4 | Acoustic Data Collection |  | 15d | 2002-05-13 | 2002-05-31 | 21 |  |  |  | 189.5d | 0d |  |  |  |  |  |
| 24 | 1.1.3.5 | Summary Preparation |  | 2d | 2002-06-03 | 2002-06-04 | 23 | 2002-05-16 | 2002-05-20 | 3d | 189.5d |  |  |  |  |  | 3,120 |
| 25 | 1.1.4 | **Phase 3 Prototyping** |  | 110.5d | 2002-06-03 | 2002-11-05 | 15 | 2002-05-15 | 2002-07-04 | 36.5d | 34d |  |  |  | 628h | 72,220 | 24,960 |
| 26 | 1.1.4.1 | **Prototyping Round 1** |  | 42.5d | 2002-06-03 | 2002-08-01 |  | 2002-05-15 | 2002-06-13 | 21.5d | 123d |  |  |  |  |  | 14,560 |
| 27 | 1.1.4.1.1 | Files to Proto Vendors | milestone | 0d | 2002-06-03 | 2002-06-03 |  | 2002-05-15 | 2002-05-15 | 0d? | 139d | 0d |  |  |  |  |  |
| 28 | 1.1.4.1.2 | Quote Generation |  | 3d | 2002-06-04 | 2002-06-06 | 27 | 2002-05-15 | 2002-05-20 | 3d | 139d | 0d |  |  |  |  | 1,560 |
| 29 | 1.1.4.1.3 | Receive and Review Quotes |  | 2d | 2002-06-07 | 2002-06-10 | 28 | 2002-05-20 | 2002-05-21 | 1d | 139d | 14d |  |  |  |  | 520 |
| 30 | 1.1.4.1.4 | FINAL CD-ROM SPEC CONFIRMATION ON BTC | milestone | 0d | 2002-07-01 | 2002-07-01 | 29 |  |  |  | 125d | 0d | start no earlier than 2002-07-01 |  |  |  |  |
| 31 | 1.1.4.1.5 | Release FullPlay PO Numbers to Prototyper | milestone | 0d | 2002-07-05 | 2002-07-05 | 30, 17 | 2002-05-21 | 2002-05-21 | 0d? | 125d | 0d |  |  |  |  |  |
| 32 | 1.1.4.1.6 | SLA / Sheet Metal Construction |  | 10d | 2002-07-08 | 2002-07-19 | 31 | 2002-05-21 | 2002-06-05 | 10d | 125d | 2d |  |  |  |  | 2,600 |
| 33 | 1.1.4.1.7 | Prototype Assembly Review and CAD Database Refinements |  | 6d | 2002-07-24 | 2002-07-31 | 32 |  |  |  | 123d | 0d | start no earlier than 2002-07-24 |  |  |  |  |
| 34 | 1.1.4.1.8 | Updated Files to Tooling Vendors |  | 0.5d | 2002-08-01 | 2002-08-01 | 33 | 2002-06-13 | 2002-06-13 | 0d? | 123d |  |  |  |  |  |  |

| ID | WBS | Task | Type | Duration | Start | Finish | Predecessors | Baseline start | Baseline finish | Baseline duration | Total slack | Free slack | Constraint | Resources | Work | Cost | Baseline cost |
| --- | --- | --- | --- | --- | --- | --- | --- | --- | --- | --- | --- | --- | --- | --- | --- | --- | --- |
| 35 | 1.1.4.2 | **Prototyping Round 2** |  | 32d | 2002-08-06 | 2002-09-18 |  | 2002-06-13 | 2002-07-04 | 15d | 0d |  |  |  | 186h | 21,390 | 10,400 |
| 36 | 1.1.4.2.1 | CAD Tweaks (UL / CE / FCC Construction Review) |  | 4d | 2002-08-06 | 2002-08-09 | 59 |  |  |  | 0d |  |  | ME1 | 32h | 3,680 |  |
| 37 | 1.1.4.2.2 | FP - Electrical (Connector / Cable Changes | milestone | 0d | 2002-08-09 | 2002-08-09 | 36 |  |  |  | 0d |  |  |  |  |  |  |
| 38 | 1.1.4.2.3 | Updated Files to Prototyping Vendors |  | 1d | 2002-08-12 | 2002-08-12 | 37 | 2002-06-13 | 2002-06-13 | 0d? | 0d |  |  | ME1 | 8h | 920 |  |
| 39 | 1.1.4.2.4 | Release FullPlay PO Numbers to Prototypers | milestone | 0d | 2002-08-12 | 2002-08-12 | 38 | 2002-06-13 | 2002-06-13 | 0d? | 0d |  |  |  |  |  |  |
| 40 | 1.1.4.2.5 | SLA Build |  | 5d | 2002-08-13 | 2002-08-19 | 39 | 2002-06-14 | 2002-06-27 | 10d | 0d |  |  | ME1 [25%] | 10h | 1,150 | 2,600 |
| 41 | 1.1.4.2.6 | Urethane Casting (based on SLA scale master) |  | 15d | 2002-08-20 | 2002-09-09 | 40 |  |  |  | 0d |  |  | ME1 [20%] | 24h | 2,760 |  |
| 42 | 1.1.4.2.7 | Sheet Metal Build (QTY 6) |  | 15d | 2002-08-13 | 2002-09-02 | 39 |  |  |  | 5d |  |  | ME1 [20%] | 24h | 2,760 |  |
| 43 | 1.1.4.2.8 | Machined ABS (OPTIONAL) |  | 10d | 2002-08-13 | 2002-08-26 | 39 |  |  |  | 10d |  |  | ME1 [20%] | 16h | 1,840 |  |
| 44 | 1.1.4.2.9 | Parts Received | milestone | 0d | 2002-09-09 | 2002-09-09 | 41, 42, 43 |  |  |  | 0d |  |  |  |  |  |  |
| 45 | 1.1.4.2.10 | Proto #2 Run First Unit Assembly / Review |  | 2d | 2002-09-10 | 2002-09-11 | 44 | 2002-07-01 | 2002-07-01 | 0.5d | 0d |  |  | ME1; ME2 | 32h | 3,680 | 1,560 |
| 46 | 1.1.4.2.11 | Limited CAD Updates as Required |  | 5d | 2002-09-12 | 2002-09-18 | 45 | 2002-07-02 | 2002-07-04 | 3d | 0d |  |  | ME1 [50%] | 20h | 2,300 | 3,120 |
| 47 | 1.1.4.2.12 | Proto #2 Assembly Support |  | 5d | 2002-09-12 | 2002-09-18 | 45 |  |  |  | 28d | 10d |  | ME1 [50%] | 20h | 2,300 |  |
| 48 | 1.1.4.3 | **Packaging Design** |  | 53d | 2002-07-22 | 2002-10-02 |  |  |  |  | 18d |  |  |  | 60h | 6,900 |  |
| 49 | 1.1.4.3.1 | Initial Quoting and Vendor Communication |  | 10d | 2002-07-22 | 2002-08-02 |  |  |  |  | 36.5d | 0d | start no earlier than 2002-07-22 | ME2 [25%] | 20h | 2,300 |  |
| 50 | 1.1.4.3.2 | Quote Review and Partner Selection |  | 3d | 2002-08-05 | 2002-08-07 | 49 |  |  |  | 36.5d | 2d |  | ME2 [50%] | 12h | 1,380 |  |
| 51 | 1.1.4.3.3 | Submission of CAD Files to Package Design |  | 0.5d | 2002-08-12 | 2002-08-12 | 50, 36 |  |  |  | 34.5d | 0d |  | ME2 | 4h | 460 |  |
| 52 | 1.1.4.3.4 | Package Design Process |  | 10d | 2002-08-12 | 2002-08-26 | 51 |  |  |  | 34.5d | 0d |  | ME2 [10%] | 8h | 920 |  |
| 53 | 1.1.4.3.5 | Review of Package Design Solution |  | 1d | 2002-08-26 | 2002-08-27 | 52 |  |  |  | 34.5d | 16.5d |  | ME2 | 8h | 920 |  |
| 54 | 1.1.4.3.6 | Iteration on Package Design |  | 5d | 2002-09-19 | 2002-09-25 | 53, 66, 46 |  |  |  | 18d | 0d |  | ME2 [10%] | 4h | 460 |  |
| 55 | 1.1.4.3.7 | Final Packaging Solution Documentation |  | 5d | 2002-09-26 | 2002-10-02 | 54 |  |  |  | 18d | 0d |  | ME2 [10%] | 4h | 460 |  |
| 56 | 1.1.4.4 | **Testing - Safety / EMC / FCC** |  | 68d | 2002-07-22 | 2002-10-23 |  |  |  |  | 0d |  |  |  | 54h | 6,210 |  |
| 57 | 1.1.4.4.1 | Initial Quoting and Vendor Communication |  | 5d | 2002-07-22 | 2002-07-26 |  |  |  |  | 0d |  | start no earlier than 2002-07-22 | ME2 [25%] | 10h | 1,150 |  |
| 58 | 1.1.4.4.2 | Quote Review and Partner Selection |  | 3d | 2002-07-29 | 2002-07-31 | 57 |  |  |  | 0d |  |  | ME2 [50%] | 12h | 1,380 |  |
| 59 | 1.1.4.4.3 | Preliminary Construction Review |  | 3d | 2002-08-01 | 2002-08-05 | 58 |  |  |  | 0d |  |  | ME2 [50%] | 12h | 1,380 |  |
| 60 | 1.1.4.4.4 | Safety / EMC / FCC Testing and Certification |  | 25d | 2002-09-19 | 2002-10-23 | 59, 46 |  |  |  | 8d |  |  | ME2 [10%] | 20h | 2,300 |  |

| ID | WBS | Task | Type | Duration | Start | Finish | Predecessors | Baseline start | Baseline finish | Baseline duration | Total slack | Free slack | Constraint | Resources | Work | Cost | Baseline cost |
| --- | --- | --- | --- | --- | --- | --- | --- | --- | --- | --- | --- | --- | --- | --- | --- | --- | --- |
| 61 | 1.1.4.5 | **Testing - Shipping and Packaging Solution (ISTA)** |  | 53d | 2002-07-29 | 2002-10-09 |  |  |  |  | 18d |  |  |  | 114h | 13,110 |  |
| 62 | 1.1.4.5.1 | Initial Quoting and Vendor Communication |  | 10d | 2002-07-29 | 2002-08-09 |  |  |  |  | 35d | 0d | start no earlier than 2002-07-29 | ME2 [25%] | 20h | 2,300 |  |
| 63 | 1.1.4.5.2 | Quote Review and Partner Selection |  | 3d | 2002-08-12 | 2002-08-14 | 62 |  |  |  | 35d | 0d |  | ME2 [50%] | 12h | 1,380 |  |
| 64 | 1.1.4.5.3 | Preliminary Informal Testing |  | 3d | 2002-08-15 | 2002-08-19 | 63 |  |  |  | 35d | 0d |  | ME2 [50%] | 12h | 1,380 |  |
| 65 | 1.1.4.5.4 | Mechanical Design Impact Revisions (In-House Results) |  | 5d | 2002-08-20 | 2002-08-26 | 64 |  |  |  | 45d | 27d |  | ME1 [50%] | 20h | 2,300 |  |
| 66 | 1.1.4.5.5 | Shipping / Packaging Design Impact Revisions (In-House Results) |  | 5d | 2002-08-20 | 2002-08-26 | 64 |  |  |  | 35d | 17d |  | ME2 [25%] | 10h | 1,150 |  |
| 67 | 1.1.4.5.6 | Formal ISTA Testing / Certification |  | 5d | 2002-10-03 | 2002-10-09 | 65, 47, 55, 66 |  |  |  | 18d |  |  | ME2 | 40h | 4,600 |  |
| 68 | 1.1.4.6 | **Proto #3** |  | 33.5d | 2002-09-19 | 2002-11-05 |  |  |  |  | 0d |  |  |  | 214h | 24,610 |  |
| 69 | 1.1.4.6.1 | CAD Revisions |  | 5d | 2002-09-19 | 2002-09-25 | 46, 54, 60, 67 |  |  |  | 0d |  |  | ME1 | 40h | 4,600 |  |
| 70 | 1.1.4.6.2 | Updated Files to Prototyping Vendors / Preliminary to Tooling |  | 1d | 2002-09-26 | 2002-09-26 | 69 | 2002-06-13 | 2002-06-13 | 0d? | 0d |  |  | ME1 | 8h | 920 |  |
| 71 | 1.1.4.6.3 | Release FullPlay PO Numbers to Prototypers | milestone | 0d | 2002-09-26 | 2002-09-26 | 70 | 2002-06-13 | 2002-06-13 | 0d? | 0d |  |  |  |  |  |  |
| 72 | 1.1.4.6.4 | SLA Build |  | 5d | 2002-09-27 | 2002-10-03 | 71 | 2002-06-14 | 2002-06-27 | 10d | 0d |  |  | ME1 [25%] | 10h | 1,150 | 2,600 |
| 73 | 1.1.4.6.5 | Urethane Casting (based on SLA scale master) |  | 15d | 2002-10-04 | 2002-10-24 | 72 |  |  |  | 0d |  |  | ME1 [25%] | 30h | 3,450 |  |
| 74 | 1.1.4.6.6 | Sheet Metal Build (QTY 6) |  | 15d | 2002-09-27 | 2002-10-17 | 71 |  |  |  | 5d |  |  | ME1 [25%] | 30h | 3,450 |  |
| 75 | 1.1.4.6.7 | Machined ABS (OPTIONAL) |  | 10d | 2002-09-27 | 2002-10-10 | 71 |  |  |  | 10d |  |  | ME1 [25%] | 20h | 2,300 |  |
| 76 | 1.1.4.6.8 | Parts Received | milestone | 0d | 2002-10-24 | 2002-10-24 | 73, 74, 75 |  |  |  | 0d |  |  |  |  |  |  |
| 77 | 1.1.4.6.9 | Proto #3 Run First Unit Assembly / Review |  | 2d | 2002-10-25 | 2002-10-28 | 76 | 2002-07-01 | 2002-07-01 | 0.5d | 0d |  |  | ME1; ME2 | 32h | 3,680 | 1,560 |
| 78 | 1.1.4.6.10 | Limited CAD Updates as Required |  | 5d | 2002-10-29 | 2002-11-04 | 77 | 2002-07-02 | 2002-07-04 | 3d | 0d |  |  | ME1 [50%] | 20h | 2,300 | 3,120 |
| 79 | 1.1.4.6.11 | Proto #3 Assembly Support |  | 5d | 2002-10-29 | 2002-11-04 | 77 |  |  |  | 55.5d |  |  | ME1 [50%] | 20h | 2,300 |  |
| 80 | 1.1.4.6.12 | Final CAD Release to Tooling Vendors |  | 0.5d | 2002-11-05 | 2002-11-05 | 78, 67, 60 | 2002-07-04 | 2002-07-04 | 0d? | 0d |  |  | ME1 | 4h | 460 |  |
| 81 | 1.1.5 | **Tooling and Production Ramp Support (TBD)** |  | 115.5d | 2002-08-13 | 2003-01-21 |  | 2002-07-05 | 2002-09-19 | 55d | 0d |  |  |  | 324h | 37,260 | 14,300 |
| 82 | 1.1.5.1 | CTF Drawing Creation |  | 30d | 2002-08-13 | 2002-09-23 | 39 |  |  |  | 85.5d |  |  | ME1 [10%] | 24h | 2,760 |  |
| 83 | 1.1.5.2 | Tooling Design Start / Order Raw Mat'ls |  | 5w | 2002-09-27 | 2002-10-31 | 70 | 2002-07-05 | 2002-08-15 | 6w | 2.5d |  |  | ME1 [25%] | 50h | 5,750 | 7,800 |
| 84 | 1.1.5.3 | Tooling Finalization |  | 3w | 2002-11-05 | 2002-11-26 | 80, 83 |  |  |  | 0d |  |  | ME1 [25%] | 30h | 3,450 |  |
| 85 | 1.1.5.4 | First Articles |  | 5d | 2002-11-26 | 2002-12-03 | 84 |  |  |  | 0d |  |  | ME1 | 40h | 4,600 |  |
| 86 | 1.1.5.5 | Tooling Mods and Texturing |  | 2w | 2002-12-03 | 2002-12-17 | 85 |  |  |  | 0d |  |  | ME1 | 80h | 9,200 |  |
| 87 | 1.1.5.6 | Design Support for Manufacturing Ramp |  | 5w | 2002-12-17 | 2003-01-21 | 86 | 2002-08-16 | 2002-09-19 | 5w | 0d |  |  | ME1 [50%] | 100h | 11,500 | 6,500 |
