# FP UB Sahara Dev and Prod schedule_81602

Schedule from MS Project, 2002-01-01 to 2003-04-15, costs in $.
iObjects

## Calendars

- Standard: Mon-Fri 08:00-12:00, 13:00-17:00; Sat-Sun off. Exceptions (off unless hours are given): 2002-09-02, 2002-11-28 to 2002-11-29, 2002-12-25.

## Resources

| Resource | Rate |
| --- | --- |
| PM1 |  |
| EE1 |  |
| EE2 |  |
| Tech 1 |  |
| Lead |  |
| PM2 |  |
| SW1 |  |
| SW2 |  |
| ME1 | 115 |
| ME2 | 115 |
| GA1 | 27.5 |
| GA2 | 50 |
| GA3 | 115 |
| PM3 | 115 |
| PCB |  |
| PCBA |  |
| Route | 80 |
| MPE |  |
| MFE |  |
| P507004 |  |
| P507005 |  |
| P507006 |  |
| P507007 |  |
| P507008 |  |
| P507009 |  |
| P507010 |  |
| MFG1 |  |
| MFG2 |  |

## Schedule

| ID | WBS | Task | Type | Duration | Start | Finish | Predecessors | Total slack | Free slack | Constraint | Resources | Work | Cost |
| --- | --- | --- | --- | --- | --- | --- | --- | --- | --- | --- | --- | --- | --- |
| 1 | 1 | Fullplay Media Systems, Inc. | milestone | 0d | 2002-04-01 | 2002-04-01 |  | 228.5d |  | start no earlier than 2002-04-01 |  |  |  |
| 2 | 2 | Confidential Information | milestone | 0d | 2002-04-01 | 2002-04-01 |  | 228.5d |  | start no earlier than 2002-04-01 |  |  |  |
| 4 | 3 | **Sahara Program** |  | 331.38d? | 2002-01-01 | 2003-04-15 |  | 0d |  |  |  | 1799.2h | 184,098 |
| 5 | 3.1 | **Marketing** |  | 112.75d? | 2002-08-15 | 2003-01-24 |  | 55.38d |  |  |  |  |  |
| 6 | 3.1.1 | PRD |  | 1d? | 2002-08-15 | 2002-08-16 |  | 149d |  | start no earlier than 2002-08-15 |  |  |  |
| 7 | 3.1.2 | **Accessories** |  | 28.12d? | 2002-08-27 | 2002-10-07 |  | 38.62d |  |  |  |  |  |
| 8 | 3.1.2.1 | Review and Revise User Guide (DJ, FML, Remote, Netowrking, Web interface) |  | 1w | 2002-09-30 | 2002-10-07 | 188 | 114d |  |  |  |  |  |
| 9 | 3.1.2.2 | Review and Revise CD art |  | 1w | 2002-08-29 | 2002-09-06 | 194 | 85.5d | 0d |  |  |  |  |
| 10 | 3.1.2.3 | Review and Revise Packaging |  | 1w | 2002-08-29 | 2002-09-06 | 200 | 24d | 0d |  |  |  |  |
| 11 | 3.1.2.4 | Review and Revise Remote Spec |  | 1d? | 2002-08-27 | 2002-08-27 | 205 | 77.62d | 0d |  |  |  |  |
| 12 | 3.1.3 | Reviewers Schedule |  | 6w | 2002-12-10 | 2003-01-21 | 184, 126, 192 | 59.5d |  |  |  |  |  |
| 13 | 3.1.4 | **Promotions Schedule** |  | 85.75d? | 2002-09-24 | 2003-01-24 |  | 56.62d |  |  |  |  |  |
| 14 | 3.1.4.1 | Submition for Best in Show | milestone | 1d | 2002-09-24 | 2002-09-25 |  | 126.5d |  | start no earlier than 2002-09-24 |  |  |  |
| 15 | 3.1.4.2 | CES |  | 6.88d? | 2003-01-16 | 2003-01-24 | 126, 192, 28, 187, 210 | 56.62d |  | finish no earlier than 2003-01-10 |  |  |  |
| 16 | 3.2 | **Development** |  | 330.38d? | 2002-01-01 | 2003-04-14 |  | 0d |  |  |  | 1799.2h | 184,098 |
| 17 | 3.2.1 | **Firmware** |  | 203.88d? | 2002-04-01 | 2003-01-15 |  | 62.5d |  |  |  | 72h |  |
| 18 | 3.2.1.1 | DJ-C40 FW Dev |  | 120d | 2002-04-01 | 2002-09-17 |  | 131.5d |  | start no earlier than 2002-04-01 |  |  |  |
| 19 | 3.2.1.2 | **Beta 1** |  | 70d | 2002-06-24 | 2002-10-01 |  | 11.88d |  |  |  |  |  |
| 20 | 3.2.1.2.1 | Release Beta 1 FW on DJ35 units |  | 34d | 2002-06-24 | 2002-08-09 |  | 11.88d | 5d | start no earlier than 2002-06-24 |  |  |  |
| 21 | 3.2.1.2.2 | Feature Complete | milestone | 0d | 2002-08-16 | 2002-08-16 | 20 | 6.88d | 0d | start no earlier than 2002-08-16 |  |  |  |
| 22 | 3.2.1.2.3 | SQA |  | 5w | 2002-08-16 | 2002-09-23 | 21 | 72.5d | 1d |  |  |  |  |
| 23 | 3.2.1.2.4 | FVT |  | 1w | 2002-09-24 | 2002-10-01 | 22, 186 | 71.5d |  | start no earlier than 2002-09-24 |  |  |  |
| 24 | 3.2.1.3 | **Release Candidate 1** |  | 25d | 2002-12-10 | 2003-01-14 | 19, 184, 126, 49, 102 | 56.62d | 0d |  |  | 40h |  |
| 25 | 3.2.1.3.1 | Prepare Test pool for Candidate 1 |  | 5d | 2002-12-10 | 2002-12-16 |  | 56.62d | 0d |  | PM2 | 40h |  |
| 26 | 3.2.1.3.2 | Release Candidate 1 FW on Sahara proto 2 devices | milestone | 0d | 2002-12-16 | 2002-12-16 | 25 | 56.62d | 0d |  | PM2 |  |  |
| 27 | 3.2.1.3.3 | Candidate 1 Evaluation |  | 4w | 2002-12-17 | 2003-01-14 | 26 | 56.62d |  |  |  |  |  |

| ID | WBS | Task | Duration | Start | Finish | Predecessors | Total slack | Free slack | Constraint | Resources | Work | Cost |
| --- | --- | --- | --- | --- | --- | --- | --- | --- | --- | --- | --- | --- |
| 28 | 3.2.1.4 | **Gold Release** | 1d? | 2003-01-15 | 2003-01-15 | 24 | 56.62d | 0d |  |  | 32h |  |
| 29 | 3.2.1.4.1 | CDDB Update | 1d? | 2003-01-15 | 2003-01-15 |  | 56.62d |  | start no earlier than 2002-10-01 | PM2 | 8h |  |
| 30 | 3.2.1.4.2 | Final Debug | 1d? | 2003-01-15 | 2003-01-15 |  | 56.62d |  | start no earlier than 2002-11-01 | PM2 | 8h |  |
| 31 | 3.2.1.4.3 | Final Bootloader Image | 1d? | 2003-01-15 | 2003-01-15 |  | 56.62d |  |  | PM2 | 8h |  |
| 32 | 3.2.1.4.4 | Final Shipping CD | 1d? | 2003-01-15 | 2003-01-15 |  | 56.62d | 0d | start no earlier than 2002-12-02 | PM2 | 8h |  |
| 33 | 3.2.2 | **Electrical** | 154d? | 2002-05-20 | 2002-12-26 |  | 59.88d |  |  |  | 16h | 7,020 |
| 34 | 3.2.2.1 | DJ35 PCB Build x52 | 23d | 2002-05-20 | 2002-06-20 |  | 193.5d |  | start no earlier than 2002-05-20 |  |  |  |
| 35 | 3.2.2.2 | UB BOM feedback | 23d | 2002-05-20 | 2002-06-20 |  | 193.5d |  | start no earlier than 2002-05-20 |  |  |  |
| 36 | 3.2.2.3 | **FP Build PCB-03-A** | 36d | 2002-07-22 | 2002-09-11 |  | 6d | 0d |  |  |  | 3,000 |
| 37 | 3.2.2.3.1 | FP Route PCB-03-A | 4d | 2002-07-22 | 2002-07-26 |  | 8.5d | 0d | start no earlier than 2002-07-22 |  |  |  |
| 38 | 3.2.2.3.2 | Review Placement | 1d | 2002-07-26 | 2002-07-29 | 37 | 8.5d | 0d |  |  |  |  |
| 39 | 3.2.2.3.3 | Paradigm Critical Route | 2d | 2002-07-29 | 2002-07-31 | 38 | 8.5d | 0d |  |  |  |  |
| 40 | 3.2.2.3.4 | FP Critical Route Review | 1d | 2002-07-31 | 2002-08-01 | 39 | 8.5d | 0d |  |  |  |  |
| 41 | 3.2.2.3.5 | FP Design Changes | 2d | 2002-08-01 | 2002-08-05 | 40 | 8.5d | 0d |  |  |  |  |
| 42 | 3.2.2.3.6 | Paradigm Final Route | 2d | 2002-08-05 | 2002-08-07 | 41 | 8.5d | 0d |  |  |  |  |
| 43 | 3.2.2.3.7 | Review Final Route | 5d | 2002-08-07 | 2002-08-14 | 42 | 8.5d | 0d |  |  |  |  |
| 44 | 3.2.2.3.8 | FP MB RTFAB-03-A (56) | 3d | 2002-08-14 | 2002-08-19 | 43 | 6d | 0d |  | PCB |  | 3,000 |
| 45 | 3.2.2.3.9 | FP MB RTASY-03-A (8) | 5d | 2002-08-20 | 2002-08-27 | 44FS+1d | 6d | 0d |  | PCBA |  |  |
| 46 | 3.2.2.3.10 | FP DBs RTFAB-03-A (56) | 3d | 2002-08-15 | 2002-08-20 |  | 8.5d | 0d | start no earlier than 2002-08-15 |  |  |  |
| 47 | 3.2.2.3.11 | FP DBs RTASY-03A (8) | 5d | 2002-08-20 | 2002-08-27 | 46 | 8.5d | 0d |  |  |  |  |
| 48 | 3.2.2.3.12 | FP bare board HWEVT | 10d | 2002-08-27 | 2002-09-11 | 47, 45 | 8.5d |  |  |  |  |  |
| 49 | 3.2.2.4 | **FP Build PCB-03-B** | 13d | 2002-09-11 | 2002-09-30 | 36 | 6d | 0d |  |  | 16h | 4,020 |
| 50 | 3.2.2.4.1 | FP Route PCB-03-B | 5d | 2002-09-11 | 2002-09-18 |  | 6d | 0d |  | Route [40%] | 16h | 1,280 |
| 51 | 3.2.2.4.2 | FP RTFAB-03-B | 3d | 2002-09-18 | 2002-09-23 | 50 | 6d | 0d |  | PCB |  | 2,740 |
| 52 | 3.2.2.4.3 | FP RTASY-03-B | 5d | 2002-09-23 | 2002-09-30 | 51 | 6d |  |  | PCBA |  |  |
| 53 | 3.2.2.5 | FP Bpx Build + HWEVT | 20d | 2002-10-31 | 2002-11-27 | 213 | 94.5d |  |  |  |  |  |
| 54 | 3.2.2.6 | FP HW DVT | 40d | 2002-09-30 | 2002-11-25 | 49 | 39.5d | 0d |  |  |  |  |

| ID | WBS | Task | Type | Duration | Start | Finish | Predecessors | Baseline start | Baseline finish | Baseline duration | Total slack | Free slack | Constraint | Resources | Work | Cost | Baseline cost |
| --- | --- | --- | --- | --- | --- | --- | --- | --- | --- | --- | --- | --- | --- | --- | --- | --- | --- |
| 55 | 3.2.2.7 | **FP Build PCB-04-A** |  | 13d | 2002-11-25 | 2002-12-16 | 54, 168 |  |  |  | 54.38d | 0d |  |  |  |  |  |
| 56 | 3.2.2.7.1 | FP Route -04-A |  | 5d | 2002-11-25 | 2002-12-04 |  |  |  |  | 33.5d | 0d |  |  |  |  |  |
| 57 | 3.2.2.7.2 | FP RTFAB-04-A |  | 3d | 2002-12-04 | 2002-12-09 | 56 |  |  |  | 33.5d | 0d |  |  |  |  |  |
| 58 | 3.2.2.7.3 | FP RTASY-04-A |  | 5d | 2002-12-09 | 2002-12-16 | 57 |  |  |  | 33.5d |  |  |  |  |  |  |
| 59 | 3.2.2.8 | HW DVT -04-A |  | 3d | 2002-12-16 | 2002-12-19 | 55 |  |  |  | 66.5d | 0d |  |  |  |  |  |
| 60 | 3.2.2.9 | **Functional Test Fixture (FTF)** |  | 60d? | 2002-09-30 | 2002-12-26 | 49 |  |  |  | 68.5d |  |  |  |  |  |  |
| 61 | 3.2.2.9.1 | Software Design Requirements |  | 2w | 2002-09-30 | 2002-10-14 |  |  |  |  | 105.5d | 0d |  |  |  |  |  |
| 62 | 3.2.2.9.2 | Electrical Design Requirements |  | 2w | 2002-09-30 | 2002-10-14 |  |  |  |  | 56.5d | 0d |  |  |  |  |  |
| 63 | 3.2.2.9.3 | Mechanical Design Requirements |  | 2w | 2002-09-30 | 2002-10-14 |  |  |  |  | 56.5d | 0d |  |  |  |  |  |
| 64 | 3.2.2.9.4 | Software Development |  | 1d? | 2002-10-14 | 2002-10-15 | 61 |  |  |  | 105.5d |  |  |  |  |  |  |
| 65 | 3.2.2.9.5 | Electrical Development |  | 8w | 2002-10-14 | 2002-12-11 | 62 |  |  |  | 56.5d | 0d |  |  |  |  |  |
| 66 | 3.2.2.9.6 | Mechanical Development |  | 8w | 2002-10-14 | 2002-12-11 | 63 |  |  |  | 56.5d | 0d |  |  |  |  |  |
| 67 | 3.2.2.9.7 | FTF EVT |  | 1w | 2002-12-11 | 2002-12-18 | 65, 66 |  |  |  | 56.5d | 0d |  |  |  |  |  |
| 68 | 3.2.2.9.8 | FTF DVT |  | 1w | 2002-12-18 | 2002-12-26 | 67 |  |  |  | 56.5d | 0d |  |  |  |  |  |
| 69 | 3.2.2.9.9 | Release Final FTF | milestone | 0d | 2002-12-26 | 2002-12-26 | 68 |  |  |  | 56.5d |  |  |  |  |  |  |
| 70 | 3.2.3 | **Mechanical** |  | 330.38d? | 2002-01-01 | 2003-04-14 |  | 2002-04-18 | 2002-09-19 | 111d | 0d |  |  | PM3 [20%] | 1408.4h | 161,966 | 105,300 |
| 71 | 3.2.3.1 | **Phase 1 Planning** |  | 2d | 2002-04-18 | 2002-04-22 |  | 2002-04-18 | 2002-04-22 | 3d | 0.62d | 0d |  |  |  |  | 3,640 |
| 72 | 3.2.3.1.1 | Kickoff Meeting |  | 0.5d | 2002-04-18 | 2002-04-18 |  | 2002-04-18 | 2002-04-18 | 0.5d | 0.62d | 0d | start no earlier than 2002-04-18 |  |  |  | 1,040 |
| 73 | 3.2.3.1.2 | Detailed Schedule Build / Review |  | 1d | 2002-04-18 | 2002-04-19 | 72 | 2002-04-18 | 2002-04-22 | 2d | 0.62d | 0d |  |  |  |  | 2,080 |
| 74 | 3.2.3.1.3 | Design Change Requirements Review |  | 0.5d | 2002-04-19 | 2002-04-22 | 73 | 2002-04-22 | 2002-04-22 | 0.5d | 0.62d |  |  |  |  |  | 520 |
| 75 | 3.2.3.2 | **Phase 2A Product Engineering** |  | 59.88d | 2002-04-22 | 2002-07-12 | 71 | 2002-04-23 | 2002-05-23 | 22.5d | 0.62d |  |  |  |  |  | 37,440 |
| 76 | 3.2.3.2.1 | Brainstorm Engineering Strategies |  | 0.25d | 2002-04-22 | 2002-04-22 |  | 2002-04-23 | 2002-04-23 | 0.5d | 0.62d | 0d |  |  |  |  | 1,560 |
| 77 | 3.2.3.2.2 | CD Sourcing and Research, Trip Prep |  | 6d | 2002-04-22 | 2002-04-30 | 76 |  |  |  | 0.62d |  |  |  |  |  |  |
| 78 | 3.2.3.2.3 | Asian Production Partner Trip and Download |  | 6d | 2002-05-01 | 2002-05-08 | 77 |  |  |  | 0d |  | must start on 2002-05-01 |  |  |  |  |
| 79 | 3.2.3.2.4 | Engineering and CAD work - 1st rev production |  | 12d | 2002-05-09 | 2002-05-24 | 78 | 2002-04-23 | 2002-04-30 | 5d | 14.62d | 0d |  |  |  |  | 10,400 |
| 80 | 3.2.3.2.5 | Preliminary Files to Tooling Vendors | milestone | 0d | 2002-05-24 | 2002-05-24 | 79 | 2002-05-23 | 2002-05-23 | 0d? | 14.62d | 0d |  |  |  |  |  |
| 81 | 3.2.3.2.6 | CM File Review |  | 5.5d | 2002-05-27 | 2002-06-03 | 80 |  |  |  | 14.62d | 0d |  |  |  |  |  |
| 82 | 3.2.3.2.7 | Conference Call with CM (Feedback) |  | 0.5d | 2002-06-03 | 2002-06-03 | 81 |  |  |  | 14.62d | 0d |  |  |  |  |  |
| 83 | 3.2.3.2.8 | Engineering and CAD - 2nd rev (refinements, second level) |  | 10d | 2002-06-04 | 2002-06-17 | 82 |  |  |  | 14.62d | 9d |  |  |  |  |  |
| 84 | 3.2.3.2.9 | Engineering and CAD - CD faceplate aligment redesign, etc. |  | 5d | 2002-07-01 | 2002-07-05 | 83, 97 |  |  |  | 5.62d | 0d |  |  |  |  |  |
| 85 | 3.2.3.2.10 | Engineering and CAD - final venting, rack ears, file tweaks / reviews, etc. |  | 5d | 2002-07-08 | 2002-07-12 | 84 |  |  |  | 152.62d |  |  |  |  |  |  |

| ID | WBS | Task | Type | Duration | Start | Finish | Predecessors | Baseline start | Baseline finish | Baseline duration | Total slack | Free slack | Constraint | Resources | Work | Cost | Baseline cost |
| --- | --- | --- | --- | --- | --- | --- | --- | --- | --- | --- | --- | --- | --- | --- | --- | --- | --- |
| 86 | 3.2.3.3 | **Phase 2B Thermal / Acoustic Baseline Testing** |  | 19d | 2002-05-09 | 2002-06-04 |  | 2002-04-18 | 2002-05-21 | 23.5d | 210.62d |  |  |  |  |  | 24,960 |
| 87 | 3.2.3.3.1 | Test Planning and Prep - Thermal |  | 1.5d | 2002-05-09 | 2002-05-10 | 78 | 2002-04-18 | 2002-04-23 | 4d | 183.12d | 0d |  |  |  |  | 4,160 |
| 88 | 3.2.3.3.2 | Test Planning and Prep - Acoustic |  | 2d | 2002-05-09 | 2002-05-10 | 78 | 2002-05-02 | 2002-05-07 | 4d | 180.62d | 0d |  |  |  |  | 4,160 |
| 89 | 3.2.3.3.3 | Thermal Data Collection |  | 15d | 2002-05-10 | 2002-05-31 | 87 |  |  |  | 183.12d |  |  |  |  |  |  |
| 90 | 3.2.3.3.4 | Acoustic Data Collection |  | 15d | 2002-05-13 | 2002-05-31 | 88 |  |  |  | 180.62d | 0d |  |  |  |  |  |
| 91 | 3.2.3.3.5 | Summary Preparation |  | 2d | 2002-06-03 | 2002-06-04 | 90 | 2002-05-16 | 2002-05-20 | 3d | 180.62d |  |  |  |  |  | 3,120 |
| 92 | 3.2.3.4 | **Phase 3 Prototyping** |  | 165.5d? | 2002-06-03 | 2003-01-27 | 82 | 2002-05-15 | 2002-07-04 | 36.5d | 20.5d |  |  |  | 555.8h | 63,917 | 24,960 |
| 93 | 3.2.3.4.1 | **Prototyping Round 1** |  | 42.5d | 2002-06-03 | 2002-08-01 |  | 2002-05-15 | 2002-06-13 | 21.5d | 3.62d |  |  |  |  |  | 14,560 |
| 94 | 3.2.3.4.1.1 | Files to Proto Vendors | milestone | 0d | 2002-06-03 | 2002-06-03 |  | 2002-05-15 | 2002-05-15 | 0d? | 19.62d | 0d |  |  |  |  |  |
| 95 | 3.2.3.4.1.2 | Quote Generation |  | 3d | 2002-06-04 | 2002-06-06 | 94 | 2002-05-15 | 2002-05-20 | 3d | 19.62d | 0d |  |  |  |  | 1,560 |
| 96 | 3.2.3.4.1.3 | Receive and Review Quotes |  | 2d | 2002-06-07 | 2002-06-10 | 95 | 2002-05-20 | 2002-05-21 | 1d | 19.62d | 14d |  |  |  |  | 520 |
| 97 | 3.2.3.4.1.4 | FINAL CD-ROM SPEC CONFIRMATION ON BTC | milestone | 0d | 2002-07-01 | 2002-07-01 | 96 |  |  |  | 5.62d | 0d | start no earlier than 2002-07-01 |  |  |  |  |
| 98 | 3.2.3.4.1.5 | Release FullPlay PO Numbers to Prototyper | milestone | 0d | 2002-07-05 | 2002-07-05 | 84, 97 | 2002-05-21 | 2002-05-21 | 0d? | 5.62d | 0d |  |  |  |  |  |
| 99 | 3.2.3.4.1.6 | SLA / Sheet Metal Construction |  | 10d | 2002-07-08 | 2002-07-19 | 98 | 2002-05-21 | 2002-06-05 | 10d | 5.62d | 2d |  |  |  |  | 2,600 |
| 100 | 3.2.3.4.1.7 | Prototype Assembly Review and CAD Database Refinements |  | 6d | 2002-07-24 | 2002-07-31 | 99 |  |  |  | 3.62d | 0d | start no earlier than 2002-07-24 |  |  |  |  |
| 101 | 3.2.3.4.1.8 | Updated Files to Tooling Vendors |  | 0.5d | 2002-08-01 | 2002-08-01 | 100 | 2002-06-13 | 2002-06-13 | 0d? | 3.62d |  |  |  |  |  |  |
| 102 | 3.2.3.4.2 | **Prototyping Round 2** |  | 51.88d | 2002-08-07 | 2002-10-18 | 93, 164 | 2002-06-13 | 2002-07-04 | 15d | 0d |  |  |  | 143.8h | 16,537 | 10,400 |
| 103 | 3.2.3.4.2.1 | CAD Tweaks (UL / CE / FCC Construction Review) |  | 4d | 2002-08-07 | 2002-08-13 |  |  |  |  | 0.88d | 0d |  | ME1 | 32h | 3,680 |  |
| 104 | 3.2.3.4.2.2 | FP - Electrical (Connector / Cable Changes | milestone | 0d | 2002-08-13 | 2002-08-13 | 103 |  |  |  | 0.88d | 0d |  |  |  |  |  |
| 105 | 3.2.3.4.2.3 | Updated Files to Prototyping Vendors |  | 1d | 2002-08-13 | 2002-08-14 | 104 | 2002-06-13 | 2002-06-13 | 0d? | 0.88d | 0d |  | ME1 | 8h | 920 |  |
| 106 | 3.2.3.4.2.4 | **Plastics (37)** |  | 25d | 2002-08-14 | 2002-09-19 | 105 |  |  |  | 14.88d |  |  |  | 24h | 2,760 |  |
| 107 | 3.2.3.4.2.4.1 | Release PO |  | 3d | 2002-08-14 | 2002-08-19 |  |  |  |  | 14.88d | 0d |  |  |  |  |  |
| 108 | 3.2.3.4.2.4.2 | SLA and Set-up |  | 5d | 2002-08-19 | 2002-08-26 | 107 |  |  |  | 14.88d | 0d |  |  |  |  |  |
| 109 | 3.2.3.4.2.4.3 | Plastic Urethane FA Review |  | 2d | 2002-08-26 | 2002-08-28 | 108 |  |  |  | 14.88d | 0d |  |  |  |  |  |
| 110 | 3.2.3.4.2.4.4 | Urethane Casting (based on SLA scale master) |  | 15d | 2002-08-28 | 2002-09-19 | 109 |  |  |  | 14.88d |  |  | ME1 [20%] | 24h | 2,760 |  |

| ID | WBS | Task | Type | Duration | Start | Finish | Predecessors | Baseline start | Baseline finish | Baseline duration | Total slack | Free slack | Constraint | Resources | Work | Cost | Baseline cost |
| --- | --- | --- | --- | --- | --- | --- | --- | --- | --- | --- | --- | --- | --- | --- | --- | --- | --- |
| 111 | 3.2.3.4.2.5 | **Sheet Metal Build (QTY 37)** |  | 39.88d | 2002-08-14 | 2002-10-09 | 105 |  |  |  | 0d |  |  | ME1 [20%] | 63.8h | 7,337 |  |
| 112 | 3.2.3.4.2.5.1 | Release PO |  | 3d | 2002-08-14 | 2002-08-19 |  |  |  |  | 0.88d | 0d |  |  |  |  |  |
| 113 | 3.2.3.4.2.5.2 | Credit Approval |  | 3d | 2002-08-19 | 2002-08-22 | 112 |  |  |  | 0.88d |  |  |  |  |  |  |
| 114 | 3.2.3.4.2.5.3 | Programming, Tooling and Set-up |  | 12d | 2002-08-23 | 2002-09-10 | 113 |  |  |  | 0d |  | finish no earlier than 2002-09-10 |  |  |  |  |
| 115 | 3.2.3.4.2.5.4 | FA run and paint ready finish |  | 8d | 2002-09-11 | 2002-09-20 | 114 |  |  |  | 0d |  |  |  |  |  |  |
| 116 | 3.2.3.4.2.5.5 | Metal FA Review |  | 2d | 2002-09-23 | 2002-09-24 | 115 |  |  |  | 0d |  |  |  |  |  |  |
| 117 | 3.2.3.4.2.5.6 | Metal Fab 36 pieces |  | 2w | 2002-09-25 | 2002-10-08 | 116 |  |  |  | 0d |  |  |  |  |  |  |
| 118 | 3.2.3.4.2.5.7 | Ship Metal |  | 1d | 2002-10-09 | 2002-10-09 | 117 |  |  |  | 0d |  |  |  |  |  |  |
| 119 | 3.2.3.4.2.6 | Machined ABS (OPTIONAL) |  | 10d | 2002-08-07 | 2002-08-21 |  |  |  |  | 41.88d |  |  | ME1 [20%] | 16h | 1,840 |  |
| 120 | 3.2.3.4.2.7 | **Finish and Cosmetics** |  | 7d | 2002-10-10 | 2002-10-18 | 106, 111 |  |  |  | 0d |  |  |  |  |  |  |
| 121 | 3.2.3.4.2.7.1 | Paint FA |  | 1d | 2002-10-10 | 2002-10-10 |  |  |  |  | 0d |  |  |  |  |  |  |
| 122 | 3.2.3.4.2.7.2 | Graphics FA |  | 1d | 2002-10-11 | 2002-10-11 | 121 |  |  |  | 0d |  |  |  |  |  |  |
| 123 | 3.2.3.4.2.7.3 | Complete Finish and Graphics |  | 5d | 2002-10-14 | 2002-10-18 | 122 |  |  |  | 0d |  |  |  |  |  |  |
| 124 | 3.2.3.4.2.8 | Parts Received | milestone | 0d | 2002-10-18 | 2002-10-18 | 120 |  |  |  | 0d |  |  |  |  |  |  |
| 125 | 3.2.3.4.3 | Limited CAD Updates as Required |  | 5d | 2002-10-31 | 2002-11-06 | 210 | 2002-07-02 | 2002-07-04 | 3d | 6d |  |  | ME1 [50%] | 20h | 2,300 | 3,120 |
| 126 | 3.2.3.4.4 | **Packaging Design** |  | 98d? | 2002-07-22 | 2002-12-09 |  |  |  |  | 0d |  |  |  | 64h | 7,360 |  |
| 127 | 3.2.3.4.4.1 | Initial Quoting and Vendor Communication |  | 10d | 2002-07-22 | 2002-08-02 |  |  |  |  | 58.5d | 0d | start no earlier than 2002-07-22 | ME2 [25%] | 20h | 2,300 |  |
| 128 | 3.2.3.4.4.2 | Quote Review and Partner Selection |  | 3d | 2002-08-05 | 2002-08-07 | 127 |  |  |  | 58.5d | 7.12d |  | ME2 [50%] | 12h | 1,380 |  |
| 129 | 3.2.3.4.4.3 | Submission of CAD Files to Package Design |  | 0.5d | 2002-08-19 | 2002-08-19 | 103, 128 |  |  |  | 51.38d |  | start no earlier than 2002-08-19 | ME2 | 4h | 460 |  |
| 130 | 3.2.3.4.4.4 | Package Design Process |  | 10d | 2002-10-31 | 2002-11-13 | 129, 210 |  |  |  | 0d |  |  | ME2 [10%]; P507009 | 8h | 920 |  |
| 131 | 3.2.3.4.4.5 | Review of Package Design Solution |  | 1d | 2002-11-14 | 2002-11-14 | 130 |  |  |  | 0d |  |  | ME2 | 8h | 920 |  |
| 132 | 3.2.3.4.4.6 | Submit Package Art |  | 1d? | 2002-09-12 | 2002-09-13 | 198 |  |  |  | 44.88d |  |  |  |  |  |  |
| 133 | 3.2.3.4.4.7 | Iteration on Package Design |  | 5d | 2002-11-15 | 2002-11-21 | 125, 141, 132, 131 |  |  |  | 0d |  |  | ME2 [10%] | 4h | 460 |  |
| 134 | 3.2.3.4.4.8 | Final Packaging Solution Documentation |  | 5d | 2002-11-22 | 2002-12-02 | 133 |  |  |  | 0d |  |  | ME2 [10%] | 4h | 460 |  |
| 135 | 3.2.3.4.4.9 | Final Packaging Samples (???????) |  | 5d | 2002-12-03 | 2002-12-09 | 134 |  |  |  | 0d |  |  | ME2 [10%] | 4h | 460 |  |

Notes:
- 135: Could take 6 - 8 weeks to get samples

| ID | WBS | Task | Type | Duration | Start | Finish | Predecessors | Baseline start | Baseline finish | Baseline duration | Total slack | Free slack | Constraint | Resources | Work | Cost | Baseline cost |
| --- | --- | --- | --- | --- | --- | --- | --- | --- | --- | --- | --- | --- | --- | --- | --- | --- | --- |
| 136 | 3.2.3.4.5 | **Testing - Shipping and Packaging Solution (ISTA)** |  | 93d | 2002-07-29 | 2002-12-09 |  |  |  |  | 33d |  |  |  | 114h | 13,110 |  |
| 137 | 3.2.3.4.5.1 | Initial Quoting and Vendor Communication |  | 10d | 2002-07-29 | 2002-08-09 |  |  |  |  | 57d | 0d | start no earlier than 2002-07-29 | ME2 [25%] | 20h | 2,300 |  |
| 138 | 3.2.3.4.5.2 | Quote Review and Partner Selection |  | 3d | 2002-08-12 | 2002-08-14 | 137 |  |  |  | 57d | 0d |  | ME2 [50%] | 12h | 1,380 |  |
| 139 | 3.2.3.4.5.3 | Preliminary Informal Testing |  | 3d | 2002-08-15 | 2002-08-19 | 138 |  |  |  | 57d | 0d |  | ME2 [50%] | 12h | 1,380 |  |
| 140 | 3.2.3.4.5.4 | Mechanical Design Impact Revisions (In-House Results) |  | 5d | 2002-08-20 | 2002-08-26 | 139 |  |  |  | 100d | 67d |  | ME1 [50%] | 20h | 2,300 |  |
| 141 | 3.2.3.4.5.5 | Shipping / Packaging Design Impact Revisions (In-House Results) |  | 5d | 2002-08-20 | 2002-08-26 | 139 |  |  |  | 57d |  |  | ME2 [25%] | 10h | 1,150 |  |
| 142 | 3.2.3.4.5.6 | Formal ISTA Testing / Certification |  | 5d | 2002-12-03 | 2002-12-09 | 213, 134, 140, 141 |  |  |  | 33d |  |  | ME2 | 40h | 4,600 |  |
| 143 | 3.2.3.4.6 | **Proto #3** |  | 33.5d | 2002-12-10 | 2003-01-27 | 168, 102, 126 |  |  |  | 0d |  |  |  | 214h | 24,610 |  |
| 144 | 3.2.3.4.6.1 | CAD Revisions |  | 5d | 2002-12-10 | 2002-12-16 |  |  |  |  | 0d |  |  | ME1 | 40h | 4,600 |  |
| 145 | 3.2.3.4.6.2 | Updated Files to Prototyping Vendors / Preliminary to Tooling |  | 1d | 2002-12-17 | 2002-12-17 | 144, 168 | 2002-06-13 | 2002-06-13 | 0d? | 0d |  |  | ME1 | 8h | 920 |  |
| 146 | 3.2.3.4.6.3 | Release FullPlay PO Numbers to Prototypers | milestone | 0d | 2002-12-17 | 2002-12-17 | 145 | 2002-06-13 | 2002-06-13 | 0d? | 0d |  |  |  |  |  |  |
| 147 | 3.2.3.4.6.4 | SLA Build |  | 5d | 2002-12-18 | 2002-12-24 | 146 | 2002-06-14 | 2002-06-27 | 10d | 0d |  |  | ME1 [25%] | 10h | 1,150 | 2,600 |
| 148 | 3.2.3.4.6.5 | Urethane Casting (based on SLA scale master) |  | 15d | 2002-12-26 | 2003-01-15 | 147 |  |  |  | 0d |  |  | ME1 [25%] | 30h | 3,450 |  |
| 149 | 3.2.3.4.6.6 | Sheet Metal Build (QTY 6) |  | 15d | 2002-12-18 | 2003-01-08 | 146 |  |  |  | 5d |  |  | ME1 [25%] | 30h | 3,450 |  |
| 150 | 3.2.3.4.6.7 | Machined ABS (OPTIONAL) |  | 10d | 2002-12-18 | 2003-01-01 | 146 |  |  |  | 10d |  |  | ME1 [25%] | 20h | 2,300 |  |
| 151 | 3.2.3.4.6.8 | Parts Received | milestone | 0d | 2003-01-15 | 2003-01-15 | 148, 149, 150 |  |  |  | 0d |  |  |  |  |  |  |
| 152 | 3.2.3.4.6.9 | Proto #3 Run First Unit Assembly / Review |  | 2d | 2003-01-16 | 2003-01-17 | 151 | 2002-07-01 | 2002-07-01 | 0.5d | 0d |  |  | ME1; ME2 | 32h | 3,680 | 1,560 |
| 153 | 3.2.3.4.6.10 | Limited CAD Updates as Required |  | 5d | 2003-01-20 | 2003-01-24 | 152 | 2002-07-02 | 2002-07-04 | 3d | 0d |  |  | ME1 [50%] | 20h | 2,300 | 3,120 |
| 154 | 3.2.3.4.6.11 | Proto #3 Assembly Support |  | 5d | 2003-01-20 | 2003-01-24 | 152 |  |  |  | 25.5d |  |  | ME1 [50%] | 20h | 2,300 |  |
| 155 | 3.2.3.4.6.12 | Final CAD Release to Tooling Vendors |  | 0.5d | 2003-01-27 | 2003-01-27 | 168, 142, 153 | 2002-07-04 | 2002-07-04 | 0d? | 0d |  |  | ME1 | 4h | 460 |  |
| 156 | 3.2.3.5 | **Tooling and Production Ramp Support (TBD)** |  | 330.38d | 2002-01-01 | 2003-04-14 |  | 2002-07-05 | 2002-09-19 | 55d | 0d |  |  |  | 324h | 37,260 | 14,300 |
| 157 | 3.2.3.5.1 | CTF Drawing Creation |  | 30d | 2002-01-01 | 2002-02-12 |  |  |  |  | 300.38d |  |  | ME1 [10%] | 24h | 2,760 |  |
| 158 | 3.2.3.5.2 | Tooling Design Start / Order Raw Mat'ls |  | 5w | 2002-12-18 | 2003-01-22 | 145 | 2002-07-05 | 2002-08-15 | 6w | 2.5d |  |  | ME1 [25%] | 50h | 5,750 | 7,800 |
| 159 | 3.2.3.5.3 | Tooling Finalization |  | 3w | 2003-01-27 | 2003-02-17 | 155, 158 |  |  |  | 0d |  |  | ME1 [25%] | 30h | 3,450 |  |
| 160 | 3.2.3.5.4 | First Articles |  | 5d | 2003-02-17 | 2003-02-24 | 159 |  |  |  | 0d |  |  | ME1 | 40h | 4,600 |  |
| 161 | 3.2.3.5.5 | Tooling Mods and Texturing |  | 2w | 2003-02-24 | 2003-03-10 | 160 |  |  |  | 0d |  |  | ME1 | 80h | 9,200 |  |
| 162 | 3.2.3.5.6 | Design Support for Manufacturing Ramp |  | 5w | 2003-03-10 | 2003-04-14 | 161 | 2002-08-16 | 2002-09-19 | 5w | 0d |  |  | ME1 [50%] | 100h | 11,500 | 6,500 |

| ID | WBS | Task | Duration | Start | Finish | Predecessors | Total slack | Free slack | Constraint | Resources | Work | Cost |
| --- | --- | --- | --- | --- | --- | --- | --- | --- | --- | --- | --- | --- |
| 163 | 3.2.4 | **Regulatory and Reliability** | 161.5d? | 2002-07-22 | 2003-03-10 |  | 2d |  |  |  | 102.8h | 8,142 |
| 164 | 3.2.4.1 | **Planning and Preparation** | 12.12d | 2002-07-22 | 2002-08-07 |  | 0.88d | 0d |  |  | 34h | 3,910 |
| 165 | 3.2.4.1.1 | Initial Quoting and Vendor Communication | 5d | 2002-07-22 | 2002-07-26 |  | 2d | 0d | start no earlier than 2002-07-22 | ME2 [25%] | 10h | 1,150 |
| 166 | 3.2.4.1.2 | Quote Review and Partner Selection | 3d | 2002-07-29 | 2002-07-31 | 165 | 2d | 1.12d |  | ME2 [50%] | 12h | 1,380 |
| 167 | 3.2.4.1.3 | Preliminary Construction Review | 3d | 2002-08-02 | 2002-08-07 | 166 | 0.88d | 0d | start no earlier than 2002-08-02 | ME2 [50%] | 12h | 1,380 |
| 168 | 3.2.4.2 | **Safety / EMC / FCC Testing** | 2d | 2002-10-21 | 2002-10-22 | 102, 164, 36 | 32d | 23.12d |  | ME2 [10%] | 68.8h | 4,232 |
| 169 | 3.2.4.2.1 | EMI | 2d | 2002-10-21 | 2002-10-22 |  | 32d |  |  | P507004; P507005; EE1; ME2 | 32h | 1,840 |
| 170 | 3.2.4.2.2 | Thermal Mapping | 2d | 2002-10-21 | 2002-10-22 |  | 32d |  |  | P507006; ME2 [20%] | 3.2h | 368 |
| 171 | 3.2.4.2.3 | Temperatures | 2d | 2002-10-21 | 2002-10-22 |  | 32d |  |  | P507006; ME2 [20%] | 3.2h | 368 |
| 172 | 3.2.4.2.4 | Altitudes | 2d | 2002-10-21 | 2002-10-22 |  | 32d |  |  | P507006; ME2 [20%] | 3.2h | 368 |
| 173 | 3.2.4.2.5 | Humidity | 2d | 2002-10-21 | 2002-10-22 |  | 32d |  |  | P507006; ME2 [20%] | 3.2h | 368 |
| 174 | 3.2.4.2.6 | Vibration | 2d | 2002-10-21 | 2002-10-22 |  | 32d |  |  | P507006; ME2 [20%] | 3.2h | 368 |
| 175 | 3.2.4.2.7 | Shock | 2d | 2002-10-21 | 2002-10-22 |  | 32d |  |  | P507007; ME2 [20%] | 3.2h | 368 |
| 176 | 3.2.4.2.8 | ESD | 1d | 2002-10-21 | 2002-10-21 |  | 33d |  |  | P507008; EE1; EE2 | 16h |  |
| 177 | 3.2.4.3 | **Final Regulatory** | 30d | 2003-01-27 | 2003-03-10 | 168, 181, 49, 143, 187, 55 | 25d |  |  |  |  |  |
| 178 | 3.2.4.3.1 | Final FCC Certification | 6w | 2003-01-27 | 2003-03-10 |  | 25d |  |  |  |  |  |
| 179 | 3.2.4.3.2 | Final UL, cUL Certification | 6w | 2003-01-27 | 2003-03-10 |  | 25d |  |  |  |  |  |
| 180 | 3.2.4.3.3 | Final FDA 21 CFR laser certification | 6w | 2003-01-27 | 2003-03-10 |  | 25d |  |  |  |  |  |
| 181 | 3.2.4.4 | **Power Supply Certification** | 21d? | 2002-08-16 | 2002-09-17 |  | 116.38d | 91.38d |  |  |  |  |
| 182 | 3.2.4.4.1 | Factory Approval and Vendor Qualification | 1d? | 2002-08-16 | 2002-08-19 |  | 116.38d | 0d | start no earlier than 2002-08-16 |  |  |  |
| 183 | 3.2.4.4.2 | UL, cUL registrations | 4w | 2002-08-19 | 2002-09-17 | 182 | 116.38d |  |  |  |  |  |
| 184 | 3.2.5 | **Documentation and Art** | 102d? | 2002-05-15 | 2002-10-07 |  | 73.88d | 43.88d |  |  | 136h | 990 |
| 185 | 3.2.5.1 | **Product Requirements** | 20d | 2002-08-16 | 2002-09-16 |  | 110.5d |  |  |  |  |  |
| 186 | 3.2.5.1.1 | DJ-C40 Product Requirements Document | 4w | 2002-08-16 | 2002-09-16 | 21 | 110.5d | 6d |  |  |  |  |

| ID | WBS | Task | Duration | Start | Finish | Predecessors | Baseline start | Baseline finish | Baseline duration | Total slack | Free slack | Constraint | Resources | Work | Cost | Baseline cost |
| --- | --- | --- | --- | --- | --- | --- | --- | --- | --- | --- | --- | --- | --- | --- | --- | --- |
| 187 | 3.2.5.2 | **User Guide** | 42d | 2002-08-07 | 2002-10-07 |  |  |  |  | 6.88d |  |  |  |  |  |  |
| 188 | 3.2.5.2.1 | DJ-C40 | 6w | 2002-08-16 | 2002-09-30 | 21 |  |  |  | 6.88d | 0d |  |  |  |  |  |
| 189 | 3.2.5.2.2 | FML | 2w | 2002-08-16 | 2002-08-30 | 21 |  |  |  | 26.88d | 20d |  |  |  |  |  |
| 190 | 3.2.5.2.3 | Regulatory message, Warnings, Disclaimers, Acknowlegements | 2w | 2002-08-07 | 2002-08-21 | 167 |  |  |  | 33.88d | 27d |  |  |  |  |  |
| 191 | 3.2.5.2.4 | Final User Guide | 1w | 2002-09-30 | 2002-10-07 | 188, 189, 190 |  |  |  | 6.88d |  | finish no later than 2002-10-15 |  |  |  |  |
| 192 | 3.2.5.3 | **Shipping CD Art and Text** | 30d? | 2002-08-20 | 2002-10-02 |  |  |  |  | 103.5d | 46.88d |  |  | 57.4h | 385 |  |
| 193 | 3.2.5.3.1 | Complete CD art spec | 1w | 2002-08-20 | 2002-08-27 |  |  |  |  | 103.5d | 0d | start no earlier than 2002-08-20 | PM1 | 40h |  |  |
| 194 | 3.2.5.3.2 | First Draft of cd graphics | 2.5d | 2002-08-27 | 2002-08-29 | 193 |  |  |  | 103.5d | 0d |  | GA1 [50%]; PM1 [5%] | 9h | 220 |  |
| 195 | 3.2.5.3.3 | Second Draft of cd graphics | 1.5d | 2002-09-06 | 2002-09-10 | 9 |  |  |  | 103.5d | 0d |  | GA1 [50%] | 6h | 165 |  |
| 196 | 3.2.5.3.4 | Final approval | 1d? | 2002-09-10 | 2002-09-11 | 195 |  |  |  | 103.5d | 0d |  |  |  |  |  |
| 197 | 3.2.5.3.5 | Order 50 Sample cds | 3w | 2002-09-11 | 2002-10-02 | 196 |  |  |  | 103.5d |  |  | PM1 [2%] | 2.4h |  |  |
| 198 | 3.2.5.4 | **Package Art** | 85d? | 2002-05-15 | 2002-09-12 |  |  |  |  | 44.88d | 0d |  |  | 37.6h | 385 |  |
| 199 | 3.2.5.4.1 | Packaging Spec | 4w | 2002-05-15 | 2002-06-12 |  |  |  |  | 109.88d |  | start no earlier than 2002-05-15 | PM1 [10%] | 16h |  |  |
| 200 | 3.2.5.4.2 | 1st Draft of packaging art | 2.5d? | 2002-08-27 | 2002-08-29 |  |  |  |  | 44.88d | 0d | start no earlier than 2002-08-27 | GA1 [50%]; PM1 [20%] | 14h | 275 |  |
| 201 | 3.2.5.4.3 | 2nd Draft of packaging graphics | 1d? | 2002-09-06 | 2002-09-09 | 10 |  |  |  | 44.88d | 0d |  | GA1 [50%]; PM1 [20%] | 5.6h | 110 |  |
| 202 | 3.2.5.4.4 | Final Approval | 2.5d? | 2002-09-09 | 2002-09-12 | 201 |  |  |  | 44.88d |  |  | PM1 [10%] | 2h |  |  |
| 203 | 3.2.5.5 | **Remote Control** | 15d | 2002-08-12 | 2002-08-30 |  |  |  |  | 92.5d | 0d |  |  | 41h | 220 |  |
| 204 | 3.2.5.5.1 | Remote Specification | 2w | 2002-08-12 | 2002-08-23 |  |  |  |  | 92.5d | 0d | finish no earlier than 2002-08-23 | PM1 [50%]; PM2 [18.8%] | 25h |  |  |
| 205 | 3.2.5.5.2 | 1st Draft of remote graphics | 1d | 2002-08-26 | 2002-08-26 | 204 |  |  |  | 92.5d | 0d |  | GA1 [50%]; PM2 [25%] | 6h | 110 |  |
| 206 | 3.2.5.5.3 | 2nd Draft of remote graphics | 1d | 2002-08-28 | 2002-08-28 | 11 |  |  |  | 92.5d | 0d |  | GA1 [50%]; PM2 [25%] | 6h | 110 |  |
| 207 | 3.2.5.5.4 | Final Release of remote graphics | 2d | 2002-08-29 | 2002-08-30 | 206 |  |  |  | 92.5d |  |  | PM1 [25%] | 4h |  |  |
| 208 | 3.2.6 | **Manufacturability** | 85d | 2002-07-31 | 2002-11-27 |  |  |  |  | 42d |  |  |  | 64h | 5,980 |  |
| 209 | 3.2.6.1 | Box Assembly Plan | 3w | 2002-07-31 | 2002-08-20 |  |  |  |  | 42d | 0d | finish no earlier than 2002-08-20 | MFE [10%] | 12h |  |  |
| 210 | 3.2.6.2 | **Proto 2 Assembly** | 8d | 2002-10-21 | 2002-10-30 | 209, 49, 102 |  |  |  | 0d |  |  |  | 52h | 5,980 |  |
| 211 | 3.2.6.2.1 | Proto #2 Run First Unit Assembly / Review | 2d | 2002-10-21 | 2002-10-22 |  | 2002-07-01 | 2002-07-01 | 0.5d | 1d | 0d |  | ME1; ME2 | 32h | 3,680 | 1,560 |
| 212 | 3.2.6.2.2 | Develop Assembly plan for PCA | 3d | 2002-10-21 | 2002-10-23 |  |  |  |  | 0d |  |  |  |  |  |  |
| 213 | 3.2.6.2.3 | Proto #2 Assembly Support | 5d | 2002-10-24 | 2002-10-30 | 212 |  |  |  | 0d |  |  | ME1 [50%] | 20h | 2,300 |  |
| 214 | 3.2.6.2.4 | Unite Assembly at PCA | 5d | 2002-10-23 | 2002-10-29 | 211 |  |  |  | 1d |  |  |  |  |  |  |
| 215 | 3.2.6.3 | DFTVT | 4w | 2002-10-31 | 2002-11-27 | 213 |  |  |  | 94.5d |  |  |  |  |  |  |
| 216 | 3.2.6.4 | Box Test Plan | 2w | 2002-08-21 | 2002-09-04 | 209 |  |  |  | 134.5d | 0d |  |  |  |  |  |
| 217 | 3.2.6.5 | DFTVT | 4w | 2002-09-05 | 2002-10-02 | 216 |  |  |  | 134.5d |  |  |  |  |  |  |

| ID | WBS | Task | Type | Duration | Start | Finish | Predecessors | Total slack | Free slack | Constraint |
| --- | --- | --- | --- | --- | --- | --- | --- | --- | --- | --- |
| 218 | 3.3 | **Production** |  | 203.38d? | 2002-06-28 | 2003-04-15 |  | 0d |  |  |
| 219 | 3.3.1 | **DFM** |  | 1d? | 2003-04-14 | 2003-04-15 |  | 0d |  |  |
| 220 | 3.3.1.1 | PCB DFM |  | 1d? | 2003-04-14 | 2003-04-15 | 16 | 0d |  | start no earlier than 2002-09-16 |
| 221 | 3.3.1.2 | PCB DFT |  | 1d? | 2003-04-14 | 2003-04-15 | 16 | 0d |  |  |
| 222 | 3.3.1.3 | Box DFA |  | 1d? | 2003-04-14 | 2003-04-15 | 16 | 0d |  |  |
| 223 | 3.3.1.4 | Box DFT |  | 1d? | 2003-04-14 | 2003-04-15 | 16 | 0d |  |  |
| 224 | 3.3.2 | **DVT** |  | 148.38d? | 2002-06-28 | 2003-01-28 |  | 55d |  |  |
| 225 | 3.3.2.1 | **Mechanical** |  | 79.88d? | 2002-07-05 | 2002-10-25 |  | 118.5d |  |  |
| 226 | 3.3.2.1.1 | Prototype Sample (V7) | milestone | 0d | 2002-08-23 | 2002-08-23 |  | 163.38d |  | start no earlier than 2002-08-23 |
| 227 | 3.3.2.1.2 | Mech Parts Tooling |  | 34.88d? | 2002-08-30 | 2002-10-18 |  | 123.5d |  | finish no earlier than 2002-10-18 |
| 228 | 3.3.2.1.3 | Tools Approval |  | 5.88d? | 2002-10-04 | 2002-10-11 |  | 128.5d |  | finish no earlier than 2002-10-11 |
| 229 | 3.3.2.1.4 | DVT Samples, n=50, tooled parts |  | 5.88d? | 2002-10-18 | 2002-10-25 |  | 118.5d |  | finish no earlier than 2002-10-25 |
| 230 | 3.3.2.1.5 | Quality Inspection & Test Plan |  | 5.88d? | 2002-07-05 | 2002-07-12 |  | 192.5d |  | finish no earlier than 2002-07-12 |
| 231 | 3.3.2.2 | **Electrical** |  | 36d | 2002-09-06 | 2002-10-28 |  | 118.38d |  |  |
| 232 | 3.3.2.2.1 | DVT Schematics & Gerber (v4) |  | 1d | 2002-09-06 | 2002-09-09 |  | 153.38d |  | start no earlier than 2002-09-06 |
| 233 | 3.3.2.2.2 | DVT BOM & AVL (v4) |  | 1d | 2002-09-06 | 2002-09-09 |  | 153.38d |  | start no earlier than 2002-09-06 |
| 234 | 3.3.2.2.3 | DVT PCBA FP Sahara (4) |  | 1d | 2002-09-06 | 2002-09-09 |  | 148.38d | 0d | start no earlier than 2002-09-06 |
| 235 | 3.3.2.2.4 | DVT Compliance Test Report |  | 1w | 2002-09-09 | 2002-09-16 | 234 | 148.38d |  |  |
| 236 | 3.3.2.2.5 | DVT PCBA UB Pilot (50) |  | 1d | 2002-10-18 | 2002-10-21 |  | 118.38d | 0d | start no earlier than 2002-10-18 |
| 237 | 3.3.2.2.6 | DVT Compliance Test Report |  | 1w | 2002-10-21 | 2002-10-28 | 236 | 118.38d |  |  |
| 238 | 3.3.2.3 | **Industrializatin** |  | 84d | 2002-06-28 | 2002-10-25 |  | 119.38d |  |  |
| 239 | 3.3.2.3.1 | Production Process Plan - 1st pass |  | 1w | 2002-06-28 | 2002-07-05 |  | 158.38d | 5d | start no earlier than 2002-06-28 |
| 240 | 3.3.2.3.2 | Production Process Plan - TriHonor |  | 2w | 2002-07-12 | 2002-07-26 | 239 | 153.38d | 25d | start no earlier than 2002-07-12 |
| 241 | 3.3.2.3.3 | Production Process Plan - Final Plan |  | 1w | 2002-08-30 | 2002-09-09 | 240 | 128.38d | 0d | start no earlier than 2002-08-30 |
| 242 | 3.3.2.3.4 | Production Process Setup |  | 5w | 2002-09-09 | 2002-10-14 | 241 | 128.38d |  |  |
| 243 | 3.3.2.3.5 | Production Test Plan -1st cut |  | 1w | 2002-06-28 | 2002-07-05 |  | 138.38d | 10d | start no earlier than 2002-06-28 |
| 244 | 3.3.2.3.6 | Production Test Plan -development |  | 6w | 2002-07-19 | 2002-08-30 | 243 | 128.38d | 0d | start no earlier than 2002-07-19 |
| 245 | 3.3.2.3.7 | Production Test Plan -Final Review |  | 1w | 2002-08-30 | 2002-09-09 | 244 | 128.38d | 0d |  |
| 246 | 3.3.2.3.8 | Production Tester Setup |  | 5w | 2002-09-09 | 2002-10-14 | 245 | 128.38d |  |  |
| 247 | 3.3.2.3.9 | PCBA Test Plan - 1st Cut |  | 1w | 2002-07-05 | 2002-07-12 |  | 168.38d | 5d | start no earlier than 2002-07-05 |
| 248 | 3.3.2.3.10 | PCBA Test Plan - FP plan |  | 1w | 2002-07-19 | 2002-07-26 | 247 | 163.38d | 5d | start no earlier than 2002-07-19 |
| 249 | 3.3.2.3.11 | PCBA Test Plan - final plan |  | 1w | 2002-08-02 | 2002-08-09 | 248 | 158.38d | 24d | start no earlier than 2002-08-02 |
| 250 | 3.3.2.3.12 | ICT Fixture & Program |  | 3w | 2002-09-13 | 2002-10-04 | 249 | 134.38d |  | start no earlier than 2002-09-13 |
| 251 | 3.3.2.3.13 | Fucntional Tester |  | 3w | 2002-09-13 | 2002-10-04 |  | 133.38d | 0d | start no earlier than 2002-09-13 |
| 252 | 3.3.2.3.14 | Commision PCBA Testers |  | 1d | 2002-10-04 | 2002-10-07 | 251 | 133.38d |  |  |
| 253 | 3.3.2.3.15 | QC/QA Plan - 1st cut |  | 1w | 2002-07-05 | 2002-07-12 |  | 188.38d | 35d | start no earlier than 2002-07-05 |
| 254 | 3.3.2.3.16 | QC/QA Plan - final plan |  | 1w | 2002-08-30 | 2002-09-09 | 253 | 153.38d |  | start no earlier than 2002-08-30 |
| 255 | 3.3.2.3.17 | Vendor RFQ A |  | 1w | 2002-06-28 | 2002-07-05 |  | 193.38d | 44d | start no earlier than 2002-06-28 |
| 256 | 3.3.2.3.18 | Vendor RFQ B |  | 1w | 2002-09-06 | 2002-09-13 | 255 | 149.38d |  | start no earlier than 2002-09-06 |
| 257 | 3.3.2.3.19 | Safety Regualtion Test & Cert. |  | 12w | 2002-07-12 | 2002-10-07 |  | 133.38d |  | start no earlier than 2002-07-12 |
| 258 | 3.3.2.3.20 | DVT Reliability Test |  | 1w | 2002-10-18 | 2002-10-25 |  | 119.38d |  | start no earlier than 2002-10-18 |

| ID | WBS | Task | Duration | Start | Finish | Predecessors | Total slack | Free slack | Constraint |
| --- | --- | --- | --- | --- | --- | --- | --- | --- | --- |
| 259 | 3.3.2.4 | **CR** | 148.38d? | 2002-06-28 | 2003-01-28 |  | 55d |  |  |
| 260 | 3.3.2.4.1 | Final Drawing Release Form | 1d | 2003-01-27 | 2003-01-28 | 155 | 55d |  | start no earlier than 2002-06-28 |
| 261 | 3.3.2.4.2 | Final Tool Release Form | 1d? | 2002-06-28 | 2002-07-01 |  | 202.38d |  | start no earlier than 2002-06-28 |
| 262 | 3.3.2.4.3 | Final Schematic & Gerber Release | 1d? | 2002-12-19 | 2002-12-20 | 59 | 81.38d |  | start no earlier than 2002-06-28 |
| 263 | 3.3.2.4.4 | Final PCBA BOM Release | 1d? | 2002-12-19 | 2002-12-20 | 59 | 81.38d |  |  |
| 264 | 3.3.2.4.5 | Final Firmware Release | 1d? | 2003-01-16 | 2003-01-16 | 32 | 62.5d |  |  |
| 265 | 3.3.2.4.6 | Production Process Flow & Instruction | 63.88d? | 2002-07-08 | 2002-10-04 |  | 133.5d |  | finish no earlier than 2002-10-04 |
| 266 | 3.3.2.4.7 | Production Test Flow & Instruction | 63.88d? | 2002-07-08 | 2002-10-04 |  | 133.5d |  | finish no earlier than 2002-10-04 |
| 267 | 3.3.2.4.8 | QC/QA Flow & Instruction | 1d? | 2002-10-24 | 2002-10-25 |  | 119.38d |  | start no earlier than 2002-10-24 |
| 268 | 3.3.3 | **PVT** | 65d? | 2002-09-03 | 2002-12-04 |  | 92.5d |  |  |
| 269 | 3.3.3.1 | **Mechanical** | 1d? | 2002-09-16 | 2002-09-17 |  | 147.38d |  |  |
| 270 | 3.3.3.1.1 | PVT Samples | 1d? | 2002-09-16 | 2002-09-17 |  | 147.38d |  | start no earlier than 2002-09-16 |
| 271 | 3.3.3.2 | **Electrical** | 1d? | 2002-09-16 | 2002-09-17 |  | 147.38d |  |  |
| 272 | 3.3.3.2.1 | PVT Samples (Pilot Run) | 1d? | 2002-09-16 | 2002-09-17 |  | 147.38d |  | start no earlier than 2002-09-16 |
| 273 | 3.3.3.2.2 | PVT Comliance | 1d? | 2002-09-16 | 2002-09-17 |  | 147.38d |  | start no earlier than 2002-09-16 |
| 274 | 3.3.3.3 | **Industrialization** | 1d? | 2002-09-16 | 2002-09-17 |  | 147.38d |  |  |
| 275 | 3.3.3.3.1 | Process & Test Setup | 1d? | 2002-09-16 | 2002-09-17 |  | 147.38d |  | start no earlier than 2002-09-16 |
| 276 | 3.3.3.3.2 | Production/Yield Commissioning | 1d? | 2002-09-16 | 2002-09-17 |  | 147.38d |  | start no earlier than 2002-09-16 |
| 277 | 3.3.3.4 | **Purchase** | 65d? | 2002-09-03 | 2002-12-04 |  | 92.5d |  |  |
| 278 | 3.3.3.4.1 | Shipping CD | 1d? | 2002-09-16 | 2002-09-17 |  | 147.38d |  | start no earlier than 2002-09-16 |
| 279 | 3.3.3.4.2 | **Remote Control** | 65d | 2002-09-03 | 2002-12-04 | 203 | 92.5d |  |  |
| 280 | 3.3.3.4.2.1 | Place order | 2d | 2002-09-03 | 2002-09-04 |  | 92.5d | 0d |  |
| 281 | 3.3.3.4.2.2 | Art Review | 2w | 2002-09-05 | 2002-09-18 | 280 | 92.5d | 0d |  |
| 282 | 3.3.3.4.2.3 | First Samples (5) | 5w | 2002-09-19 | 2002-10-23 | 281 | 92.5d | 0d |  |
| 283 | 3.3.3.4.2.4 | FA Review | 3d | 2002-10-24 | 2002-10-28 | 282 | 92.5d | 0d |  |
| 284 | 3.3.3.4.2.5 | First 50 | 2w | 2002-10-29 | 2002-11-11 | 283 | 92.5d | 0d |  |
| 285 | 3.3.3.4.2.6 | Shipment of 50 | 3d | 2002-11-12 | 2002-11-14 | 284 | 104.5d |  |  |
| 286 | 3.3.3.4.2.7 | Full shipment of 5000 | 2w | 2002-11-12 | 2002-11-25 | 284 | 92.5d | 0d |  |
| 287 | 3.3.3.4.2.8 | Shipping of 5000 | 1w | 2002-11-26 | 2002-12-04 | 286 | 92.5d |  |  |
| 288 | 3.3.3.4.3 | LLT Components Buy (1k) > 8 wks | 1d? | 2002-09-16 | 2002-09-17 |  | 147.38d |  | start no earlier than 2002-09-16 |
| 289 | 3.3.3.4.4 | LLT Components (LCD) Buy (1k) | 1d? | 2002-09-16 | 2002-09-17 |  | 147.38d |  | start no earlier than 2002-09-16 |
| 290 | 3.3.3.4.5 | PO for MP 1000 units (Electrical) | 1d? | 2002-09-16 | 2002-09-17 |  | 147.38d |  | start no earlier than 2002-09-16 |
| 291 | 3.3.3.4.6 | PO for MP 1000 units (System) | 1d? | 2002-09-16 | 2002-09-17 |  | 147.38d |  | start no earlier than 2002-09-16 |

| ID | WBS | Task | Duration | Start | Finish | Total slack | Constraint |
| --- | --- | --- | --- | --- | --- | --- | --- |
| 292 | 3.3.4 | **MP Start** | 1d? | 2002-09-16 | 2002-09-17 | 147.38d |  |
| 293 | 3.3.4.1 | Maxx Production Start | 1d? | 2002-09-16 | 2002-09-17 | 147.38d | start no earlier than 2002-09-16 |
